# 07.09.26

Schedule from MS Project, 2023-03-10 to 2027-03-10, A marks actual dates.
DEXP

## Calendars

- Стандартный: Mon-Fri 09:00-13:00, 14:00-18:00; Sat-Sun off. Exceptions (off unless hours are given): 2026-09-05 09:00-13:00, 14:00-18:00, 2026-09-12 to 2026-09-13 09:00-13:00, 14:00-18:00, 2026-09-19 to 2026-09-20 09:00-13:00, 14:00-18:00, 2026-09-26 09:00-13:00, 14:00-18:00.

## Resources

| Resource |
| --- |
| Макаревич А |
| Дедов В |
| Бобренок В |
| Тимофеев В |
| Зорькин В |
| Бундин В |
| Труфанов А |
| Некрасов А |
| Шуранов Ю |
| Домоводов К |
| Амрулин Р |
| Карабанов |
| Олег |
| оплот |
| Коленкоров |
| Мультан |
| Малинина М |
| Лобанов И |
| Дворник |
| Подрядчик |
| Олег лукас |
| Черепанов И |
| оперторы2 |
| оператор2 |
| Тракресурс |
| Сапелин С |
| Технолог |
| Фрезер ЧПУ |
| Пинчук А |
| КИнжекул |
| ТО_2 |
| ТО_1 |
| ТО_М |
| ТО |
| Кладовщики |

## Schedule

| ID | WBS | Task | Duration | Start | Finish | Predecessors | Complete | Remaining | Total slack | Free slack | Constraint | Resources | Work | Actual work |
| --- | --- | --- | --- | --- | --- | --- | --- | --- | --- | --- | --- | --- | --- | --- |
| 1 | 1 | **1 цех** | 431.5d? | 2023-03-10 09:00 A | 2024-11-02 13:00 |  | 98% | 6.73d? |  |  |  |  | 22655.1h | 22399.2h |
| 2 | 1.1 | Повторный замер параметров в 1 цеху, вентилляция (подробности по точкам у Домоводова) | 5h | 2026-09-25 09:00 | 2026-09-25 15:00 |  |  |  | 118.97d |  | start no earlier than 2026-09-25 09:00 | Труфанов А; Некрасов А | 10h |  |
| 3 | 1.2 | **замена ленты пролистывателя** | 10.47d | 2026-09-18 09:00 A | 2026-09-29 12:45 |  | 30% | 7.35d | 116.12d |  |  |  | 11.75h | 3.5h |
| 4 | 1.2.1 | Полная дефектовка пролистывателя, снятие лент/замена | 3h | 2026-09-18 09:00 A | 2026-09-18 12:00 A |  | 100% |  |  |  | start no earlier than 2026-09-18 09:00 | Тимофеев В | 3h | 3h |
| 5 | 1.2.2 | заявка на ремень клиновый для ленты + клей | 30min | 2026-09-18 12:00 A | 2026-09-18 12:30 A | 4 | 100% |  |  |  | start no earlier than 2026-09-18 08:00 | Зорькин В | 0.5h | 0.5h |
| 6 | 1.2.3 | контроль доставки | 15min | 2026-09-25 12:30 | 2026-09-25 12:45 | 5FS+7d |  |  | 116.12d | 0d | start no earlier than 2026-09-18 08:00 | Зорькин В | 0.25h |  |
| 7 | 1.2.4 | склеить ремень | 4h | 2026-09-26 12:45 | 2026-09-26 17:45 | 6FS+1d |  |  | 116.12d | 0d | start no earlier than 2026-09-18 08:00 | Тимофеев В | 4h |  |
| 8 | 1.2.5 | замена лент | 4h | 2026-09-28 17:45 | 2026-09-29 12:45 | 7FS+1d |  |  | 116.12d |  | start no earlier than 2026-09-18 08:00 | Тимофеев В | 4h |  |
| 9 | 1.3 | уборка остатков монтажа с рампы | 1h | 2026-09-14 09:00 A | 2026-09-14 10:00 A |  | 100% |  |  |  | start no earlier than 2026-09-14 09:00 | Некрасов А; Тимофеев В; Труфанов А | 3h | 3h |
| 10 | 1.4 | крепить табличку видеонаблюдение в офисе | 15min | 2026-09-14 09:00 A | 2026-09-14 09:15 A |  | 100% |  |  |  | start no earlier than 2026-09-14 09:00 | Тимофеев В | 0.25h | 0.25h |
| 11 | 1.5 | закрыть чердак у Лукаса | 15min | 2026-09-14 09:00 A | 2026-09-14 09:15 A |  | 100% |  |  |  | start no earlier than 2026-09-14 09:00 | Труфанов А; Некрасов А | 0.5h | 0.5h |
| 12 | 1.6 | Реанимировать весы, чтобы показывали. Смесители | 1h | 2026-09-24 09:00 | 2026-09-24 10:00 |  |  |  | 120.47d |  | start no earlier than 2026-09-24 09:00 | Дедов В | 1h |  |
| 13 | 1.7 | Закрыть каналыгу. На анкера | 2h | 2026-09-15 09:00 A | 2026-09-15 11:00 A |  | 100% |  |  |  | start no earlier than 2026-09-15 09:00 | Бундин В | 2h | 2h |
| 14 | 1.8 | **Дополнительное освещение на Рампе** | 15.14d | 2026-09-11 09:00 A | 2026-09-26 10:05 |  | 85% | 2.29d | 118.46d |  |  |  | 7.17h | 6.08h |
| 15 | 1.8.1 | Прокинуть кабель | 2h | 2026-09-11 09:00 A | 2026-09-11 11:00 A |  | 100% |  |  |  | start no earlier than 2026-09-11 09:00 | Бобренок В | 2h | 2h |
| 16 | 1.8.2 | установить доп светильник на погрузочной рампе | 4h | 2026-09-15 09:00 A | 2026-09-15 13:00 A | 15 | 100% |  |  |  | start no earlier than 2026-09-15 09:00 | Бобренок В | 4h | 4h |
| 17 | 1.8.3 | заявка выключатель | 5min | 2026-09-16 09:00 A | 2026-09-16 09:05 A | 16 | 100% |  |  |  | start no earlier than 2026-09-16 08:00 | Зорькин В | 0.08h | 0.08h |
| 18 | 1.8.4 | контроль | 5min | 2026-09-25 09:00 | 2026-09-25 09:05 | 17FS+7d |  |  | 118.46d | 0d | start no earlier than 2026-09-25 09:00 | Зорькин В | 0.08h |  |
| 19 | 1.8.5 | пожключение выключателя | 1h | 2026-09-26 09:05 | 2026-09-26 10:05 | 18FS+1d |  |  | 118.46d |  | start no earlier than 2026-09-16 08:00 | Бобренок В | 1h |  |
| 20 | 1.9 | востановить светильник отсек выгрузки ГП + установить доп светильник | 4h | 2026-09-09 09:00 A | 2026-09-09 13:00 A |  | 100% |  |  |  | start no earlier than 2026-09-09 09:00 | Бундин В | 4h | 4h |
| 21 | 1.10 | **реконструкция хранения гидролизатов и маршрут подачи навесок** | 21d? | 2026-09-08 09:00 A | 2026-09-29 18:00 |  | 1% | 20.69d? | 115.59d |  |  |  | 52.33h | 1h |
| 22 | 1.10.1 | **перенос системы отопления** | 0.12d | 2026-09-11 09:00 A | 2026-09-11 10:00 A |  | 100% |  |  |  |  |  | 1h | 1h |
| 23 | 1.10.1.1 | посик сварщиков | 1h | 2026-09-11 09:00 A | 2026-09-11 10:00 A |  | 100% |  |  |  | start no earlier than 2026-09-11 09:00 | Домоводов К | 1h | 1h |
| 24 | 1.10.2 | **монтаж доп плащадки** | 19d | 2026-09-10 09:00 | 2026-09-29 18:00 |  |  |  | 115.59d |  |  |  | 17.5h |  |
| 25 | 1.10.2.1 | составить чертеж площадки | 1h | 2026-09-10 09:00 | 2026-09-10 10:00 |  |  |  | 125.41d | 0d | start no earlier than 2026-09-10 09:00 | Домоводов К | 1h |  |
| 26 | 1.10.2.2 | заявка | 15min | 2026-09-11 10:00 | 2026-09-11 10:15 | 25FS+1d |  |  | 125.41d | 0d | start no earlier than 2026-09-10 09:00 | Зорькин В | 0.25h |  |
| 27 | 1.10.2.3 | контроль доставки | 15min | 2026-09-16 10:15 | 2026-09-16 10:30 | 26FS+5d |  |  | 125.41d | 9.81d | start no earlier than 2026-09-08 08:00 | Зорькин В | 0.25h |  |
| 28 | 1.10.2.4 | монтаж | 2d | 2026-09-28 09:00 | 2026-09-29 18:00 | 27FS+1d |  |  | 115.59d |  | start no earlier than 2026-09-28 09:00 | Тимофеев В | 16h |  |

| ID | WBS | Task | Duration | Start | Finish | Predecessors | Complete | Remaining | Total slack | Free slack | Constraint | Resources | Work | Actual work |
| --- | --- | --- | --- | --- | --- | --- | --- | --- | --- | --- | --- | --- | --- | --- |
| 29 | 1.10.3 | **монтаж перегородка корридор** | 19d | 2026-09-10 09:00 | 2026-09-29 18:00 |  |  |  | 115.59d |  |  |  | 17.5h |  |
| 30 | 1.10.3.1 | составить чертеж площадки | 1h | 2026-09-10 09:00 | 2026-09-10 10:00 |  |  |  | 134.47d |  | start no earlier than 2026-09-10 09:00 | Домоводов К | 1h |  |
| 31 | 1.10.3.2 | заявка | 15min | 2026-09-10 09:00 | 2026-09-10 09:15 |  |  |  | 126.53d | 0d | start no earlier than 2026-09-10 09:00 | Зорькин В | 0.25h |  |
| 32 | 1.10.3.3 | контроль доставки | 15min | 2026-09-15 09:15 | 2026-09-15 09:30 | 31FS+5d |  |  | 126.53d | 10.94d | start no earlier than 2026-09-08 08:00 | Зорькин В | 0.25h |  |
| 33 | 1.10.3.4 | монтаж | 2d | 2026-09-28 09:00 | 2026-09-29 18:00 | 32FS+1d |  |  | 115.59d |  | start no earlier than 2026-09-28 09:00 | Тимофеев В | 16h |  |
| 34 | 1.10.4 | **врезка двери в проем на упаковку** | 0.04d | 2026-09-09 09:00 | 2026-09-09 09:20 |  |  |  | 135.55d |  |  |  | 0.33h |  |
| 35 | 1.10.4.1 | планирование с Олегом, как сделана стена | 20min | 2026-09-09 09:00 | 2026-09-09 09:20 |  |  |  | 135.55d |  | start no earlier than 2026-09-09 09:00 | Домоводов К | 0.33h |  |
| 36 | 1.10.5 | замена двери в гидролизатную - | 1d? | 2026-09-08 09:00 | 2026-09-08 18:00 |  |  |  | 135.59d |  | start no earlier than 2026-09-08 08:00 |  |  |  |
| 37 | 1.10.6 | перенос батареи отопления в гидролизатной | 1d? | 2026-09-08 09:00 | 2026-09-08 18:00 |  |  |  | 135.59d |  | start no earlier than 2026-09-08 08:00 |  |  |  |
| 38 | 1.10.7 | демонтаж бетонного отлива/отмостка | 2d | 2026-09-08 09:00 | 2026-09-09 18:00 |  |  |  | 134.59d |  | start no earlier than 2026-09-08 08:00 | Олег | 16h |  |
| 39 | 1.11 | **ревизия парогенератор КАРЧЕР** | 3.03d? | 2026-09-21 09:00 A | 2026-09-24 09:15 A |  | 100% |  |  |  |  |  | 8.5h | 8.5h |
| 40 | 1.11.1 | орг отправить курьера на пнд | 15min | 2026-09-23 09:00 A | 2026-09-23 09:15 A |  | 100% |  |  |  | start no earlier than 2026-09-23 09:00 | Зорькин В | 0.25h | 0.25h |
| 41 | 1.11.2 | контроль доставки | 15min | 2026-09-24 09:00 A | 2026-09-24 09:15 A | 40 | 100% |  |  |  | start no earlier than 2026-09-24 09:00 | Зорькин В | 0.25h | 0.25h |
| 42 | 1.11.3 | монтаж | 1d? | 2026-09-21 09:00 A | 2026-09-21 18:00 A | 41 | 100% |  |  |  | start no earlier than 2026-09-25 09:00 | Тимофеев В | 8h | 8h |
| 43 | 1.12 | **подключить циклоны 1 и 2 линия** | 1.12d | 2026-09-09 09:00 A | 2026-09-10 10:00 A |  | 100% |  |  |  |  |  | 1.17h | 1.17h |
| 44 | 1.12.1 | контроль поставка кабель | 10min | 2026-09-09 09:00 A | 2026-09-09 09:10 A |  | 100% |  |  |  | start no earlier than 2026-09-09 09:00 | Зорькин В | 0.17h | 0.17h |
| 45 | 1.12.2 | монтаж кабеля (временно удлинить от сущестующих концов) | 1h | 2026-09-10 09:00 A | 2026-09-10 10:00 A |  | 100% |  |  |  | start no earlier than 2026-09-10 09:00 | Бундин В | 1h | 1h |
| 46 | 1.13 | **бактерицидные лампы** | 7.12d | 2026-09-09 09:00 A | 2026-09-16 10:00 A |  | 100% |  |  |  |  |  | 3h | 3h |
| 47 | 1.13.1 | замена бактерицидных ламп в коридоре и посмотреть, где не горят | 1h | 2026-09-09 09:00 A | 2026-09-09 10:00 A |  | 100% |  |  |  | start no earlier than 2026-09-09 09:00 | Бундин В | 1h | 1h |
| 48 | 1.13.2 | ремонт лампы снятой бундиным с мойки экструдера | 1h | 2026-09-16 09:00 A | 2026-09-16 10:00 A |  | 100% |  |  |  | start no earlier than 2026-09-16 09:00 | Бундин В | 1h | 1h |
| 49 | 1.13.3 | ремонт лампы в тамбуре вывоз ГП | 1h | 2026-09-16 09:00 A | 2026-09-16 10:00 A |  | 100% |  |  |  | start no earlier than 2026-09-16 09:00 | Бундин В | 1h | 1h |
| 50 | 1.14 | исправить "не возможность открыть" краны фильтр жир 2л | 30min | 2026-09-10 09:00 A | 2026-09-10 09:30 A |  | 100% |  |  |  | start no earlier than 2026-09-10 09:00 | Тимофеев В | 0.5h | 0.5h |
| 51 | 1.15 | ремонт силиконовых уплотнений печи на сетке 1 и 2 л | 3h? | 2026-09-10 09:00 A | 2026-09-10 12:00 A |  | 100% |  |  |  | start no earlier than 2026-09-10 09:00 | Бундин В | 3h | 3h |
| 52 | 1.16 | **сместить квадропак в сторону охладителя 2л** | 19.5d | 2026-09-10 09:00 A | 2026-09-30 13:00 |  | 60% | 7.8d | 115.09d |  |  |  | 20h | 12h |
| 53 | 1.16.1 | отключение / перенгос мехнизмов | 3h | 2026-09-10 09:00 A | 2026-09-10 12:00 A |  | 100% |  |  |  | start no earlier than 2026-09-10 09:00 | Некрасов А; Труфанов А | 6h | 6h |
| 54 | 1.16.2 | подключение | 3h | 2026-09-11 09:00 A | 2026-09-11 12:00 A |  | 100% |  |  |  | start no earlier than 2026-09-11 09:00 | Некрасов А; Труфанов А | 6h | 6h |
| 55 | 1.16.3 | доработка перил | 4h | 2026-09-30 09:00 | 2026-09-30 13:00 |  |  |  | 115.09d |  | start no earlier than 2026-09-30 09:00 | Труфанов А; Некрасов А | 8h |  |

| ID | WBS | Task | Type | Duration | Start | Finish | Predecessors | Complete | Remaining | Total slack | Free slack | Constraint | Resources | Work | Actual work |
| --- | --- | --- | --- | --- | --- | --- | --- | --- | --- | --- | --- | --- | --- | --- | --- |
| 56 | 1.17 | **квадропак - сделать силиконовый успокоитель между нория и весы 800*250 шаг шторок 60** |  | 8.25d | 2026-09-25 09:00 | 2026-10-06 11:00 |  |  |  | 111.34d |  |  |  | 2.33h |  |
| 57 | 1.17.1 | заявка прозрачный силикон |  | 10min | 2026-09-25 09:00 | 2026-09-25 09:10 |  |  |  | 112.3d | 0d | start no earlier than 2026-09-25 09:00 | Зорькин В | 0.17h |  |
| 58 | 1.17.2 | доставка контроль |  | 10min | 2026-10-05 09:10 | 2026-10-05 09:20 | 57FS+7d |  |  | 112.3d | 0.96d | start no earlier than 2026-09-23 08:00 | Зорькин В | 0.17h |  |
| 59 | 1.17.3 | сборка |  | 2h | 2026-10-06 09:00 | 2026-10-06 11:00 | 58 |  |  | 111.34d |  | start no earlier than 2026-10-06 09:00 | Тимофеев В | 2h |  |
| 60 | 1.18 | квадропак - ремонт люфта штанги нажима роликов открытия захватов на станции №1 |  | 4h | 2026-09-30 09:00 | 2026-09-30 13:00 |  |  |  | 115.09d |  | start no earlier than 2026-09-30 09:00 | Тимофеев В | 4h |  |
| 61 | 1.19 | квадропак - кронштейн пневовстряхивателя - востановить резтбу сквозную |  | 1h | 2026-09-30 09:00 | 2026-09-30 10:00 |  |  |  | 115.47d |  | start no earlier than 2026-09-30 09:00 | Тимофеев В | 1h |  |
| 62 | 1.20 | Ревизия утечек воздуха на квадропаке (важно проверить пневмораспределителях) и вакуумную систему (если работают, отменяем задание) | manual | 2h | 2026-09-23 09:00 A | 2026-09-23 11:00 A |  | 100% |  |  |  | start no earlier than 2026-09-23 09:00 | Тимофеев В | 2h | 2h |
| 63 | 1.21 | Комплексное ТО квадропака, проверка всех соединений, протяжка болтов на всех узлах | manual | 2h | 2026-09-23 09:00 A | 2026-09-23 11:00 A |  | 100% |  |  |  | start no earlier than 2026-09-23 09:00 | Тимофеев В | 2h | 2h |
| 64 | 1.22 | Сделать основную кнопку на НОТИСЕ, чтоб срабатывало от нее, а не от блока управления (схему взять у нас в кабинете) | manual | 1h | 2026-09-22 09:00 A | 2026-09-22 10:00 A |  | 100% |  |  |  | start no earlier than 2026-09-22 09:00 | Дедов В | 1h | 1h |
| 65 | 1.23 | Убрать все кабеля на полу в зоне фасовки, теко-нотис (кабельный менеджмент) |  | 2h | 2026-09-10 09:00 A | 2026-09-10 11:00 A |  | 100% |  |  |  | start no earlier than 2026-09-10 09:00 | Бундин В | 2h | 2h |
| 66 | 1.24 | Клемная коробка на жирах сделать, сейчас вся висит на хомутах 2 линия |  | 1h | 2026-09-07 09:00 A | 2026-09-07 10:00 A |  | 100% |  |  |  | start no earlier than 2026-09-05 09:00 | Дедов В | 1h | 1h |
| 67 | 1.25 | Ошибка на баке жиротопки 2 линия Err.4 /разобраться и устранить причину |  | 1h | 2026-09-04 09:00 A | 2026-09-04 10:00 A |  | 100% |  |  |  | start no earlier than 2026-09-04 09:00 | Бобренок В | 1h | 1h |
| 68 | 1.26 | Установить новые газлифты, которые получил Бобренок на жиротопку 2 этаж |  | 2h | 2026-09-07 09:00 A | 2026-09-07 11:00 A |  | 100% |  |  |  | start no earlier than 2026-09-07 09:00 | Тимофеев В | 2h | 2h |
| 69 | 1.27 | **Не работают роль ставни на жирах, не стопоряться сделать/устранить неисправность** |  | 19.02d | 2026-09-09 09:00 A | 2026-09-29 09:10 |  | 98% | 0.38d | 116.57d |  |  |  | 8.33h | 8.17h |
| 70 | 1.27.1 | Вызвать подрядчика/контроль |  | 10min | 2026-09-09 09:00 A | 2026-09-09 09:10 A |  | 100% |  |  |  | start no earlier than 2026-09-09 09:00 | Зорькин В | 0.17h | 0.17h |
| 71 | 1.27.2 | получить счет на ремонт |  | 1d | 2026-09-09 09:10 A | 2026-09-10 09:10 A | 70 | 100% |  |  |  | start no earlier than 2026-09-08 09:00 | Зорькин В | 8h | 8h |
| 72 | 1.27.3 | согласовать с подрядчиком дату ремонта |  | 10min | 2026-09-29 09:00 | 2026-09-29 09:10 | 71 |  |  | 116.57d |  | start no earlier than 2026-09-29 09:00 | Зорькин В | 0.17h |  |
| 73 | 1.28 | закреить отбойник корридор навесок (заанкерить) |  | 1h | 2026-09-03 09:00 A | 2026-09-03 10:00 A |  | 100% |  |  |  | start no earlier than 2026-09-03 08:00 | Бобренок В | 1h | 1h |
| 74 | 1.29 | Переподключение кондиционера срежима кондиционера на автоматический |  | 15min | 2026-09-02 09:00 A | 2026-09-02 09:15 A |  | 100% |  |  |  | start no earlier than 2026-09-02 09:00 | Бобренок В | 0.25h | 0.25h |
| 75 | 1.30 | Замена редуктора поворотного стола |  | 1h | 2026-09-02 09:00 A | 2026-09-02 10:00 A |  | 100% |  |  |  | start no earlier than 2026-09-02 09:00 | Бобренок В | 1h | 1h |
| 76 | 1.31 | Программирование частотника теко 0,4 привод смещения ленты |  | 2h | 2026-09-02 09:00 A | 2026-09-02 11:00 A |  | 100% |  |  |  | start no earlier than 2026-09-02 09:00 | Тимофеев В | 2h | 2h |
| 77 | 1.32 | Прозвонить кабель паллетных весов ошибка Error 10 |  | 1h | 2026-09-07 09:00 A | 2026-09-07 10:00 A |  | 100% |  |  |  | start no earlier than 2026-09-05 09:00 | Дедов В | 1h | 1h |
| 78 | 1.33 | Замена подшипников на ножевом узле |  | 2h | 2026-09-01 09:00 A | 2026-09-01 11:00 A |  | 100% |  |  |  | start no earlier than 2026-09-01 09:00 | Бундин В | 2h | 2h |
| 79 | 1.34 | Замена насоса на водяной рубашке жиротопке 2 этаж |  | 2h | 2026-09-01 09:00 A | 2026-09-01 11:00 A |  | 100% |  |  |  | start no earlier than 2026-09-01 09:00 | Бундин В | 2h | 2h |
| 80 | 1.35 | Замена контактора 1 линия 2 зона экструдера |  | 1h | 2026-09-01 09:00 A | 2026-09-01 10:00 A |  | 100% |  |  |  | start no earlier than 2026-09-01 09:00 | Бундин В | 1h | 1h |
| 81 | 1.36 | Редуктор смесителя 1 линия, собрать информацию, что не так, что нужно сделать |  | 30min | 2026-09-02 09:00 A | 2026-09-02 09:30 A |  | 100% |  |  |  | start no earlier than 2026-09-02 09:00 | Тимофеев В | 0.5h | 0.5h |
| 82 | 1.37 | Ремонт мухобойки 1 цех в корридоре завоза навесок |  | 1h | 2026-09-01 09:00 A | 2026-09-01 10:00 A |  | 100% |  |  |  | start no earlier than 2026-09-01 09:00 | Труфанов А | 1h | 1h |
| 83 | 1.38 | капает с кондиционера ближе к жировику (устранить) |  | 2h | 2026-08-31 09:00 A | 2026-08-31 11:00 A |  | 100% |  |  |  | start no earlier than 2026-08-31 09:00 | Бундин В; Тимофеев В | 4h | 4h |
| 84 | 1.39 | отвезти внутренний блок с 1 цеха на синий склад | manual | 1h | 2026-08-30 09:00 A | 2026-08-30 10:00 A |  | 100% |  |  |  | start no earlier than 2026-08-30 09:00 | Бундин В | 1h | 1h |
| 85 | 1.40 | чистка фильтра кондиционера между печками | manual | 1h | 2026-08-31 09:00 A | 2026-08-31 10:00 A |  | 100% |  |  |  | start no earlier than 2026-08-31 09:00 | Бундин В | 1h | 1h |
| 86 | 1.41 | ревизия приточной вентиляции (протяжка контактов и т.д.) | manual | 3h | 2026-08-31 09:00 A | 2026-08-31 12:00 A |  | 100% |  |  |  | start no earlier than 2026-08-31 09:00 | Дедов В | 3h | 3h |
| 87 | 1.42 | прикрутить лоток между барабанами, чтобы не бил о лопасти 1 линия | manual | 1h | 2026-08-30 09:00 A | 2026-08-30 10:00 A |  | 100% |  |  |  | start no earlier than 2026-08-30 09:00 | Бундин В | 1h | 1h |
| 88 | 1.43 | улитка на подиуме за цехом, прикрутить отвод в бок (отвод под подиумом) | manual | 1h | 2026-08-31 09:00 A | 2026-08-31 10:00 A |  | 100% |  |  |  | start no earlier than 2026-08-31 09:00 | Бундин В | 1h | 1h |
| 89 | 1.44 | течет вода с поломоечной машинки - разобраться | manual | 2h | 2026-08-31 09:00 A | 2026-08-31 11:00 A |  | 100% |  |  |  | start no earlier than 2026-08-31 09:00 | Дедов В | 2h | 2h |

| ID | WBS | Task | Duration | Start | Finish | Predecessors | Complete | Remaining | Total slack | Free slack | Constraint | Resources | Work | Actual work |
| --- | --- | --- | --- | --- | --- | --- | --- | --- | --- | --- | --- | --- | --- | --- |
| 90 | 1.45 | **почистить шнек сухого гидрализата (1 линия)** | 0.12d | 2026-08-28 08:00 A | 2026-08-28 10:00 A |  | 100% |  |  |  |  | Бобренок В | 3h | 3h |
| 91 | 1.45.1 | замена пошипников | 1h | 2026-08-28 08:00 A | 2026-08-28 10:00 A |  | 100% |  |  |  | start no earlier than 2026-08-28 08:00 | Тимофеев В; Некрасов А | 2h | 2h |
| 92 | 1.46 | замена фильтров на приточке | 1h | 2026-08-27 09:00 A | 2026-08-27 10:00 A |  | 100% |  |  |  | start no earlier than 2026-08-27 09:00 | Дедов В | 1h | 1h |
| 93 | 1.47 | **продумать как сделать герметичную крышку на смесителе сухого гидрализата** | 29.25d | 2026-08-27 09:00 A | 2026-09-29 11:00 |  | 57% | 12.54d | 116.34d |  |  |  | 20h | 12h |
| 94 | 1.47.1 | печать уплотненителей крышек | 4h | 2026-09-28 09:00 | 2026-09-28 13:00 |  |  |  | 116.84d | 0.5d | start no earlier than 2026-09-28 09:00 | Домоводов К | 4h |  |
| 95 | 1.47.2 | изготовить крышку (расскажу по телефону) | 4h | 2026-08-27 09:00 A | 2026-08-27 13:00 A |  | 100% |  |  |  | start no earlier than 2026-08-27 09:00 | Бобренок В; Шуранов Ю | 8h | 8h |
| 96 | 1.47.3 | изготовить крышку для 2 линии (как сделал Слава) | 4h | 2026-09-01 09:00 A | 2026-09-01 13:00 A |  | 100% |  |  |  | start no earlier than 2026-09-01 09:00 | Макаревич А | 4h | 4h |
| 97 | 1.47.4 | установка на струбцинах с уплотнителями | 2h | 2026-09-29 09:00 | 2026-09-29 11:00 | 94 |  |  | 116.34d |  | start no earlier than 2026-09-29 09:00 | Тимофеев В; Домоводов К | 4h |  |
| 98 | 1.48 | **метал от тенов печи, устранить причину** | 15.38d? | 2026-08-24 09:00 A | 2026-09-11 12:00 A |  | 100% |  |  |  |  |  | 5.42h | 5.42h |
| 99 | 1.48.1 | выяснить сгорел тен русский или китайский (будет ночью остановка) | 15min | 2026-08-27 09:00 A | 2026-08-27 09:15 A |  | 100% |  |  |  | start no earlier than 2026-08-27 09:00 | Бобренок В | 0.25h | 0.25h |
| 100 | 1.48.2 | вскрыть 2 зону и посмотреть какой тен (мойка) | 1h | 2026-08-31 09:00 A | 2026-08-31 10:00 A |  | 100% |  |  |  | start no earlier than 2026-09-02 09:00 | Некрасов А | 1h | 1h |
| 101 | 1.48.3 | осмотр состояния тенов/ планирование замены | 10min | 2026-08-27 09:00 A | 2026-08-27 09:10 A |  | 100% |  |  |  | start no earlier than 2026-08-27 09:00 | Бобренок В | 0.17h | 0.17h |
| 102 | 1.48.4 | выяснить статус поставки тенов из китая | 1h | 2026-08-24 09:00 A | 2026-08-24 10:00 A |  | 100% |  |  |  | start no earlier than 2026-08-24 09:00 | Шуранов Ю | 1h | 1h |
| 103 | 1.48.5 | замена заброкованных осмотром тенов | 3h? | 2026-09-11 09:00 A | 2026-09-11 12:00 A |  | 100% |  |  |  | start no earlier than 2026-09-11 09:00 | Тимофеев В | 3h | 3h |
| 104 | 1.49 | замена плата 485 в контроллере 2 линия | 1h | 2026-08-21 09:00 A | 2026-08-21 10:00 A |  | 100% |  |  |  | start no earlier than 2026-08-21 09:00 | Дедов В | 1h | 1h |
| 105 | 1.50 | перемонтаж частотный привод сух гидролизат | 2h | 2026-09-02 09:00 A | 2026-09-02 11:00 A |  | 100% |  |  |  | start no earlier than 2026-09-04 09:00 | Некрасов А; Дедов В | 4h | 4h |
| 106 | 1.51 | поменять светильник где вывозят готовую продукцию (с люлки) | 2h | 2026-08-31 09:00 A | 2026-08-31 11:00 A |  | 100% |  |  |  | start no earlier than 2026-08-31 09:00 | Тимофеев В; Бундин В | 4h | 4h |
| 107 | 1.52 | на нотис настроить кнопку, чтобы работала в цикле | 1h | 2026-08-20 09:00 A | 2026-08-20 10:00 A |  | 100% |  |  |  | start no earlier than 2026-08-20 09:00 | Дедов В | 1h | 1h |
| 108 | 1.53 | изготовление герметичной крышки под мойкой экструдера (объясню по телефону) занкрепить на анкера | 2h | 2026-08-19 08:00 A | 2026-08-19 11:00 A |  | 100% |  |  |  | start no earlier than 2026-08-19 08:00 | Бобренок В | 2h | 2h |
| 109 | 1.54 | **проверка пылесоса, почему не стартует (в слесарке)** | 1d? | 2026-08-25 09:00 A | 2026-08-25 18:00 A |  | 100% |  |  |  |  | Бобренок В | 16h | 16h |
| 110 | 1.54.1 | заказать двигатель и выяснить на гарантии он или нет | 1d? | 2026-08-25 09:00 A | 2026-08-25 18:00 A |  | 100% |  |  |  | start no earlier than 2026-08-25 08:00 | Шуранов Ю | 8h | 8h |
| 111 | 1.55 | ремонт свет в раздевалке | 30min | 2026-08-14 09:00 A | 2026-08-14 09:30 A |  | 100% |  |  |  | start no earlier than 2026-08-14 09:00 | Бундин В | 0.5h | 0.5h |
| 112 | 1.56 | стиральная машинка проверка насоса слива, разборка, фото шильдик. Не качает. | 2h | 2026-08-15 09:00 A | 2026-08-17 11:00 A |  | 100% |  |  |  | start no earlier than 2026-08-15 09:00 | Бундин В | 2h | 2h |
| 113 | 1.57 | **настройка пробники на толстую цветную пленку** | 9.38d? | 2026-08-14 09:00 A | 2026-08-27 12:00 A |  | 100% |  |  |  |  |  | 25.25h | 25.25h |
| 114 | 1.57.1 | тест пленки на пробнике с Луговских В в 11 00 | 1h | 2026-08-14 09:00 A | 2026-08-14 10:00 A |  | 100% |  |  |  | start no earlier than 2026-08-14 09:00 | Тимофеев В | 1h | 1h |
| 115 | 1.57.2 | установить протяжной ролик к турбе от ТЕКО 1.5 с синего,снять с синего примерка | 2h | 2026-08-17 09:00 A | 2026-08-17 11:00 A |  | 100% |  |  |  | start no earlier than 2026-08-17 09:00 | Тимофеев В | 2h | 2h |
| 116 | 1.57.3 | настройка пробника с режимом фотометки | 1h | 2026-08-27 09:00 A | 2026-08-27 10:00 A |  | 100% |  |  |  | start no earlier than 2026-08-27 09:00 | Дедов В | 1h | 1h |
| 117 | 1.57.4 | получить пневмоцилиндр | 15min | 2026-08-20 09:00 A | 2026-08-20 09:15 A |  | 100% |  |  |  | start no earlier than 2026-08-20 09:00 | Тимофеев В | 0.25h | 0.25h |
| 118 | 1.57.5 | изготовление крепления вспомогательной протяжки | 6h | 2026-08-21 09:00 A | 2026-08-21 16:00 A |  | 100% |  |  |  | start no earlier than 2026-08-21 09:00 | Тимофеев В | 6h | 6h |
| 119 | 1.57.6 | подключение частотника через реле от двигателя протяжки (спросить Константина) | 1d? | 2026-08-25 09:00 A | 2026-08-25 18:00 A |  | 100% |  |  |  | start no earlier than 2026-08-25 08:00 | Бундин В | 8h | 8h |
| 120 | 1.57.7 | настройка частотника для работы пробника | 3h | 2026-08-27 09:00 A | 2026-08-27 12:00 A |  | 100% |  |  |  | start no earlier than 2026-08-27 09:00 | Тимофеев В; Шуранов Ю | 6h | 6h |
| 121 | 1.57.8 | жалобы, что пробники бьют периодически током- проверить соединения, контакты и т.д. | 1h | 2026-08-26 08:00 A | 2026-08-26 10:00 A |  | 100% |  |  |  | start no earlier than 2026-08-26 08:00 | Бобренок В | 1h | 1h |
| 122 | 1.58 | настройка параметров ЧП сухой ГДЗ сбиты, переставлен с линии 2. Снял Слава, найти. Настройка в птц | 15min | 2026-08-20 09:00 A | 2026-08-20 09:15 A |  | 100% |  |  |  | start no earlier than 2026-08-20 09:00 | Дедов В | 0.25h | 0.25h |

| ID | WBS | Task | Type | Duration | Start | Finish | Predecessors | Complete | Remaining | Total slack | Free slack | Constraint | Resources | Work | Actual work |
| --- | --- | --- | --- | --- | --- | --- | --- | --- | --- | --- | --- | --- | --- | --- | --- |
| 123 | 1.59 | **ТЕКО ремонт кнопки, которую снял Бобренок В , вернуть то что снял с 3ц** |  | 19.12d | 2026-08-13 09:00 A | 2026-09-08 10:00 A |  | 100% |  |  |  |  |  | 2.75h | 2.75h |
| 124 | 1.59.1 | осмотр |  | 30min | 2026-08-13 09:00 A | 2026-08-13 09:30 A |  | 100% |  |  |  | start no earlier than 2026-08-13 09:00 | Домоводов К | 0.5h | 0.5h |
| 125 | 1.59.2 | заявка в ТЕКО платы |  | 30min | 2026-08-18 09:00 A | 2026-08-18 09:30 A | 124 | 100% |  |  |  | start no earlier than 2026-08-18 09:00 | Зорькин В | 0.5h | 0.5h |
| 126 | 1.59.3 | контроль поставки |  | 15min | 2026-09-04 09:00 A | 2026-09-04 09:15 A | 125FS+10d | 100% |  |  |  | start no earlier than 2026-09-04 09:00 | Зорькин В | 0.25h | 0.25h |
| 127 | 1.59.4 | монтаж платы на место |  | 1h | 2026-09-08 09:00 A | 2026-09-08 10:00 A | 126FS+1d | 100% |  |  |  | start no earlier than 2026-09-09 09:00 | Тимофеев В | 1h | 1h |
| 128 | 1.59.5 | Вернуть голову с восстановленной клавиатурой на НОТИС в 3 цех |  | 30min | 2026-09-08 09:00 A | 2026-09-08 09:30 A |  | 100% |  |  |  | start no earlier than 2026-09-09 09:00 | Тимофеев В | 0.5h | 0.5h |
| 129 | 1.60 | установить вент решетки на трассу кондиционера |  | 30min | 2026-08-12 09:00 A | 2026-08-12 09:30 A |  | 100% |  |  |  | start no earlier than 2026-08-12 09:00 | Труфанов А; Некрасов А | 1h | 1h |
| 130 | 1.61 | течь сливной трубы кондиционара править трассу |  | 2h | 2026-08-12 09:00 A | 2026-08-12 11:00 A |  | 100% |  |  |  | start no earlier than 2026-08-12 09:00 | Труфанов А; Некрасов А | 4h | 4h |
| 131 | 1.62 | слить конденсат и чистка фильтров, продуть радиаторы компрессора | manual | 2h | 2026-08-09 09:00 A | 2026-08-09 11:00 A |  | 100% |  |  |  | start no earlier than 2026-08-09 09:00 | Бундин В | 2h | 2h |
| 132 | 1.63 | заменить камеру над квадропаком (слева) -камера у нас в слесарке, взять в помощь оператора | manual | 1h | 2026-08-09 09:00 A | 2026-08-09 10:00 A |  | 100% |  |  |  | start no earlier than 2026-08-09 09:00 | Бундин В | 1h | 1h |
| 133 | 1.64 | дверь тяжело открывается в гидрализаторную (попробовать поправить, задевает металл-металл) |  | 1h | 2026-08-06 09:00 A | 2026-08-06 10:00 A |  | 100% |  |  |  | start no earlier than 2026-08-06 08:00 | Труфанов А | 1h | 1h |
| 134 | 1.65 | заменить плафон в душе | manual | 1h | 2026-08-06 09:00 A | 2026-08-06 10:00 A |  | 100% |  |  |  | start no earlier than 2026-08-06 09:00 | Бундин В | 1h | 1h |
| 135 | 1.66 | ТО пробники и Теко 0,4 (чистка тен, ножей, смазка) |  | 4h | 2026-08-05 08:00 A | 2026-08-05 13:00 A |  | 100% |  |  |  | start no earlier than 2026-08-05 08:00 | Макаревич А | 4h | 4h |
| 136 | 1.67 | **палетообмостчик монтаж в 1ц** |  | 39.38d | 2026-08-12 09:00 A | 2026-09-28 12:00 |  | 29% | 27.79d | 117.22d |  |  |  | 7.25h | 1.25h |
| 137 | 1.67.1 | получить договор + счет |  | 1h | 2026-08-12 09:00 A | 2026-08-12 10:00 A |  | 100% |  |  |  | start no earlier than 2026-08-12 09:00 | Зорькин В | 1h | 1h |
| 138 | 1.67.2 | **согласвоание договор** |  | 2.89d | 2026-08-12 10:00 A | 2026-08-17 09:05 A | 137 | 100% |  |  |  |  |  | 0.17h | 0.17h |
| 139 | 1.67.2.1 | передать Маше |  | 5min | 2026-08-12 10:00 A | 2026-08-12 10:05 A |  | 100% |  |  |  | start no earlier than 2026-08-12 09:00 | Домоводов К | 0.08h | 0.08h |
| 140 | 1.67.2.2 | контроль |  | 5min | 2026-08-17 09:00 A | 2026-08-17 09:05 A | 139FS+3d | 100% |  |  |  | start no earlier than 2026-08-17 09:00 | Домоводов К | 0.08h | 0.08h |
| 141 | 1.67.3 | оплата подать счет | milestone | 0d | 2026-08-12 09:00 A | 2026-08-12 09:00 A |  | 100% |  |  |  | start no earlier than 2026-08-12 09:00 | Домоводов К |  |  |
| 142 | 1.67.4 | доставка конетроль |  | 5min | 2026-09-01 09:00 A | 2026-09-01 09:05 A |  | 100% |  |  |  | start no earlier than 2026-09-01 09:00 | Зорькин В | 0.08h | 0.08h |
| 143 | 1.67.5 | монтаж |  | 3h | 2026-09-28 09:00 | 2026-09-28 12:00 |  |  |  | 117.22d |  | start no earlier than 2026-09-28 09:00 | Некрасов А; Труфанов А | 6h |  |
| 144 | 1.68 | **замена сетка печи линия 1** |  | 39.09d? | 2026-08-12 09:00 A | 2026-09-28 09:45 |  | 5% | 36.98d? | 117.5d |  |  |  | 9.5h | 0.75h |
| 145 | 1.68.1 | замерить параметры сетки |  | 15min | 2026-08-12 09:00 A | 2026-08-12 09:15 A |  | 100% |  |  |  | start no earlier than 2026-08-12 09:00 | Домоводов К; Тимофеев В | 0.5h | 0.5h |
| 146 | 1.68.2 | получить счет на сетку КИТАЙ |  | 15min | 2026-08-17 09:00 A | 2026-08-17 09:15 A | 145 | 100% |  |  |  | start no earlier than 2026-08-17 09:00 | Зорькин В | 0.25h | 0.25h |
| 147 | 1.68.3 | контроль оплата | milestone | 0d | 2026-08-21 09:00 A | 2026-08-21 09:00 A | 146FS+2d | 100% |  |  |  | start no earlier than 2026-08-21 09:00 | Зорькин В |  |  |
| 148 | 1.68.4 | контроль доставки |  | 15min | 2026-09-25 09:00 | 2026-09-25 09:15 | 147FS+30d |  |  | 117.5d | 0d | start no earlier than 2026-08-10 08:00 | Зорькин В | 0.25h |  |
| 149 | 1.68.5 | приемка |  | 30min | 2026-09-25 09:15 | 2026-09-25 09:45 | 148 |  |  | 117.5d | 0d | start no earlier than 2026-08-10 08:00 | Зорькин В | 0.5h |  |
| 150 | 1.68.6 | замена |  | 1d? | 2026-09-26 09:45 | 2026-09-28 09:45 | 149FS+1d |  |  | 117.5d |  | start no earlier than 2026-08-10 08:00 | Тимофеев В | 8h |  |

| ID | WBS | Task | Type | Duration | Start | Finish | Predecessors | Complete | Remaining | Actual finish | Total slack | Constraint | Resources | Work | Actual work |
| --- | --- | --- | --- | --- | --- | --- | --- | --- | --- | --- | --- | --- | --- | --- | --- |
| 151 | 1.69 | **зависает диспелей на расходомере 2л** |  | 42.06d | 2026-08-11 09:00 A | 2026-09-30 09:30 |  | 82% | 7.65d |  | 115.53d |  |  | 2.75h | 2.25h |
| 152 | 1.69.1 | контроль поставки |  | 15min | 2026-08-11 09:00 A | 2026-08-11 09:15 A |  | 100% |  |  |  | start no earlier than 2026-08-11 09:00 | Домоводов К | 0.25h | 0.25h |
| 153 | 1.69.2 | замена кабель к монитору |  | 30min | 2026-08-19 09:00 A | 2026-08-19 09:30 A | 152 | 100% |  |  |  | start no earlier than 2026-08-19 09:00 | Домоводов К | 0.5h | 0.5h |
| 154 | 1.69.3 | объеденить минус шину контроллера с нулевым проводом оборудования ч/з резистор 10 Ом |  | 30min | 2026-09-30 09:00 | 2026-09-30 09:30 |  |  |  |  | 115.53d | start no earlier than 2026-09-30 09:00 | Труфанов А | 0.5h |  |
| 155 | 1.69.4 | замена кабель от ЧП к контроллеру на экранированный |  | 30min | 2026-08-24 09:00 A | 2026-08-24 09:30 A |  | 100% |  |  |  | start no earlier than 2026-08-24 09:00 | Домоводов К | 0.5h | 0.5h |
| 156 | 1.69.5 | замена блок питания 5в |  | 1h | 2026-08-13 09:00 A | 2026-08-13 10:00 A |  | 100% |  |  |  | start no earlier than 2026-08-13 09:00 | Труфанов А | 1h | 1h |
| 157 | 1.70 | подключить розетку на правой ноге квадропака (отключить квадропак на 5 минут) |  | 2h | 2026-08-11 09:00 A | 2026-08-11 11:00 A |  | 100% |  |  |  | start no earlier than 2026-08-11 09:00 | Бобренок В | 2h | 2h |
| 158 | 1.71 | **перенос вентилятор охладителя линия2 в реверс, убрать шкаф** |  | 24.12d | 2026-08-18 09:00 A | 2026-09-16 10:00 A |  | 100% |  |  |  |  |  | 38.25h | 38.25h |
| 159 | 1.71.1 | проектирование рамы |  | 2d | 2026-08-19 09:00 A | 2026-08-20 18:00 A |  | 100% |  |  |  | start no earlier than 2026-08-19 09:00 | Зорькин В | 16h | 16h |
| 160 | 1.71.2 | чертеж рамы под вентилятор |  | 2h | 2026-08-18 09:00 A | 2026-08-18 11:00 A |  | 100% |  |  |  | start no earlier than 2026-08-18 09:00 | Зорькин В; Домоводов К | 4h | 4h |
| 161 | 1.71.3 | заявка вент фитинги |  | 1h | 2026-08-21 09:00 A | 2026-08-21 10:00 A | 160 | 100% |  |  |  | start no earlier than 2026-08-21 09:00 | Зорькин В | 1h | 1h |
| 162 | 1.71.4 | конроль поставки |  | 15min | 2026-09-09 09:00 A | 2026-09-09 09:15 A | 161FS+10d | 100% |  |  |  | start no earlier than 2026-09-09 09:00 | Зорькин В | 0.25h | 0.25h |
| 163 | 1.71.5 | сборка рама |  | 4h | 2026-09-07 09:00 A | 2026-09-07 13:00 A |  | 100% |  |  |  | start no earlier than 2026-09-07 09:00 | Некрасов А; Труфанов А | 8h | 8h |
| 164 | 1.71.6 | модернизация венттилятора/монтаж вентилляции |  | 4h | 2026-09-11 09:00 A | 2026-09-11 13:00 A | 163 | 100% |  |  |  | start no earlier than 2026-09-11 09:00 | Некрасов А; Труфанов А | 8h | 8h |
| 165 | 1.71.7 | Подключение улитки, монтаж щитка к стене |  | 1h | 2026-09-16 09:00 A | 2026-09-16 10:00 A |  | 100% |  |  |  | start no earlier than 2026-09-16 09:00 | Макаревич А | 1h | 1h |
| 166 | 1.72 | **ревизия красного смесителя 2 линия (просыпается мука)** |  | 34.03d | 2026-08-17 09:00 A | 2026-09-25 09:15 |  | 92% | 2.62d |  | 119.56d |  |  | 3.25h | 3h |
| 167 | 1.72.1 | подтянуть торцевое уплотнение смесителя |  | 30min | 2026-08-17 09:00 A | 2026-08-17 09:30 A |  | 100% |  |  |  | start no earlier than 2026-08-17 09:00 | Бундин В | 0.5h | 0.5h |
| 168 | 1.72.2 | запрос штатное уплотнеие у производителя / заявка |  | 30min | 2026-08-19 09:00 A | 2026-08-19 09:30 A |  | 100% |  |  |  | start no earlier than 2026-08-19 09:00 | Шуранов Ю | 0.5h | 0.5h |
| 169 | 1.72.3 | контроль поставки уплотнение торцевое вала |  | 15min | 2026-09-25 09:00 | 2026-09-25 09:15 | 168FS+5d |  |  |  | 119.56d | start no earlier than 2026-09-25 09:00 | Зорькин В | 0.25h |  |
| 170 | 1.72.4 | замена |  | 2h | 2026-09-01 09:00 A | 2026-09-01 11:00 A | 169FS+1d | 100% |  |  |  | start no earlier than 2026-09-04 09:00 | Тимофеев В | 2h | 2h |
| 171 | 1.73 | шум зл двигателя 2 линия / смазка |  | 1h | 2026-08-10 08:00 A | 2026-08-10 10:00 A |  | 100% |  |  |  | start no earlier than 2026-08-10 08:00 | Тимофеев В | 1h | 1h |
| 172 | 1.74 | натяжка транспортер №2 линия 2 |  | 2h | 2026-08-12 09:00 A | 2026-08-12 11:00 A |  | 100% |  |  |  | start no earlier than 2026-08-12 09:00 | Тимофеев В | 2h | 2h |
| 173 | 1.75 | монтаж- подключение внутреннего блока кондиционера |  | 2h | 2026-08-05 09:00 A | 2026-08-05 11:00 A |  | 100% |  |  |  | start no earlier than 2026-08-05 09:00 | Труфанов А; Тимофеев В | 4h | 4h |
| 174 | 1.76 | **теко 0,4 -восстановить или заменить блок для тепловухи** |  | 1.12d? | 2026-08-04 09:00 A | 2026-08-05 10:00 |  | 100% |  | 2026-08-05 18:00 |  |  | Макаревич А | 17h | 17h |
| 175 | 1.76.1 | проверить подключение транспортера и тепловуху |  | 1d? | 2026-08-05 09:00 A | 2026-08-05 18:00 A |  | 100% |  |  |  | start no earlier than 2026-08-05 09:00 | Шуранов Ю | 8h | 8h |
| 176 | 1.77 | замена перегоревших светильников, монтаж доп. Светильников (Шуранов- покажу) |  | 4h | 2026-08-05 09:00 A | 2026-08-05 13:00 A |  | 100% |  |  |  | start no earlier than 2026-08-12 09:00 | Труфанов А; Тимофеев В | 8h | 8h |
| 177 | 1.78 | включить мухоловку 1 линия экструдер | manual | 0.5h | 2026-08-02 09:00 A | 2026-08-02 09:30 A |  | 100% |  |  |  | start no earlier than 2026-08-02 09:00 | Бобренок В | 0.5h | 0.5h |
| 178 | 1.79 | пропадает питание на весах смесителя 2 линия- проверить | manual | 1h | 2026-08-01 09:00 A | 2026-08-01 10:00 A |  | 100% |  |  |  | start no earlier than 2026-08-01 09:00 | Бундин В | 1h | 1h |
| 179 | 1.80 | эксперимент с лейкой жиры |  | 2h | 2026-08-06 09:00 A | 2026-08-06 11:00 A |  | 100% |  |  |  | start no earlier than 2026-08-07 09:00 | Тимофеев В | 2h | 2h |
| 180 | 1.81 | камера над компрессором снять и поменять (камеры у нас в кабинете) |  | 1h | 2026-08-03 09:00 A | 2026-08-03 10:00 A |  | 100% |  |  |  | start no earlier than 2026-08-03 09:00 | Макаревич А; Тимофеев В | 2h | 2h |
| 181 | 1.82 | на мезонине смотрит на квадропак, поменять и сделать чуть ниже обзор |  | 1h | 2026-08-03 09:00 A | 2026-08-03 10:00 A |  | 100% |  |  |  | start no earlier than 2026-08-03 09:00 | Макаревич А; Тимофеев В | 2h | 2h |
| 182 | 1.83 | камера 1 линия повернуть чуть правее и приподнять |  | 1h | 2026-08-03 09:00 A | 2026-08-03 10:00 A |  | 100% |  |  |  | start no earlier than 2026-08-03 09:00 | Макаревич А; Тимофеев В | 2h | 2h |
| 183 | 1.84 | камера на углу, где вывозят готовую продукцию с люльки поменять (камеры у нас в кабинете) |  | 2h | 2026-08-03 09:00 A | 2026-08-03 11:00 A |  | 100% |  |  |  | start no earlier than 2026-08-03 09:00 | Макаревич А; Тимофеев В | 4h | 4h |
| 184 | 1.85 | повесить камеру над входом в фасовку, чтобы смотрела на коридор и как обрабатывают руки, монтаж кабеля |  | 3h | 2026-08-03 09:00 A | 2026-08-03 12:00 A |  | 100% |  |  |  | start no earlier than 2026-08-03 09:00 | Макаревич А; Тимофеев В | 6h | 6h |

| ID | WBS | Task | Type | Duration | Start | Finish | Predecessors | Complete | Remaining | Total slack | Free slack | Constraint | Resources | Work | Actual work |
| --- | --- | --- | --- | --- | --- | --- | --- | --- | --- | --- | --- | --- | --- | --- | --- |
| 185 | 1.86 | **снять камеру зона экструдера и повесить на жирах со стороны экструдера, монтаж кабель** |  | 0.12d | 2026-09-09 09:00 A | 2026-09-09 10:00 A |  | 100% |  |  |  |  |  | 2h | 2h |
| 186 | 1.86.1 | на мойке попробовать снять камеру |  | 1h | 2026-09-09 09:00 A | 2026-09-09 10:00 A |  | 100% |  |  |  | start no earlier than 2026-09-09 09:00 | Труфанов А; Некрасов А | 2h | 2h |
| 187 | 1.87 | открутить полочку на столе на жирах, сделать ребра жесткости |  | 1h | 2026-07-31 09:00 A | 2026-07-31 10:00 A |  | 100% |  |  |  | start no earlier than 2026-07-31 08:00 | Бундин В | 1h | 1h |
| 188 | 1.88 | слив конденсата с компрессора и продуть радиаторы и фильтры |  | 1h | 2026-07-31 08:00 A | 2026-07-31 10:00 A |  | 100% |  |  |  | start no earlier than 2026-07-31 08:00 | Тимофеев В | 1h | 1h |
| 189 | 1.89 | Ревизия головы от Нотис/заключение |  | 1h | 2026-07-27 08:00 A | 2026-07-27 10:00 A |  | 100% |  |  |  | start no earlier than 2026-07-27 08:00 | Дедов В | 1h | 1h |
| 190 | 1.90 | Снять клавиатуру с головы нотис, подготовить ее к замене лежит на верстаке |  | 30min | 2026-07-29 08:00 A | 2026-07-29 09:30 A |  | 100% |  |  |  | start no earlier than 2026-07-29 08:00 | Дедов В | 0.5h | 0.5h |
| 191 | 1.91 | Ремонт клавиатуры от головы нотис, клаву получить на складе, голову взять у нас в кабинете |  | 1h | 2026-09-01 09:00 A | 2026-09-01 10:00 A |  | 100% |  |  |  | start no earlier than 2026-09-01 08:00 | Бундин В | 1h | 1h |
| 192 | 1.92 | **ремонт кондиционер зона фасовки** |  | 0.5d | 2026-07-16 09:00 A | 2026-07-16 13:00 A |  | 100% |  |  |  |  |  | 6h | 6h |
| 193 | 1.92.1 | демонтаж внутреннего блока |  | 2h | 2026-07-16 09:00 A | 2026-07-16 11:00 A |  | 100% |  |  |  | start no earlier than 2026-07-16 09:00 | Некрасов А; Труфанов А | 4h | 4h |
| 194 | 1.92.2 | разборка, отделить испаритель от рамы |  | 1h | 2026-07-16 11:00 A | 2026-07-16 12:00 A | 193 | 100% |  |  |  | start no earlier than 2026-07-15 09:00 | Бундин В | 1h | 1h |
| 195 | 1.92.3 | опресовка в воде |  | 1h | 2026-07-16 12:00 A | 2026-07-16 13:00 A | 194 | 100% |  |  |  | start no earlier than 2026-07-15 09:00 | Бундин В | 1h | 1h |
| 196 | 1.93 | редуктор конвейера выгрузки пакетов квадропак -> обеспечить гибкое соединеине к раме, жесткое будет ломать либо вал либо редутор |  | 2h | 2026-07-16 09:00 A | 2026-07-16 11:00 A |  | 100% |  |  |  | start no earlier than 2026-07-16 09:00 | Некрасов А | 2h | 2h |
| 197 | 1.94 | **выполнить смотровые люки состояния цепи средниий и верхние этажи. На торцевой крышке с стороны экструдера.** |  | 37d | 2026-07-14 09:00 A | 2026-09-02 18:00 |  | 13% | 32.29d | 140.59d |  |  |  | 9.17h | 1.17h |
| 198 | 1.94.1 | заявка шарниры нерж + бугельный зажим |  | 1h | 2026-07-14 09:00 A | 2026-07-14 10:00 A |  | 100% |  |  |  | start no earlier than 2026-07-14 08:00 | Домоводов К | 1h | 1h |
| 199 | 1.94.2 | контроль доставка |  | 10min | 2026-08-17 09:00 A | 2026-08-17 09:10 A | 198FS+7d | 100% |  |  |  | start no earlier than 2026-08-17 09:00 | Шуранов Ю | 0.17h | 0.17h |
| 200 | 1.94.3 | монтаж 1 линия |  | 4h | 2026-09-02 09:00 | 2026-09-02 13:00 | 199FS+1d |  |  | 140.59d | 0d | start no earlier than 2026-09-02 09:00 | Макаревич А | 4h |  |
| 201 | 1.94.4 | монтаж 2 линия |  | 4h | 2026-09-02 14:00 | 2026-09-02 18:00 | 200 |  |  | 140.59d |  | start no earlier than 2026-07-14 08:00 | Макаревич А | 4h |  |
| 202 | 1.95 | монтаж светильник под площадку дозатора квадропака |  | 4h | 2026-07-10 09:00 A | 2026-07-10 13:00 A |  | 100% |  |  |  | start no earlier than 2026-07-10 09:00 | Бобренок В | 4h | 4h |
| 203 | 1.96 | **замена вентилятор вытяжка с экструдеров** |  | 2.25d | 2026-07-13 09:00 A | 2026-07-15 11:00 A |  | 100% |  |  |  |  |  | 13h | 13h |
| 204 | 1.96.1 | подключение воздуховоды |  | 4h | 2026-07-13 09:00 A | 2026-07-13 13:00 A |  | 100% |  |  |  | start no earlier than 2026-07-13 09:00 | Некрасов А; Бундин В | 8h | 8h |
| 205 | 1.96.2 | установить крыльчатку на мотор |  | 1h | 2026-07-14 09:00 A | 2026-07-14 10:00 A |  | 100% |  |  |  | start no earlier than 2026-07-14 08:00 | Труфанов А | 1h | 1h |
| 206 | 1.96.3 | устарнить причину вибрации мотора |  | 2h | 2026-07-15 09:00 A | 2026-07-15 11:00 A |  | 100% |  |  |  | start no earlier than 2026-07-15 09:00 | Некрасов А; Труфанов А | 4h | 4h |
| 207 | 1.97 | **сборка дозатор на квадропак** |  | 65.12d | 2026-07-09 08:00 A | 2026-09-30 10:00 |  | 92% | 5.3d | 115.47d |  |  |  | 41.83h | 38.83h |
| 208 | 1.97.1 | установить переключатель блокировки сброса дозатором |  | 30min | 2026-08-15 09:00 A | 2026-08-17 09:30 A |  | 100% |  |  |  | start no earlier than 2026-08-15 09:00 | Труфанов А | 0.5h | 0.5h |
| 209 | 1.97.2 | упорядочить схему |  | 30min | 2026-08-15 09:00 A | 2026-08-17 09:30 A |  | 100% |  |  |  | start no earlier than 2026-08-15 09:00 | Труфанов А | 0.5h | 0.5h |
| 210 | 1.97.3 | транспортировка дозатора в слесарку |  | 1h | 2026-08-04 08:00 A | 2026-08-04 10:00 A |  | 100% |  |  |  | start no earlier than 2026-08-04 08:00 | Труфанов А; Тимофеев В | 2h | 2h |
| 211 | 1.97.4 | установить розетку для дозатора. Вывод кабель сверлить платформу, что бы он был не под ногами и удобен при уборке |  | 2h | 2026-07-09 08:00 A | 2026-07-09 11:00 A |  | 100% |  |  |  | start no earlier than 2026-07-09 08:00 | Бобренок В | 2h | 2h |
| 212 | 1.97.5 | закрепить монитор фото Зорькин |  | 2h | 2026-07-09 08:00 A | 2026-07-09 11:00 A |  | 100% |  |  |  | start no earlier than 2026-07-09 08:00 | Бобренок В | 2h | 2h |
| 213 | 1.97.6 | подключение дозатора к машине / поиск кабеля в 3 цехе / изучение документации |  | 4h | 2026-07-14 09:00 A | 2026-07-14 13:00 A |  | 100% |  |  |  | start no earlier than 2026-07-14 09:00 | Труфанов А | 4h | 4h |
| 214 | 1.97.7 | подключить реле аварии дозатора паралельно датчику отсутствия пакета квадропака (схема прилагается) |  | 1h | 2026-08-12 09:00 A | 2026-08-12 10:00 A | 213 | 100% |  |  |  | start no earlier than 2026-08-12 09:00 | Труфанов А | 1h | 1h |
| 215 | 1.97.8 | калибровка весов и разгон наполнения, тестирование работы |  | 4h | 2026-08-12 09:00 A | 2026-08-12 13:00 A |  | 100% |  |  |  | start no earlier than 2026-08-12 09:00 | Труфанов А | 4h | 4h |
| 216 | 1.97.9 | монтаж кабель выравнивания потенциалов площадка дозатора и площадка квадропака |  | 30min | 2026-08-15 09:00 A | 2026-08-17 09:30 A |  | 100% |  |  |  | start no earlier than 2026-08-15 09:00 | Труфанов А | 0.5h | 0.5h |
| 217 | 1.97.10 | контроль поставки маткериал | milestone | 0d | 2026-08-27 09:00 A | 2026-08-27 09:00 A |  | 100% |  |  |  | start no earlier than 2026-08-27 09:00 | Зорькин В |  |  |
| 218 | 1.97.11 | тестирование весов / разгон |  | 2h | 2026-09-14 09:00 A | 2026-09-14 11:00 A | 217 | 100% |  |  |  | start no earlier than 2026-09-14 09:00 | Зорькин В | 2h | 2h |
| 219 | 1.97.12 | подключить синхронизацию пуска дозатора паралельно катушки открытия заслонки квадропака |  | 4h | 2026-08-04 11:00 A | 2026-08-04 16:00 A | 214 | 100% |  |  |  | start no earlier than 2026-07-16 09:00 | Труфанов А | 4h | 4h |
| 220 | 1.97.13 | монтаж перила на площадку - подготовка |  | 2h | 2026-08-14 09:00 A | 2026-08-14 11:00 A |  | 100% |  |  |  | start no earlier than 2026-08-14 09:00 | Тимофеев В | 2h | 2h |
| 221 | 1.97.14 | монтаж перила на площадку |  | 2h | 2026-08-17 09:00 A | 2026-08-17 11:00 A |  | 100% |  |  |  | start no earlier than 2026-08-17 09:00 | Тимофеев В; Бобренок В | 4h | 4h |
| 222 | 1.97.15 | сверлить для крепления перил |  | 2h | 2026-09-04 09:00 A | 2026-09-04 11:00 A | 218 | 100% |  |  |  | start no earlier than 2026-09-04 09:00 | Макаревич А | 2h | 2h |
| 223 | 1.97.16 | закрыть зад крышку |  | 20min | 2026-09-13 09:00 A | 2026-09-13 09:20 A |  | 100% |  |  |  | start no earlier than 2026-09-13 09:00 | Дедов В | 0.33h | 0.33h |
| 224 | 1.97.17 | сборка дозатор |  | 2h | 2026-09-28 09:00 A | 2026-09-28 11:00 A |  | 100% |  |  |  | start no earlier than 2026-09-28 09:00 | Труфанов А; Некрасов А | 4h | 4h |
| 225 | 1.97.18 | тест компонентов |  | 1h | 2026-09-23 09:00 A | 2026-09-23 10:00 A |  | 100% |  |  |  | start no earlier than 2026-09-23 09:00 | Зорькин В | 1h | 1h |
| 226 | 1.97.19 | монтаж кнопка дозатор ОН/ОФФ |  | 1h | 2026-09-30 09:00 | 2026-09-30 10:00 | 223 |  |  | 115.47d |  | start no earlier than 2026-09-30 09:00 | Труфанов А | 1h |  |
| 227 | 1.97.20 | закрыть металлом пустые места между площадками квадропак и дозатор |  | 2h | 2026-09-29 09:00 | 2026-09-29 11:00 | 222 |  |  | 116.34d |  | start no earlier than 2026-09-29 09:00 | Тимофеев В | 2h |  |
| 228 | 1.97.21 | Сделать перегородки в бункер дозатора для увеличения объема секций |  | 3h | 2026-09-02 09:00 A | 2026-09-02 12:00 A |  | 100% |  |  |  | start no earlier than 2026-09-04 09:00 | Тимофеев В | 3h | 3h |
| 229 | 1.98 | навести сортиировка / порядок пандус 1ц |  | 4h | 2026-07-10 09:00 A | 2026-07-10 13:00 A |  | 100% |  |  |  | start no earlier than 2026-07-10 09:00 | Тимофеев В; Амрулин Р | 7h | 7h |

| ID | WBS | Task | Type | Duration | Start | Finish | Predecessors | Complete | Remaining | Actual start | Actual finish | Total slack | Free slack | Constraint | Resources | Work | Actual work |
| --- | --- | --- | --- | --- | --- | --- | --- | --- | --- | --- | --- | --- | --- | --- | --- | --- | --- |
| 230 | 1.99 | **Кондиционер зоны экструдера** |  | 0.5d | 2026-07-07 09:00 A | 2026-07-07 13:00 A |  | 100% |  |  |  |  |  |  |  | 4h | 4h |
| 231 | 1.99.1 | Чистка сливной магистрали |  | 4h | 2026-07-07 09:00 A | 2026-07-07 13:00 A |  | 100% |  |  |  |  |  | start no earlier than 2026-07-07 09:00 | Бундин В | 4h | 4h |
| 232 | 1.100 | **установить датчик давления на экструдер** |  | 49.53d | 2026-07-06 08:00 A | 2026-09-10 14:15 |  | 68% | 15.89d |  |  | 134.06d |  |  |  | 15.25h | 11h |
| 233 | 1.100.1 | контроль поставка фитинги |  | 15min | 2026-09-10 09:00 | 2026-09-10 09:15 |  |  |  |  |  | 134.06d | 0d | start no earlier than 2026-09-10 09:00 | Зорькин В | 0.25h |  |
| 234 | 1.100.2 | монтаж кронштейны для фиксации датчикоа давления 1+2 линия |  | 2h | 2026-07-10 09:00 A | 2026-07-10 11:00 A |  | 100% |  |  |  |  |  | start no earlier than 2026-07-10 09:00 | Макаревич А; Некрасов А | 4h | 4h |
| 235 | 1.100.3 | установить датчики давления через гидравлические шланги |  | 2h | 2026-07-06 08:00 A | 2026-07-06 11:00 A |  | 100% |  |  |  |  |  | start no earlier than 2026-07-06 08:00 | Дедов В | 2h | 2h |
| 236 | 1.100.4 | доработка кожух нож узла для закрытия |  | 2h | 2026-07-07 09:00 A | 2026-07-07 11:00 A |  | 100% |  |  |  |  |  | start no earlier than 2026-07-07 09:00 | Бобренок В | 2h | 2h |
| 237 | 1.100.5 | Прокинуть кабель ШВВП 2х0,75 от датчиков давления до регистраторов, сделать по красоте. |  | 3h | 2026-07-10 09:00 A | 2026-07-10 12:00 A |  | 100% |  |  |  |  |  | start no earlier than 2026-07-10 09:00 | Бобренок В | 3h | 3h |
| 238 | 1.100.6 | подключение датчиков давления к регистратору |  | 4h | 2026-09-10 09:15 | 2026-09-10 14:15 | 233 |  |  |  |  | 134.06d |  | start no earlier than 2026-09-02 09:00 | Домоводов К | 4h |  |
| 239 | 1.101 | печь №1 ревизия/замена перемычек |  | 4h | 2026-07-04 09:00 A | 2026-07-06 13:00 A |  | 100% |  |  |  |  |  | start no earlier than 2026-07-04 09:00 | Макаревич А | 4h | 4h |
| 240 | 1.102 | печь №2 ревизия/замена перемычек |  | 2h | 2026-07-16 09:00 A | 2026-07-16 11:00 A |  | 100% |  |  |  |  |  | start no earlier than 2026-07-16 09:00 | Бобренок В | 2h | 2h |
| 241 | 1.103 | **заменить амперметры неиспрвные на ШУ 1 и 2 линия (они на складе приехали сегодня новые посмотреть фото в выдаче)** |  | 1h? | 2026-09-04 09:00 | 2026-09-04 10:00 |  | 100% |  | 2026-09-05 09:00 | 2026-09-11 13:00 |  |  |  |  | 6h | 6h |
| 242 | 1.103.1 | монтаж - оказалить не те |  | 2h | 2026-09-05 09:00 A | 2026-09-05 11:00 A |  | 100% |  |  |  |  |  | start no earlier than 2026-09-05 09:00 | Дедов В | 2h | 2h |
| 243 | 1.103.2 | контроль датч тока | milestone | 0d | 2026-09-09 09:00 A | 2026-09-09 09:00 A |  | 100% |  |  |  |  |  | start no earlier than 2026-09-09 09:00 | Зорькин В |  |  |
| 244 | 1.103.3 | монтаж датчиковтока на 2л |  | 4h | 2026-09-11 09:00 A | 2026-09-11 13:00 A |  | 100% |  |  |  |  |  | start no earlier than 2026-09-11 09:00 | Макаревич А | 4h | 4h |
| 245 | 1.104 | **ставим 2 частотника на вентиляторы вытяжки с печек №1 и 2** |  | 0.5d | 2026-07-02 09:00 A | 2026-07-02 13:00 A |  | 100% |  |  |  |  |  |  |  | 4h | 4h |
| 246 | 1.104.1 | подключение к улиткам вытяжки 1 и 2 линия (помошника дадим) |  | 4h | 2026-07-02 09:00 A | 2026-07-02 13:00 A |  | 100% |  |  |  |  |  | start no earlier than 2026-07-02 09:00 | Тимофеев В | 4h | 4h |
| 247 | 1.105 | подключить частотный привод вентилятор на площадке жиротопки |  | 4h | 2026-07-14 09:00 A | 2026-07-14 13:00 A |  | 100% |  |  |  |  |  | start no earlier than 2026-07-14 09:00 | Дедов В | 4h | 4h |
| 248 | 1.106 | установка частотника для улитку в жиротопке (по телефону расскажу) |  | 4h | 2026-07-02 09:00 A | 2026-07-02 13:00 A |  | 100% |  |  |  |  |  | start no earlier than 2026-07-02 09:00 | Дедов В | 4h | 4h |
| 249 | 1.107 | заменить шнеки и гильзы на 2 линии (ставим усиленные, 2 гильзы) по уровню (операторы помогут) | manual | 10h | 2026-07-05 09:00 A | 2026-07-06 11:00 A |  | 100% |  |  |  |  |  | start no earlier than 2026-07-05 09:00 | Бундин В | 10h | 10h |
| 250 | 1.108 | **поменять фильтрующую ткань на фильтрах кондиционеров 1 цех** |  | 0.25d | 2026-07-01 09:00 A | 2026-07-01 11:00 A |  | 100% |  |  |  |  |  |  |  | 4h | 4h |
| 251 | 1.108.1 | установка фильтров закрываем внутренние блоки |  | 2h | 2026-07-01 09:00 A | 2026-07-01 11:00 A |  | 100% |  |  |  |  |  | start no earlier than 2026-07-01 09:00 | Макаревич А; Некрасов А | 4h | 4h |
| 252 | 1.109 | изготовление кронштейна для установки вентилятора крепим на место в зоне экструдера |  | 2h | 2026-06-30 09:00 A | 2026-06-30 11:00 A |  | 100% |  |  |  |  |  | start no earlier than 2026-06-30 09:00 | Некрасов А; Тимофеев В | 4h | 4h |
| 253 | 1.110 | снять на всех валах барабанов колеса, будем покрывать полиуретаном |  | 3h | 2026-06-29 09:00 A | 2026-06-29 12:00 A |  | 100% |  |  |  |  |  | start no earlier than 2026-06-29 09:00 | Бундин В | 3h | 3h |

| ID | WBS | Task | Type | Duration | Start | Finish | Predecessors | Complete | Actual start | Actual finish | Total slack | Free slack | Constraint | Resources | Work | Actual work |
| --- | --- | --- | --- | --- | --- | --- | --- | --- | --- | --- | --- | --- | --- | --- | --- | --- |
| 254 | 1.111 | **сборка раковина нерж для мойки конвейер** |  | 7.25d? | 2026-10-12 09:00 | 2026-10-21 11:00 |  |  |  |  | 100.34d |  |  |  | 34h |  |
| 255 | 1.111.1 | подготовить данные, оформить как проект / инициировать совещание |  | 2h | 2026-10-12 09:00 | 2026-10-12 11:00 |  |  |  |  | 100.34d | 0d | start no earlier than 2026-10-12 09:00 | Зорькин В | 2h |  |
| 256 | 1.111.2 | совещание с руководителями / фиксация решения |  | 1d? | 2026-10-13 11:00 | 2026-10-14 11:00 | 255FS+1d |  |  |  | 100.34d | 0d | start no earlier than 2026-08-31 09:00 | Зорькин В | 8h |  |
| 257 | 1.111.3 | подготовить чертеж раковины, проверить материал |  | 1d? | 2026-10-15 11:00 | 2026-10-16 11:00 | 256FS+1d |  |  |  | 100.34d | 0d | start no earlier than 2026-09-08 09:00 | Зорькин В | 8h |  |
| 258 | 1.111.4 | сборка |  | 2d | 2026-10-19 11:00 | 2026-10-21 11:00 | 257FS+1d |  |  |  | 100.34d |  | start no earlier than 2026-07-14 08:00 | Бундин В | 16h |  |
| 259 | 1.112 | ревизия шестеренок питателя 2 линия, если нужно замена с зип- питатель синий склад |  | 3h | 2026-06-29 09:00 A | 2026-06-29 12:00 A |  | 100% |  |  |  |  | start no earlier than 2026-06-29 09:00 | Бундин В | 3h | 3h |
| 260 | 1.113 | повесить полочки у ОТК в кабинете- крепеж по гипсокортону у меня на столе |  | 1h | 2026-06-26 09:00 A | 2026-06-26 10:00 A |  | 100% |  |  |  |  | start no earlier than 2026-06-26 09:00 | Тимофеев В; Дедов В | 2h | 2h |
| 261 | 1.114 | нормально прикрутить светильник на стойке со сканером QR- кодов на фасовке, если нужно заменить на другой | manual | 2h | 2026-07-03 09:00 A | 2026-07-03 11:00 A |  | 100% |  |  |  |  | start no earlier than 2026-07-03 09:00 | Макаревич А | 2h | 2h |
| 262 | 1.115 | прикрутить розетку возле ШУ приточки |  | 1h | 2026-07-04 09:00 A | 2026-07-06 10:00 A |  | 100% |  |  |  |  | start no earlier than 2026-07-04 09:00 | Дедов В | 1h | 1h |
| 263 | 1.116 | заменить светильник 50Вт на жиротопке | manual | 2h | 2026-06-27 09:00 A | 2026-06-27 11:00 A |  | 100% |  |  |  |  | start no earlier than 2026-06-27 09:00 | Дедов В | 2h | 2h |
| 264 | 1.117 | мойка внутрених и внешних блоков керхером |  | 4h | 2026-06-24 09:00 A | 2026-06-24 13:00 A |  | 100% |  |  |  |  | start no earlier than 2026-06-24 09:00 | Тимофеев В; Дедов В | 8h | 8h |
| 265 | 1.118 | 1 линия средняя зона печи 115А |  | 2h | 2026-07-01 09:00 A | 2026-07-01 11:00 A |  | 100% |  |  |  |  | start no earlier than 2026-07-01 09:00 | Некрасов А | 2h | 2h |
| 266 | 1.119 | продуть внешний блок кондиционера (посередине) |  | 2h | 2026-06-24 09:00 A | 2026-06-24 11:00 A |  | 100% |  |  |  |  | start no earlier than 2026-06-24 09:00 | Тимофеев В | 2h | 2h |
| 267 | 1.120 | слить конденсат и продуть радиаторы на компрессоре |  | 1h | 2026-06-22 09:00 A | 2026-06-22 10:00 A |  | 100% |  |  |  |  | start no earlier than 2026-06-22 08:00 | Бундин В | 1h | 1h |
| 268 | 1.121 | взять ключи на складе и повесить возле каждого щитка | manual | 1h | 2026-07-05 09:00 A | 2026-07-05 10:00 A |  | 100% |  |  |  |  | start no earlier than 2026-07-05 09:00 | Бундин В | 1h | 1h |
| 269 | 1.122 | заменить монтажную коробку- пускатели улиток, зона экструдера | manual | 1h | 2026-06-30 09:00 A | 2026-06-30 10:00 A |  | 100% |  |  |  |  | start no earlier than 2026-06-30 09:00 | Бундин В | 1h | 1h |
| 270 | 1.123 | герметизация стыков в душевой женской, потечка воды | manual | 1h | 2026-06-21 09:00 A | 2026-06-21 10:00 A |  | 100% |  |  |  |  | start no earlier than 2026-06-21 09:00 | Бундин В | 1h | 1h |
| 271 | 1.124 | **вернуть колбу уровня подачи воды на 2 линию** |  | 1h? | 2026-06-26 09:00 | 2026-06-26 10:00 |  | 100% | 2026-06-29 09:00 | 2026-06-29 18:00 |  |  |  |  | 8h | 8h |
| 272 | 1.124.1 | найти колбу |  | 1d? | 2026-06-29 09:00 A | 2026-06-29 18:00 A |  | 100% |  |  |  |  | start no earlier than 2026-06-29 09:00 | Шуранов Ю | 8h | 8h |
| 273 | 1.125 | **изготовить шило для экструдерщиков, они подскажут** |  | 1h? | 2026-06-26 09:00 | 2026-06-26 10:00 |  |  |  |  |  |  |  |  | 0.25h |  |
| 274 | 1.125.1 | заказать спицы не пустые |  | 15min | 2026-09-01 09:00 | 2026-09-01 09:15 |  |  |  |  | 142.56d |  | start no earlier than 2026-09-01 09:00 | Шуранов Ю | 0.25h |  |
| 275 | 1.126 | отключить кондеры и продуть внешние блоки кондиционеров 1 ц. |  | 2h | 2026-06-20 09:00 A | 2026-06-22 11:00 A |  | 100% |  |  |  |  | start no earlier than 2026-06-20 09:00 | Бундин В | 2h | 2h |
| 276 | 1.127 | **померить верхний воздуховод и трассу для подключения новой улитки** |  | 1d? | 2026-06-22 09:00 A | 2026-06-22 18:00 A |  | 100% |  |  |  |  |  | Тимофеев В; Зорькин В | 24h | 24h |
| 277 | 1.127.1 | заказать переходник |  | 1d? | 2026-06-22 09:00 A | 2026-06-22 18:00 A |  | 100% |  |  |  |  | start no earlier than 2026-06-22 08:00 | Зорькин В | 8h | 8h |
| 278 | 1.128 | слив конденсата с компрессора и продуть радиаторы и фильтры |  | 1h | 2026-06-14 09:00 A | 2026-06-15 10:00 A |  | 100% |  |  |  |  | start no earlier than 2026-06-14 09:00 | Бобренок В | 1h | 1h |

| ID | WBS | Task | Duration | Start | Finish | Predecessors | Complete | Total slack | Constraint | Resources | Work | Actual work |
| --- | --- | --- | --- | --- | --- | --- | --- | --- | --- | --- | --- | --- |
| 279 | 1.129 | **закрепить редуктор к отводящему транспортеру** | 1d? | 2026-06-17 09:00 A | 2026-06-17 18:00 A |  | 100% |  |  | Некрасов А | 16h | 16h |
| 280 | 1.129.1 | сделать надежное крепление на мойке | 1d? | 2026-06-17 09:00 A | 2026-06-17 18:00 A |  | 100% |  | start no earlier than 2026-06-17 09:00 | Бундин В | 8h | 8h |
| 281 | 1.130 | заменить сальник на вакууматоре (редуктор) | 1h | 2026-06-11 09:00 A | 2026-06-11 10:00 A |  | 100% |  | start no earlier than 2026-06-11 09:00 | Тимофеев В | 1h | 1h |
| 282 | 1.131 | законтрогаить шпильки-ножки запайщиков | 1h | 2026-06-12 09:00 A | 2026-06-12 10:00 A |  | 100% |  | start no earlier than 2026-06-12 09:00 | Бундин В | 1h | 1h |
| 283 | 1.132 | настроить подачу масла на квадропаке по пневмо системе (спросить у Дедова) | 1h | 2026-06-10 09:00 A | 2026-06-10 10:00 A |  | 100% |  | start no earlier than 2026-06-10 09:00 | Труфанов А | 1h | 1h |
| 284 | 1.133 | **проверить давление в гидроаккумуляторе водоподготовки** | 0.25d | 2026-06-10 09:00 A | 2026-06-10 11:00 A |  | 100% |  |  | Дедов В | 4h | 4h |
| 285 | 1.133.1 | замена мембраны | 2h | 2026-06-10 09:00 A | 2026-06-10 11:00 A |  | 100% |  | start no earlier than 2026-06-10 09:00 | Дедов В | 2h | 2h |
| 286 | 1.134 | модернизация опроры пневмоцилиндра встряживателя №1 квадропак | 4h | 2026-10-19 09:00 | 2026-10-19 13:00 |  |  | 102.09d | start no earlier than 2026-10-19 09:00 | Некрасов А | 4h |  |
| 287 | 1.135 | **готовить в зип сетку оборотную для печей (нижняя)** | 0.5d | 2026-06-09 09:00 A | 2026-06-09 13:00 A |  | 100% |  |  |  | 4.5h | 4.5h |
| 288 | 1.135.1 | проверка материал | 30min | 2026-06-09 09:00 A | 2026-06-09 09:30 A |  | 100% |  | start no earlier than 2026-06-09 09:00 | Тимофеев В | 0.5h | 0.5h |
| 289 | 1.135.2 | сборка | 4h | 2026-06-09 09:00 A | 2026-06-09 13:00 A |  | 100% |  | start no earlier than 2026-06-09 09:00 | Тимофеев В | 4h | 4h |
| 290 | 1.136 | подключить частотный привод насос жир 2 линия/ при остановке | 2h | 2026-06-07 09:00 A | 2026-06-08 11:00 A |  | 100% |  | start no earlier than 2026-06-07 09:00 | Дедов В | 2h | 2h |
| 291 | 1.137 | **жиротопка текет сальник насоса** | 36.03d? | 2026-06-28 09:00 A | 2026-08-18 09:15 A |  | 100% |  |  |  | 18.5h | 18.5h |
| 292 | 1.137.1 | замена насос из зип | 1h | 2026-06-28 09:00 A | 2026-06-29 10:00 A |  | 100% |  | start no earlier than 2026-06-28 09:00 | Дедов В | 1h | 1h |
| 293 | 1.137.2 | замена сальник на снятом насосе | 1h | 2026-06-28 10:00 A | 2026-06-29 10:00 A | 292 | 100% |  | start no earlier than 2026-06-17 09:00 | Дедов В | 1h | 1h |
| 294 | 1.137.3 | заказать | 1d? | 2026-06-29 09:00 A | 2026-06-29 18:00 A |  | 100% |  | start no earlier than 2026-06-29 09:00 | Шуранов Ю | 8h | 8h |
| 295 | 1.137.4 | ревизия прогресса утечки | 15min | 2026-08-05 09:00 A | 2026-08-05 09:15 A |  | 100% |  | start no earlier than 2026-08-05 09:00 | Дедов В | 0.25h | 0.25h |
| 296 | 1.137.5 | контроль наличия сальника | 15min | 2026-08-18 09:00 A | 2026-08-18 09:15 A |  | 100% |  | start no earlier than 2026-08-18 09:00 | Шуранов Ю | 0.25h | 0.25h |
| 297 | 1.137.6 | замена сальника | 1d? | 2026-08-05 09:00 A | 2026-08-05 18:00 A |  | 100% |  | start no earlier than 2026-08-05 09:00 | Дедов В | 8h | 8h |
| 298 | 1.138 | ремонт весов напольный (палетные) проверить кабель на обрыв | 3h | 2026-06-11 09:00 A | 2026-06-11 12:00 A |  | 100% |  | start no earlier than 2026-06-11 09:00 | Дедов В | 3h | 3h |
| 299 | 1.139 | печь №2 проверка токов, тен, замена | 2h | 2026-06-04 09:00 A | 2026-06-04 11:00 A |  | 100% |  | start no earlier than 2026-06-04 09:00 | Некрасов А; Бундин В | 4h | 4h |
| 300 | 1.140 | изготовление шторки после приемного лотка циклона | 2h | 2026-06-04 09:00 A | 2026-06-04 11:00 A |  | 100% |  | start no earlier than 2026-06-04 09:00 | Бундин В | 2h | 2h |
| 301 | 1.141 | **на аппликаторе настроить печать QR-кода на пакет, чтобы не размазывало (по тел. Объясню)** | 3.12d | 2026-06-04 09:00 A | 2026-06-09 10:00 A |  | 100% |  |  |  | 2h | 2h |
| 302 | 1.141.1 | тест (подключить доп. Датчик -настроить печать без размытия, картридж находиться у Луговских подписанный) | 1h | 2026-06-04 09:00 A | 2026-06-04 10:00 A |  | 100% |  | start no earlier than 2026-06-04 09:00 | Дедов В | 1h | 1h |
| 303 | 1.141.2 | тест | 1h | 2026-06-09 09:00 A | 2026-06-09 10:00 A |  | 100% |  | start no earlier than 2026-06-09 09:00 | Тимофеев В | 1h | 1h |
| 304 | 1.142 | целкает аппликатор -разобраться, устранить | 1h | 2026-06-03 08:00 A | 2026-06-03 10:00 A |  | 100% |  | start no earlier than 2026-06-03 08:00 | Дедов В | 1h | 1h |

| ID | WBS | Task | Type | Duration | Start | Finish | Predecessors | Complete | Remaining | Total slack | Free slack | Constraint | Resources | Work | Actual work |
| --- | --- | --- | --- | --- | --- | --- | --- | --- | --- | --- | --- | --- | --- | --- | --- |
| 305 | 1.143 | **установить резервную трубку/штангу с форсункой на подачу жира** |  | 28d | 2026-09-08 09:00 A | 2026-10-08 18:00 |  | 10% | 25.2d | 108.59d |  |  |  | 10h | 1h |
| 306 | 1.143.1 | проект-схема разработать |  | 1h | 2026-09-08 09:00 A | 2026-09-08 10:00 A |  | 100% |  |  |  | start no earlier than 2026-09-08 09:00 | Домоводов К | 1h | 1h |
| 307 | 1.143.2 | разработать спецкронштейн крепления 4х трубок |  | 1h | 2026-09-10 09:00 | 2026-09-10 10:00 |  |  |  | 125.47d | 16.88d | start no earlier than 2026-09-10 09:00 | Домоводов К | 1h |  |
| 308 | 1.143.3 | монтаж спец кронштенна |  | 1h | 2026-09-29 09:00 | 2026-09-29 10:00 | 307FS+1d |  |  | 108.59d | 0d | start no earlier than 2026-09-29 09:00 | Тимофеев В | 1h |  |
| 309 | 1.143.4 | заявка фитинги / тройники / краны / трубка |  | 1h | 2026-09-29 10:00 | 2026-09-29 11:00 | 306FS+1d, 308 |  |  | 108.59d | 0d | start no earlier than 2026-06-03 08:00 | Зорькин В | 1h |  |
| 310 | 1.143.5 | доставка контроль | milestone | 0d | 2026-10-06 11:00 | 2026-10-06 11:00 | 309FS+5d |  |  | 108.59d | 0d | start no earlier than 2026-06-03 08:00 | Зорькин В |  |  |
| 311 | 1.143.6 | сборка в мастерской |  | 4h | 2026-10-07 11:00 | 2026-10-07 16:00 | 310FS+1d |  |  | 108.59d | 0d | start no earlier than 2026-06-15 09:00 | Тимофеев В | 4h |  |
| 312 | 1.143.7 | монтаж на линию |  | 2h | 2026-10-08 16:00 | 2026-10-08 18:00 | 311FS+1d |  |  | 108.59d |  | start no earlier than 2026-06-03 08:00 | Тимофеев В | 2h |  |
| 313 | 1.144 | **установить автоматику запуска шнека + смеситель по датчику уровня сырья в бункере экструдера** |  | 10.4d? | 2026-09-24 09:00 | 2026-10-07 12:10 |  |  |  | 110.2d |  |  |  | 19.17h |  |
| 314 | 1.144.1 | разработка схема / компановка |  | 1h | 2026-09-24 09:00 | 2026-09-24 10:00 |  |  |  | 110.2d | 0d | start no earlier than 2026-09-24 09:00 | Домоводов К | 1h |  |
| 315 | 1.144.2 | заявка датчики / пускатели / эл щит |  | 2h | 2026-09-24 10:00 | 2026-09-24 12:00 | 314 |  |  | 110.2d | 0d | start no earlier than 2026-06-04 09:00 | Домоводов К | 2h |  |
| 316 | 1.144.3 | доставка контроль |  | 5min | 2026-10-02 12:00 | 2026-10-02 12:05 | 315FS+7d |  |  | 110.2d | 0d | start no earlier than 2026-06-03 08:00 | Зорькин В | 0.08h |  |
| 317 | 1.144.4 | контроль поставки |  | 5min | 2026-10-05 12:05 | 2026-10-05 12:10 | 316FS+1d |  |  | 110.2d | 0d | start no earlier than 2026-06-03 08:00 | Зорькин В | 0.08h |  |
| 318 | 1.144.5 | сборка ШУ |  | 1d? | 2026-10-05 12:10 | 2026-10-06 12:10 | 317 |  |  | 110.2d | 0d | start no earlier than 2026-06-24 09:00 | Дедов В | 8h |  |
| 319 | 1.144.6 | монтаж в линию |  | 1d? | 2026-10-06 12:10 | 2026-10-07 12:10 | 318 |  |  | 110.2d |  | start no earlier than 2026-06-03 08:00 | Дедов В | 8h |  |
| 320 | 1.145 | поставить на двигатели накопительных столов тепловые реле |  | 2h | 2026-06-15 09:00 | 2026-06-15 11:00 |  |  |  | 198.34d |  | start no earlier than 2026-06-15 09:00 | Дедов В | 2h |  |
| 321 | 1.146 | влагоотделитель крышки загрузки квадропак треснул- замена |  | 1h | 2026-06-10 09:00 | 2026-06-10 10:00 |  |  |  | 201.47d |  | start no earlier than 2026-06-10 09:00 | Дедов В | 1h |  |
| 322 | 1.147 | установка ПЧ на насос жира 2 линия |  | 2h | 2026-06-02 09:00 A | 2026-06-02 11:00 A |  | 100% |  |  |  | start no earlier than 2026-06-02 09:00 | Дедов В | 2h | 2h |
| 323 | 1.148 | установка ПЧ на барабаны жиров 1 и 2 линия |  | 2h | 2026-06-02 09:00 A | 2026-06-02 11:00 A |  | 100% |  |  |  | start no earlier than 2026-06-02 09:00 | Дедов В | 2h | 2h |
| 324 | 1.149 | **рассекатели после шлюзовика 1 и 2 линия сделать, чтобы корм равномерно ложился по поверхности сетки** |  | 5.25d | 2026-06-03 09:00 A | 2026-06-10 11:00 A |  | 100% |  |  |  |  |  | 11h | 11h |
| 325 | 1.149.1 | после обеда будет остановка 2 линия- модернизация рассекателя |  | 1h | 2026-06-03 09:00 A | 2026-06-03 10:00 A |  | 100% |  |  |  | start no earlier than 2026-06-03 09:00 | Бундин В | 1h | 1h |
| 326 | 1.149.2 | **установить зубчатую пластину для выравнивания слоя на входе в печь** |  | 5.25d | 2026-06-03 09:00 A | 2026-06-10 11:00 A |  | 100% |  |  |  |  |  | 10h | 10h |
| 327 | 1.149.2.1 | подготовиьт чертеж |  | 2h | 2026-06-03 09:00 A | 2026-06-03 11:00 A |  | 100% |  |  |  | start no earlier than 2026-06-03 08:00 | Домоводов К | 2h | 2h |
| 328 | 1.149.2.2 | изготовить |  | 6h | 2026-06-05 09:00 A | 2026-06-05 16:00 A | 327 | 100% |  |  |  | start no earlier than 2026-06-05 09:00 | Бундин В | 6h | 6h |
| 329 | 1.149.2.3 | монтаж |  | 2h | 2026-06-10 09:00 A | 2026-06-10 11:00 A | 328 | 100% |  |  |  | start no earlier than 2026-06-10 09:00 | Некрасов А | 2h | 2h |

| ID | WBS | Task | Type | Duration | Start | Finish | Predecessors | Complete | Remaining | Total slack | Constraint | Resources | Work | Actual work |
| --- | --- | --- | --- | --- | --- | --- | --- | --- | --- | --- | --- | --- | --- | --- |
| 330 | 1.150 | **монтаж 2х прожекторов на барабаны жиров** |  | 0.25d | 2026-06-02 09:00 A | 2026-06-02 11:00 A |  | 100% |  |  |  |  | 2h | 2h |
| 331 | 1.150.1 | подключить в ШУ самого транспортера на автомат |  | 2h | 2026-06-02 09:00 A | 2026-06-02 11:00 A |  | 100% |  |  | start no earlier than 2026-06-02 09:00 | Макаревич А | 2h | 2h |
| 332 | 1.151 | **проверка вентилятор упавший в зимний период. Тест на месте** |  | 6.25d | 2026-06-05 09:00 A | 2026-06-15 11:00 A |  | 100% |  |  |  |  | 10h | 10h |
| 333 | 1.151.1 | изготовить подиум под улитку |  | 6h | 2026-06-05 09:00 A | 2026-06-05 16:00 A |  | 100% |  |  | start no earlier than 2026-06-05 09:00 | Тимофеев В | 6h | 6h |
| 334 | 1.151.2 | перенос вентилятора |  | 2h | 2026-06-15 09:00 A | 2026-06-15 11:00 A |  | 100% |  |  | start no earlier than 2026-06-15 09:00 | Тимофеев В; Некрасов А | 4h | 4h |
| 335 | 1.152 | прачка 1ц замена светильник |  | 1h | 2026-05-29 09:00 A | 2026-05-29 10:00 A |  | 100% |  |  | start no earlier than 2026-05-29 08:00 | Бундин В | 1h | 1h |
| 336 | 1.153 | запайщик замена нихром |  | 1h | 2026-05-29 09:00 A | 2026-05-29 10:00 A |  | 100% |  |  | start no earlier than 2026-05-29 08:00 | Бундин В | 1h | 1h |
| 337 | 1.154 | устранить провисание патрубка подачи ГДЗ линия 2 |  | 1h | 2026-08-31 09:00 A | 2026-08-31 10:00 A |  | 100% |  |  | start no earlier than 2026-08-31 09:00 | Тимофеев В | 1h | 1h |
| 338 | 1.155 | крепеление РР магистраль ф20 воздух в склад гдз |  | 15min | 2026-05-27 09:00 A | 2026-05-27 09:15 A |  | 100% |  |  | start no earlier than 2026-05-27 09:00 | Бундин В | 0.25h | 0.25h |
| 339 | 1.156 | **перевод насосов ГДЗ на канистры с трассой на насос > 1/2** |  | 3.25d | 2026-05-28 09:00 A | 2026-06-02 11:00 |  | 50% | 1.62d | 207.34d |  |  | 4h | 2h |
| 340 | 1.156.1 | подготовка канистры установить штуцер, подготовить шланг + фитинги на насос |  | 2h | 2026-05-28 09:00 A | 2026-05-28 11:00 A |  | 100% |  |  | start no earlier than 2026-05-28 09:00 | Бундин В | 2h | 2h |
| 341 | 1.156.2 | монаж на линию 1 |  | 2h | 2026-06-02 09:00 | 2026-06-02 11:00 | 340 |  |  | 207.34d | start no earlier than 2026-06-02 09:00 | Бундин В | 2h |  |
| 342 | 1.157 | **с тена печей осыпается оребрение, попадая в продукт** |  | 10.5d | 2026-05-27 09:00 A | 2026-06-10 13:00 A |  | 100% |  |  |  |  | 11h | 11h |
| 343 | 1.157.1 | осмотр тенов печей линия 1 и линия 2 на предмет отслоения оребрения. Очистка / замена |  | 3h | 2026-05-27 09:00 A | 2026-05-27 12:00 A |  | 100% |  |  | start no earlier than 2026-05-27 09:00 | Некрасов А | 3h | 3h |
| 344 | 1.157.2 | замена неисправных тенов линия 2, по диагностике Некрасова 27.05 (токи) 2 линия |  | 4h | 2026-06-02 09:00 A | 2026-06-02 13:00 A |  | 100% |  |  | start no earlier than 2026-06-02 09:00 | Некрасов А | 4h | 4h |
| 345 | 1.157.3 | замена прогнувшихся тен |  | 4h | 2026-06-10 09:00 A | 2026-06-10 13:00 A |  | 100% |  |  | start no earlier than 2026-06-10 09:00 | Некрасов А | 4h | 4h |
| 346 | 1.158 | перенести частотный привод ШУ печи 1л для доступа обслуживания |  | 2h | 2026-06-02 09:00 A | 2026-06-02 11:00 A |  | 100% |  |  | start no earlier than 2026-06-02 09:00 | Дедов В | 2h | 2h |
| 347 | 1.159 | нет фазы линия 2 печь оперативно |  | 1h | 2026-05-26 09:00 A | 2026-05-26 10:00 A |  | 100% |  |  | start no earlier than 2026-05-26 09:00 | Тимофеев В; Бундин В | 2h | 2h |
| 348 | 1.160 | замена твердотельное реле фаза В 2шт (найти пробитый) |  | 30min | 2026-05-27 09:00 A | 2026-05-27 09:30 A |  | 100% |  |  | start no earlier than 2026-05-27 09:00 | Бундин В | 0.5h | 0.5h |
| 349 | 1.161 | выравнивание потенциалов ШУ тв реле печей 1 и 2 |  | 1h | 2026-05-27 09:00 A | 2026-05-27 10:00 A |  | 100% |  |  | start no earlier than 2026-05-27 09:00 | Бундин В | 1h | 1h |
| 350 | 1.162 | **заменить фитинги с гайками (они на складе) на жирах 1 + 2 линия** |  | 28d | 2026-05-27 09:00 A | 2026-07-04 11:00 A |  | 100% |  |  |  |  | 6.08h | 6.08h |
| 351 | 1.162.1 | доставка шланг 8х12мм. Контроль |  | 5min | 2026-05-27 09:00 A | 2026-05-27 09:05 A |  | 100% |  |  | start no earlier than 2026-05-27 09:00 | Шуранов Ю | 0.08h | 0.08h |
| 352 | 1.162.2 | замена 2 линия |  | 2h | 2026-05-27 09:00 A | 2026-05-27 11:00 A |  | 100% |  |  | start no earlier than 2026-05-27 09:00 | Тимофеев В | 2h | 2h |
| 353 | 1.162.3 | замена 1 линия |  | 2h | 2026-06-15 09:00 A | 2026-06-15 11:00 A |  | 100% |  |  | start no earlier than 2026-06-15 09:00 | Тимофеев В | 2h | 2h |
| 354 | 1.162.4 | проверить где не поставлены фитинги с гайками- поменять | manual | 2h | 2026-07-04 09:00 A | 2026-07-04 11:00 A |  | 100% |  |  | start no earlier than 2026-07-04 09:00 | Тимофеев В | 2h | 2h |
| 355 | 1.163 | подключить Sаvema на теко 0,4 через ИБП (ибп на складе) |  | 1h | 2026-05-26 09:00 A | 2026-05-26 10:00 A |  | 100% |  |  | start no earlier than 2026-05-26 09:00 | Дедов В | 1h | 1h |
| 356 | 1.164 | найти и закрутить мотор-редукторы на транспортерах и отписаться на каких были не прикручены и не законтрогаек. |  | 1h | 2026-05-25 09:00 A | 2026-05-25 10:00 A |  | 100% |  |  | start no earlier than 2026-05-25 09:00 | Макаревич А | 1h | 1h |
| 357 | 1.165 | транспортер с жиров на виброохладитель- поменять кнопку стоп 2 линия | manual | 1h | 2026-05-27 09:00 A | 2026-05-27 10:00 A |  | 100% |  |  | start no earlier than 2026-05-27 09:00 | Дедов В | 1h | 1h |
| 358 | 1.166 | демонтировать на накопительном столе квадропака силиконовую резинку по диаметру | manual | 1h | 2026-05-24 09:00 A | 2026-05-24 10:00 A |  | 100% |  |  | start no earlier than 2026-05-24 09:00 | Макаревич А | 1h | 1h |

| ID | WBS | Task | Type | Duration | Start | Finish | Predecessors | Complete | Remaining | Total slack | Constraint | Resources | Work | Actual work |
| --- | --- | --- | --- | --- | --- | --- | --- | --- | --- | --- | --- | --- | --- | --- |
| 359 | 1.167 | **установка фосунок - подача жира 1 линия** |  | 22.12d? | 2026-06-05 09:00 A | 2026-07-07 10:00 |  | 17% | 18.44d? | 182.47d |  |  | 4h | 2h |
| 360 | 1.167.1 | сборка кронштейн для фильтров + счетчик/ покраска |  | 1h | 2026-06-05 09:00 A | 2026-06-05 10:00 A |  | 100% |  |  | start no earlier than 2026-06-05 09:00 | Тимофеев В | 1h | 1h |
| 361 | 1.167.2 | установка |  | 1d? | 2026-07-06 09:00 | 2026-07-06 18:00 |  |  |  | 182.59d | start no earlier than 2026-07-06 09:00 |  |  |  |
| 362 | 1.167.3 | монтаж в линию |  | 2h | 2026-07-06 09:00 | 2026-07-06 11:00 |  |  |  | 183.34d | start no earlier than 2026-07-06 09:00 | Тимофеев В | 2h |  |
| 363 | 1.167.4 | монтаж розетка для блок питания 5в для регистратора |  | 1h | 2026-07-07 09:00 A | 2026-07-07 10:00 A |  | 100% |  |  | start no earlier than 2026-07-07 09:00 | Тимофеев В | 1h | 1h |
| 364 | 1.168 | **конв №2 линия 2 нижний вал нет защиты подшипников (был фетр)** |  | 9.16d | 2026-08-19 09:00 A | 2026-09-01 10:15 A |  | 100% |  |  |  |  | 5.25h | 5.25h |
| 365 | 1.168.1 | разборка, ревизия, подбор / чертеж уплотнеия |  | 2h | 2026-08-26 09:00 A | 2026-08-26 11:00 A |  | 100% |  |  | start no earlier than 2026-08-26 09:00 | Тимофеев В | 2h | 2h |
| 366 | 1.168.2 | заявка уплотнение |  | 1h | 2026-08-19 09:00 A | 2026-08-19 10:00 A |  | 100% |  |  | start no earlier than 2026-08-19 09:00 | Шуранов Ю | 1h | 1h |
| 367 | 1.168.3 | контроль поставки |  | 15min | 2026-09-01 10:00 A | 2026-09-01 10:15 A | 366FS+10d | 100% |  |  | start no earlier than 2026-08-12 09:00 | Шуранов Ю | 0.25h | 0.25h |
| 368 | 1.168.4 | монтаж уплотнения |  | 2h | 2026-08-31 09:00 A | 2026-08-31 11:00 A | 367FS+1d | 100% |  |  | start no earlier than 2026-08-12 09:00 | Тимофеев В | 2h | 2h |
| 369 | 1.169 | вентилятор на охладителе верхний краний слишком большой - переделать крепление |  | 1h | 2026-08-26 09:00 A | 2026-08-26 10:00 A |  | 100% |  |  | start no earlier than 2026-08-26 09:00 | Тимофеев В | 1h | 1h |
| 370 | 1.170 | устанить утечку на мойке зона экструдера |  | 1h | 2023-03-10 09:00 A | 2023-03-10 10:00 A |  | 100% |  |  |  | Бобренок В | 1h | 1h |
| 371 | 1.171 | выдать шестигранные болты и шайбы на ножевой узел экструдерщикам (штук 20) |  | 1h | 2026-05-21 09:00 A | 2026-05-21 10:00 A |  | 100% |  |  | start no earlier than 2026-05-21 08:00 | Бундин В | 1h | 1h |
| 372 | 1.172 | приварить болты к заслонке подачи гранулы на квадропаке (остановить, с мастером согласовать) |  | 1h | 2026-05-26 09:00 A | 2026-05-26 10:00 A |  | 100% |  |  | start no earlier than 2026-05-26 09:00 | Бобренок В | 1h | 1h |
| 373 | 1.173 | увеличить диаметр отверстия, чтобы горловина подачи сух. Гидрализата проходила (жиротопка) |  | 1h | 2026-05-20 09:00 A | 2026-05-20 10:00 A |  | 100% |  |  | start no earlier than 2026-05-20 09:00 | Некрасов А | 1h | 1h |
| 374 | 1.174 | посмотреть приточку, выпадает часто в аварию по насосу |  | 2h | 2026-05-18 08:00 A | 2026-05-18 11:00 A |  | 100% |  |  | start no earlier than 2026-05-18 08:00 | Дедов В | 2h | 2h |
| 375 | 1.175 | замена светильника в зоне завоза навесок (работа на высоте) |  | 2h | 2026-05-15 09:00 A | 2026-05-15 11:00 A |  | 100% |  |  | start no earlier than 2026-05-15 09:00 | Некрасов А; Труфанов А | 4h | 4h |
| 376 | 1.176 | закрепить встиряхиватель полного пакета №1 квадропак |  | 1h | 2026-05-14 08:00 A | 2026-05-14 10:00 A |  | 100% |  |  | start no earlier than 2026-05-14 08:00 | Бобренок В | 1h | 1h |
| 377 | 1.177 | замена лампа светильник гардероб М = на короткий. |  | 1h | 2026-05-13 09:00 A | 2026-05-13 10:00 A |  | 100% |  |  | start no earlier than 2026-05-13 09:00 | Бундин В | 1h | 1h |
| 378 | 1.178 | устранить потерю мощности печи в 2х фазах |  | 2h | 2026-05-12 08:00 A | 2026-05-12 11:00 A |  | 100% |  |  | start no earlier than 2026-05-12 08:00 | Тимофеев В; Бобренок В | 4h | 4h |
| 379 | 1.179 | квадропак изготовить и заменить текстолит на термоноже |  | 2h | 2026-05-12 09:00 A | 2026-05-12 11:00 A |  | 100% |  |  | start no earlier than 2026-05-12 08:00 | Некрасов А | 2h | 2h |
| 380 | 1.180 | **бак стабилизации воды-утечка** |  | 0.25d | 2026-05-22 09:00 A | 2026-05-22 11:00 A |  | 100% |  |  |  | Тимофеев В | 4h | 4h |
| 381 | 1.180.1 | монтаж подачи воды 2 линия в прекондиционер |  | 2h | 2026-05-22 09:00 A | 2026-05-22 11:00 A |  | 100% |  |  | start no earlier than 2026-05-22 09:00 | Тимофеев В | 2h | 2h |
| 382 | 1.181 | **парогенератор 1ц ремонт по гарантии** |  | 30d? | 2026-04-27 09:00 A | 2026-06-05 18:00 A |  | 100% |  |  |  |  | 11.33h | 11.33h |
| 383 | 1.181.1 | отправить ПГ на ремонт орг курьера |  | 10min | 2026-04-27 09:00 A | 2026-04-27 09:10 A |  | 100% |  |  | start no earlier than 2026-04-27 08:00 | Шуранов Ю | 0.17h | 0.17h |
| 384 | 1.181.2 | контроль ремонт |  | 10min | 2026-05-04 09:10 A | 2026-05-04 09:20 A | 383FS+5d | 100% |  |  | start no earlier than 2026-04-27 08:00 | Шуранов Ю | 0.17h | 0.17h |
| 385 | 1.181.3 | нужно посмотреть парогенератор там релюха не щелкает- может разберешься, он находиться на складе у Веры |  | 2h | 2026-05-11 09:00 A | 2026-05-11 11:00 A |  | 100% |  |  | start no earlier than 2026-05-11 09:00 | Дедов В | 2h | 2h |
| 386 | 1.181.4 | орг ремонт по гарантии |  | 1h | 2026-05-13 09:00 A | 2026-05-13 10:00 A |  | 100% |  |  | start no earlier than 2026-05-13 09:00 | Шуранов Ю | 1h | 1h |
| 387 | 1.181.5 | контроль возврата |  | 1d? | 2026-06-05 09:00 A | 2026-06-05 18:00 A |  | 100% |  |  | start no earlier than 2026-06-05 09:00 | Шуранов Ю | 8h | 8h |
| 388 | 1.182 | проверить мотор-редуктор на накопительном столе фасовка и | manual | 4h | 2026-05-11 09:00 A | 2026-05-11 13:00 A |  | 100% |  |  | start no earlier than 2026-05-11 09:00 | Бундин В | 4h | 4h |
| 389 | 1.183 | прикрутить ножку на 2 столе (ножка у Луговских в кабинете) |  | 1h | 2026-05-12 09:00 A | 2026-05-12 10:00 A |  | 100% |  |  | start no earlier than 2026-05-12 08:00 | Бундин В | 1h | 1h |

| ID | WBS | Task | Duration | Start | Finish | Predecessors | Complete | Constraint | Resources | Work | Actual work |
| --- | --- | --- | --- | --- | --- | --- | --- | --- | --- | --- | --- |
| 390 | 1.184 | **отодвинуть миксер подачи сухого гидрализата, чтобы сыпал не на ребра барабана, а на обод выхода** | 0.38d | 2026-05-08 08:00 A | 2026-05-08 12:00 A |  | 100% |  |  | 3h | 3h |
| 391 | 1.184.1 | перекрутить платформу миксера подачи сухого гидрализата снизу, чтобы дуло не задевало барабан | 3h | 2026-05-08 08:00 A | 2026-05-08 12:00 A |  | 100% | start no earlier than 2026-05-08 08:00 | Макаревич А | 3h | 3h |
| 392 | 1.185 | монтаж светильник в районе ВРУ сверху (зона экструдера) | 2h | 2026-05-16 09:00 A | 2026-05-18 11:00 A |  | 100% | start no earlier than 2026-05-16 09:00 | Макаревич А | 2h | 2h |
| 393 | 1.186 | закрепить трубу п/п на фасовке в углу, где стеллаж на клипсы к стене | 1h | 2026-05-07 08:00 A | 2026-05-07 10:00 A |  | 100% | start no earlier than 2026-05-07 08:00 | Бобренок В | 1h | 1h |
| 394 | 1.187 | прикрутить пускатели запуска вытяжки перед лестницей на 2 этаж зона экструдера и розетки | 2h | 2026-05-06 08:00 A | 2026-05-06 11:00 A |  | 100% | start no earlier than 2026-05-06 08:00 | Бобренок В | 2h | 2h |
| 395 | 1.188 | нет напряжения в розетке для инсектицидного светильника, корридор где вывозят готовую продукцию | 1h | 2026-05-07 09:00 A | 2026-05-07 10:00 A |  | 100% | start no earlier than 2026-05-07 09:00 | Бобренок В | 1h | 1h |
| 396 | 1.189 | подключить через счетчик подачу жира | 2h | 2026-05-05 08:00 A | 2026-05-05 11:00 A |  | 100% | start no earlier than 2026-05-05 08:00 | Тимофеев В | 2h | 2h |
| 397 | 1.190 | **повесить на места светильники инсектицидные (замена ламп)** | 0.38d | 2026-05-05 09:00 A | 2026-05-05 12:00 A |  | 100% |  |  | 3h | 3h |
| 398 | 1.190.1 | заменить инсектицидные лампы в светильниках (количество, которое поменял -записать) | 3h | 2026-05-05 09:00 A | 2026-05-05 12:00 A |  | 100% | start no earlier than 2026-05-05 08:00 | Бундин В | 3h | 3h |
| 399 | 1.191 | на жиротопке установить газ лифты (они на складе) | 1h | 2026-05-05 08:00 A | 2026-05-05 10:00 A |  | 100% | start no earlier than 2026-05-05 08:00 | Бобренок В | 1h | 1h |
| 400 | 1.192 | **дверь вход в столовую вкрыть заглушки и установить личинку с ключами (взять на складе)** | 14.12d | 2026-05-13 09:00 A | 2026-06-02 10:00 A |  | 100% |  |  | 42.5h | 42.5h |
| 401 | 1.192.1 | заказать ручку / ответ | 30min | 2026-05-13 09:00 A | 2026-05-13 09:30 A |  | 100% | start no earlier than 2026-05-13 09:00 | Шуранов Ю | 0.5h | 0.5h |
| 402 | 1.192.2 | конроль | 5d | 2026-05-18 09:00 A | 2026-05-22 18:00 A | 401 | 100% | start no earlier than 2026-05-18 09:00 | Карабанов | 40h | 40h |
| 403 | 1.192.3 | замена | 1h | 2026-05-30 09:00 A | 2026-06-01 10:00 A | 402 | 100% | start no earlier than 2026-05-30 09:00 | Тимофеев В | 1h | 1h |
| 404 | 1.192.4 | перевернуть замок ручкой вверх, личика переворачивается в любую сторону | 1h | 2026-06-02 09:00 A | 2026-06-02 10:00 A |  | 100% | start no earlier than 2026-06-02 09:00 | Макаревич А | 1h | 1h |
| 405 | 1.193 | поставить шпонки на питатель в слесарке | 1h | 2026-05-04 09:00 A | 2026-05-04 10:00 A |  | 100% | start no earlier than 2026-05-04 08:00 | Тимофеев В | 1h | 1h |
| 406 | 1.194 | установить транспортер на 1 линии | 1h | 2026-05-04 08:00 A | 2026-05-04 10:00 A |  | 100% | start no earlier than 2026-05-04 08:00 | Дедов В | 1h | 1h |
| 407 | 1.195 | собрать транспортер ковшевой (валы приехали, фетр на складе) | 4h | 2026-04-30 08:00 A | 2026-04-30 13:00 A |  | 100% | start no earlier than 2026-04-30 08:00 | Дедов В | 4h | 4h |
| 408 | 1.196 | **со старой ленты снять ковши в слесарке** | 0.5d | 2026-05-05 09:00 A | 2026-05-05 13:00 A |  | 100% |  |  | 4h | 4h |
| 409 | 1.196.1 | подготовить ленту с ковшами (150 мм между ковшами) лента на складе 5120мм в кольце и унести на желтый склад | 4h | 2026-05-05 09:00 A | 2026-05-05 13:00 A |  | 100% | start no earlier than 2026-05-05 09:00 | Бундин В | 4h | 4h |
| 410 | 1.197 | **разбираем улитки циклон и печи, замена подшипников** | 1d? | 2026-06-03 09:00 A | 2026-06-03 18:00 A |  | 100% |  | Тимофеев В; Бундин В | 16h | 16h |
| 411 | 1.197.1 | проверка подшипников на улитках печей | 1d? | 2026-06-03 09:00 A | 2026-06-03 18:00 A |  | 100% | start no earlier than 2026-06-03 09:00 |  |  |  |
| 412 | 1.198 | ТО Теко 1,5 (чистка тен, смазка штоков пневмоцилиндров, подшипников) | 3h | 2026-04-28 09:00 A | 2026-04-28 12:00 A |  | 100% | start no earlier than 2026-04-28 09:00 | Дедов В | 3h | 3h |
| 413 | 1.199 | ТО Теко 0,4 (чистка тен, смазка штоков пневмоцилиндров, подшипников) | 3h | 2026-04-28 09:00 A | 2026-04-28 12:00 A |  | 100% | start no earlier than 2026-04-28 09:00 | Дедов В | 3h | 3h |
| 414 | 1.200 | полное ТО квадропака (чистка тен, смазка штоков пневмоцилиндров, шприцевание подшипников, протяжка болтовых соединений) | 3h | 2026-04-28 09:00 A | 2026-04-28 12:00 A |  | 100% | start no earlier than 2026-04-28 09:00 | Дедов В | 3h | 3h |

| ID | WBS | Task | Type | Duration | Start | Finish | Predecessors | Complete | Total slack | Free slack | Constraint | Resources | Work | Actual work |
| --- | --- | --- | --- | --- | --- | --- | --- | --- | --- | --- | --- | --- | --- | --- |
| 415 | 1.201 | **модернизация трассы слива зона мойки экструдеров** |  | 20d? | 2026-04-27 09:00 A | 2026-05-23 10:00 A |  | 100% |  |  |  |  | 15.5h | 15.5h |
| 416 | 1.201.1 | заявка соединения и гидрозатвор |  | 15min | 2026-04-27 09:00 A | 2026-04-27 09:15 A |  | 100% |  |  | start no earlier than 2026-04-27 08:00 | Шуранов Ю | 0.25h | 0.25h |
| 417 | 1.201.2 | контроль доставки |  | 15min | 2026-05-04 09:15 A | 2026-05-04 09:30 A | 416FS+5d | 100% |  |  | start no earlier than 2026-04-27 08:00 | Шуранов Ю | 0.25h | 0.25h |
| 418 | 1.201.3 | монтаж |  | 1d? | 2026-05-06 09:30 A | 2026-05-07 09:30 A | 417FS+2d | 100% |  |  | start no earlier than 2026-04-27 08:00 | Тимофеев В | 8h | 8h |
| 419 | 1.201.4 | заявка на бурить стену / получить счет |  | 1h | 2026-04-28 09:00 A | 2026-04-28 10:00 A |  | 100% |  |  | start no earlier than 2026-04-28 09:00 | Зорькин В | 1h | 1h |
| 420 | 1.201.5 | расчет угла бурения. Замер + зхарисовать схему |  | 4h | 2026-05-13 09:00 A | 2026-05-13 13:00 A | 419 | 100% |  |  | start no earlier than 2026-05-13 09:00 | Зорькин В | 4h | 4h |
| 421 | 1.201.6 | орг работу подрядчика по бурению |  | 1h | 2026-05-20 09:00 A | 2026-05-20 10:00 A | 420 | 100% |  |  | start no earlier than 2026-05-20 09:00 | Зорькин В | 1h | 1h |
| 422 | 1.201.7 | запенить стыки в месте бурения | manual | 1h | 2026-05-23 09:00 A | 2026-05-23 10:00 A |  | 100% |  |  | start no earlier than 2026-05-23 09:00 | Бобренок В | 1h | 1h |
| 423 | 1.202 | взять на складе 2 гофросифона и заменить на мойке экструдер |  | 1h | 2026-04-24 09:00 A | 2026-04-24 10:00 A |  | 100% |  |  | start no earlier than 2026-04-24 08:00 | Бундин В | 1h | 1h |
| 424 | 1.203 | заменить монтажную коробку на 150х200мм -она у них на стяжках. Коробка новая на складе | manual | 1h | 2026-04-26 09:00 A | 2026-04-26 10:00 A |  | 100% |  |  | start no earlier than 2026-04-26 09:00 | Бобренок В | 1h | 1h |
| 425 | 1.204 | под мойкой в зоне экструдера на слив 3 греющего кабеля, нужно разобраться |  | 1h | 2026-04-24 09:00 A | 2026-04-24 10:00 A |  | 100% |  |  | start no earlier than 2026-04-24 08:00 | Шуранов Ю | 1h | 1h |
| 426 | 1.205 | жиротопка течет сальник, проверить и устранить течи везде. Чистка фильтров. |  | 2h | 2026-04-28 09:00 A | 2026-04-28 11:00 A |  | 100% |  |  | start no earlier than 2026-04-28 09:00 | Тимофеев В | 2h | 2h |
| 427 | 1.206 | ТО печи линия 1 ( вскрыть, ревизия- замена перемычек и т.д.) |  | 4h | 2026-04-23 09:00 A | 2026-04-23 13:00 A |  | 100% |  |  | start no earlier than 2026-04-23 08:00 | Бундин В | 4h | 4h |
| 428 | 1.207 | протянуть кабель UTP от столя Луговских до шкафа серверного (расскажу как протянуть по звонку) |  | 4h | 2026-04-23 09:00 A | 2026-04-23 13:00 A |  | 100% |  |  | start no earlier than 2026-04-23 08:00 | Бундин В | 4h | 4h |
| 429 | 1.208 | **подключить приточку как было** |  | 0.25d | 2026-04-29 09:00 A | 2026-04-29 11:00 A |  | 100% |  |  |  | Дедов В | 4h | 4h |
| 430 | 1.208.1 | подключить сервопривод на шибер и подключить |  | 2h | 2026-04-29 09:00 A | 2026-04-29 11:00 A |  | 100% |  |  | start no earlier than 2026-04-29 09:00 | Дедов В | 2h | 2h |
| 431 | 1.209 | **замена ленты на транспортере тип 2 2 линия (дособрать)** |  | 1.5d | 2026-04-24 09:00 A | 2026-04-27 13:00 A |  | 100% |  |  |  |  | 6h | 6h |
| 432 | 1.209.1 | со снятой ленты транспортера тип 2 снять все ковши (готовим для замены на 1 линии) |  | 2h | 2026-04-24 09:00 A | 2026-04-24 11:00 A |  | 100% |  |  | start no earlier than 2026-04-24 09:00 | Бундин В | 2h | 2h |
| 433 | 1.209.2 | установка ковшей со старой ленты на новую со склада 400х 5120мм |  | 4h | 2026-04-25 09:00 A | 2026-04-27 13:00 A |  | 100% |  |  | start no earlier than 2026-04-25 09:00 | Макаревич А | 4h | 4h |
| 434 | 1.210 | **система угольной фильтрации вытяжных газов с печей и пневотранспорта** |  | 0.25d | 2026-04-21 09:00 A | 2026-04-21 11:00 A |  | 100% |  |  |  |  | 3h | 3h |
| 435 | 1.210.1 | подготовить пластины 200*200 5мм для анкерения колон к полу ф12 6шт |  | 2h | 2026-04-21 09:00 A | 2026-04-21 11:00 A |  | 100% |  |  | start no earlier than 2026-04-21 09:00 | Бундин В | 2h | 2h |
| 436 | 1.210.2 | подготовить пластины 100*100 5мм для анкерения колон к стене 8шт |  | 1h | 2026-04-21 09:00 A | 2026-04-21 10:00 A |  | 100% |  |  | start no earlier than 2026-04-21 09:00 | Бундин В | 1h | 1h |
| 437 | 1.211 | проверка фильтров воды с редуктором в прекондиционер на ТО |  | 1h | 2026-04-22 09:00 A | 2026-04-22 10:00 A |  | 100% |  |  | start no earlier than 2026-04-22 09:00 | Бундин В | 1h | 1h |
| 438 | 1.212 | **заменить фильтры на жиротопка** |  | 16.12d | 2026-09-14 09:00 | 2026-10-01 10:00 |  |  | 114.47d |  |  |  | 2.25h |  |
| 439 | 1.212.1 | выяснить тип фильтров, заказ катриджи |  | 1h | 2026-09-14 09:00 | 2026-09-14 10:00 |  |  | 120.31d | 0d | start no earlier than 2026-09-14 09:00 | Зорькин В | 1h |  |
| 440 | 1.212.2 | контроль |  | 15min | 2026-09-24 10:00 | 2026-09-24 10:15 | 439FS+10d |  | 120.31d | 5.84d | start no earlier than 2026-04-22 09:00 | Зорькин В | 0.25h |  |
| 441 | 1.212.3 | замена |  | 1h | 2026-10-01 09:00 | 2026-10-01 10:00 | 440 |  | 114.47d |  | start no earlier than 2026-10-01 09:00 | Бобренок В | 1h |  |
| 442 | 1.213 | проверить напряжение в розетке конатушка вывоза готовой продукции |  | 1h | 2026-04-19 09:00 A | 2026-04-20 10:00 A |  | 100% |  |  | start no earlier than 2026-04-19 09:00 | Дедов В | 1h | 1h |

| ID | WBS | Task | Duration | Start | Finish | Predecessors | Complete | Remaining | Total slack | Free slack | Constraint | Resources | Work | Actual work |
| --- | --- | --- | --- | --- | --- | --- | --- | --- | --- | --- | --- | --- | --- | --- |
| 443 | 1.214 | **обслуживание инсекьюеров, утлизация отработанных ламп** | 120.12d | 2026-04-21 08:00 A | 2026-09-28 10:00 |  | 98% | 2.68d | 117.47d |  |  |  | 89.5h | 87.5h |
| 444 | 1.214.1 | Составить список ламп по цехам и передать Зорькину | 2h | 2026-04-21 08:00 A | 2026-04-21 11:00 A |  | 100% |  |  |  | start no earlier than 2026-04-21 08:00 | Тимофеев В | 2h | 2h |
| 445 | 1.214.2 | Заказать новые лампы | 30min | 2026-04-21 10:00 A | 2026-04-21 10:30 A | 444 | 100% |  |  |  | start no earlier than 2026-04-21 08:00 | Зорькин В | 0.5h | 0.5h |
| 446 | 1.214.3 | доставка | 10d | 2026-04-21 10:30 A | 2026-05-05 10:30 A | 445 | 100% |  |  |  | start no earlier than 2026-04-21 08:00 | Карабанов | 80h | 80h |
| 447 | 1.214.4 | снять все светильники мухоловки, извлечь лампы, уложить аккуратно в коробку (оставить в слесарке отработанные) светильники снятые передать мастеру смены для мытья | 2h | 2026-05-05 10:30 A | 2026-05-05 12:30 A | 446 | 100% |  |  |  | start no earlier than 2026-05-01 09:00 | Бобренок В | 2h | 2h |
| 448 | 1.214.5 | после чистки установить лампы в светильники, тусклые замнеить | 2h | 2026-05-12 09:00 A | 2026-05-12 11:00 A | 447 | 100% |  |  |  | start no earlier than 2026-05-12 09:00 | Бундин В | 2h | 2h |
| 449 | 1.214.6 | сообщить кол-во замененных ламп нач цехов | 1h | 2026-05-12 11:00 A | 2026-05-12 12:00 A | 448 | 100% |  |  |  | start no earlier than 2026-05-01 09:00 | Шуранов Ю | 1h | 1h |
| 450 | 1.214.7 | запрос договор на утилизацию ламп | 1h | 2026-09-14 09:00 | 2026-09-14 10:00 |  |  |  | 130.34d | 12.88d | start no earlier than 2026-09-14 09:00 | Домоводов К | 1h |  |
| 451 | 1.214.8 | подготовить лампы к утилизации | 1h | 2026-09-28 09:00 | 2026-09-28 10:00 | 449, 450 |  |  | 117.47d |  | start no earlier than 2026-09-28 09:00 | Тимофеев В | 1h |  |
| 452 | 1.215 | **на 1 линии подготовить из оргстекла обратные крышки транспортера тип 2 (ковшевой), согласовать остановка с мастером и установить** | 0.12d | 2026-04-24 09:00 A | 2026-04-24 10:00 A |  | 100% |  |  |  |  | Бобренок В | 2h | 2h |
| 453 | 1.215.1 | перекрутить оргстекло (операторы подскажут в чем проблема) | 1h | 2026-04-24 09:00 A | 2026-04-24 10:00 A |  | 100% |  |  |  | start no earlier than 2026-04-24 09:00 | Бобренок В | 1h | 1h |
| 454 | 1.216 | проверить гидроаккумуляторы парогенераторов 1 и 2 линия и 100литровый в комнате стабилизации воды, если нужно качаем 2 очка. | 2h | 2026-04-19 09:00 A | 2026-04-20 11:00 A |  | 100% |  |  |  | start no earlier than 2026-04-19 09:00 | Макаревич А | 2h | 2h |
| 455 | 1.217 | проверка фильтров на редукторы экструдеров | 1h | 2026-04-24 09:00 A | 2026-04-24 10:00 A |  | 100% |  |  |  | start no earlier than 2026-04-24 09:00 | Тимофеев В | 1h | 1h |
| 456 | 1.218 | проверка токов, всех перемычек, шприцевание всех подшипников печи №2 | 3h | 2026-04-23 09:00 A | 2026-04-23 12:00 A |  | 100% |  |  |  | start no earlier than 2026-04-24 09:00 | Бобренок В | 3h | 3h |
| 457 | 1.219 | на питателе заменить втулки линия 1 и 2 | 2h | 2026-04-15 08:00 A | 2026-04-15 11:00 A |  | 100% |  |  |  | start no earlier than 2026-04-15 08:00 | Бобренок В | 2h | 2h |
| 458 | 1.220 | проверить радиатор приточки (протечки, есть ли подача горячей воды), если нет - выключить приточку, чтобы не разморозить! | 1h | 2026-04-14 09:00 A | 2026-04-14 10:00 A |  | 100% |  |  |  | start no earlier than 2026-04-14 08:00 | Труфанов А | 1h | 1h |
| 459 | 1.221 | приварить левую ногу мезонина на фасовке (штабелером сместили) | 1h | 2026-04-15 09:00 A | 2026-04-15 10:00 A |  | 100% |  |  |  | start no earlier than 2026-04-15 09:00 | Бобренок В | 1h | 1h |
| 460 | 1.222 | на печи №1 прошприцевать подшипники, проверить токи, если нужно вскрываем на ревизию перемычек | 3h | 2026-04-14 09:00 A | 2026-04-14 12:00 A |  | 100% |  |  |  | start no earlier than 2026-04-14 08:00 | Труфанов А | 3h | 3h |
| 461 | 1.223 | замена электродной группы на парогенераторе линия №1 (электроды подготовили в слесарке) | 4h | 2026-04-14 09:00 A | 2026-04-14 13:00 A |  | 100% |  |  |  | start no earlier than 2026-04-14 08:00 | Труфанов А | 4h | 4h |
| 462 | 1.224 | на квадропаке тена выставить в параллель | 1h | 2026-04-13 09:00 A | 2026-04-13 10:00 A |  | 100% |  |  |  | start no earlier than 2026-04-13 08:00 | Труфанов А | 1h | 1h |
| 463 | 1.225 | покрасить подиум под циклонами линия 1 и 2 | 2h | 2026-04-22 09:00 A | 2026-04-22 11:00 A |  | 100% |  |  |  | start no earlier than 2026-04-22 09:00 | Бундин В | 2h | 2h |
| 464 | 1.226 | подготовить лекало на приемный лоток транспортера тип 2 (у них в работе картонка, можно по ней и сделать), если будет остановка приварить | 1h | 2026-04-27 09:00 A | 2026-04-27 10:00 A |  | 100% |  |  |  | start no earlier than 2026-04-27 09:00 | Тимофеев В | 1h | 1h |
| 465 | 1.227 | на пнемоулитку поставить пистолет (зона экструдера) | 1h | 2026-04-11 09:00 A | 2026-04-13 10:00 A |  | 100% |  |  |  | start no earlier than 2026-04-11 09:00 | Макаревич А | 1h | 1h |
| 466 | 1.228 | установить фильтр на кондиционер между печками (фильтр у Луговских) | 1h | 2026-04-22 09:00 A | 2026-04-22 10:00 A |  | 100% |  |  |  | start no earlier than 2026-04-22 09:00 | Труфанов А | 1h | 1h |

| ID | WBS | Task | Type | Duration | Start | Finish | Predecessors | Complete | Actual start | Actual finish | Total slack | Constraint | Resources | Work | Actual work |
| --- | --- | --- | --- | --- | --- | --- | --- | --- | --- | --- | --- | --- | --- | --- | --- |
| 467 | 1.229 | **зафиксировать ручку в туалет (закрутить)** |  | 856.12d | 2023-03-22 09:00 A | 2026-04-22 10:00 |  | 100% |  | 2026-05-05 10:00 |  |  |  | 2h | 2h |
| 468 | 1.229.1 | заказать ручки |  | 1h | 2023-03-22 09:00 A | 2023-03-22 10:00 A |  | 100% |  |  |  |  | Шуранов Ю | 1h | 1h |
| 469 | 1.229.2 | установка (заменить ручку, взять на складе) |  | 1h | 2026-05-05 09:00 A | 2026-05-05 10:00 A |  | 100% |  |  |  | start no earlier than 2026-05-05 09:00 | Бобренок В | 1h | 1h |
| 470 | 1.230 | ТО теко 1,5 (чистка тен, смазка штоков пневмоцилиндров, подшипников) | manual | 3h | 2026-04-25 09:00 A | 2026-04-25 12:00 A |  | 100% |  |  |  | start no earlier than 2026-04-25 09:00 | Труфанов А | 3h | 3h |
| 471 | 1.231 | слить конденсат с компрессора, чистка фильтров и радиаторов | manual | 2h | 2026-04-12 09:00 A | 2026-04-12 11:00 A |  | 100% |  |  |  | start no earlier than 2026-04-12 09:00 | Макаревич А | 2h | 2h |
| 472 | 1.232 | **заказать газлифт жиротопка** |  | 11.12d? | 2026-04-22 09:00 A | 2026-05-06 10:00 |  | 100% |  | 2026-08-18 09:20 |  |  |  | 84.08h | 84.08h |
| 473 | 1.232.1 | доставка |  | 10d | 2026-04-22 09:00 A | 2026-05-05 18:00 A |  | 100% |  |  |  | start no earlier than 2026-04-22 09:00 | Карабанов | 80h | 80h |
| 474 | 1.232.2 | **установка газ лифт** |  | 69.04d | 2026-05-13 09:00 A | 2026-08-18 09:20 A |  | 100% |  |  |  |  |  | 4.08h | 4.08h |
| 475 | 1.232.2.1 | контроль поставки / размер |  | 20min | 2026-08-18 09:00 A | 2026-08-18 09:20 A |  | 100% |  |  |  | start no earlier than 2026-08-18 09:00 | Шуранов Ю | 0.33h | 0.33h |
| 476 | 1.232.2.2 | наварить уголок для площадки упора газлифта |  | 1h | 2026-05-13 09:00 A | 2026-05-13 10:00 A |  | 100% |  |  |  | start no earlier than 2026-05-13 09:00 | Труфанов А; Некрасов А | 2h | 2h |
| 477 | 1.232.2.3 | заявка газлифт с меньшей усилием/ выяснить координата |  | 30min | 2026-05-27 09:00 A | 2026-05-27 09:30 A |  | 100% |  |  |  | start no earlier than 2026-05-27 09:00 | Зорькин В | 0.5h | 0.5h |
| 478 | 1.232.2.4 | доставка контроль |  | 15min | 2026-08-12 09:00 A | 2026-08-12 09:15 A | 477FS+10d | 100% |  |  |  | start no earlier than 2026-05-13 09:00 | Зорькин В | 0.25h | 0.25h |
| 479 | 1.232.2.5 | замена |  | 1h | 2026-08-12 09:00 A | 2026-08-12 10:00 A |  | 100% |  |  |  | start no earlier than 2026-08-12 09:00 | Бобренок В | 1h | 1h |
| 480 | 1.233 | убрать диммер за еврокубом, где завозят навески (провода заизолировать и спрятать в кабель-канал) |  | 1h | 2026-04-10 08:00 A | 2026-04-10 10:00 A |  | 100% |  |  |  | start no earlier than 2026-04-10 08:00 | Бобренок В | 1h | 1h |
| 481 | 1.234 | закрыть монтажную коробку над дверью зона жиров выход |  | 1h | 2026-04-09 08:00 A | 2026-04-09 10:00 A |  | 100% |  |  |  | start no earlier than 2026-04-09 08:00 | Бобренок В | 1h | 1h |
| 482 | 1.235 | **на аппликаторе установить принтер (взять на складе)** |  | 3h? | 2026-04-10 09:00 | 2026-04-10 12:00 |  | 100% | 2026-04-09 08:00 | 2026-05-14 10:00 |  |  |  | 5h | 5h |
| 483 | 1.235.1 | монтаж витой пары от аппликатора до шкафа где вывозят ГП справа |  | 4h | 2026-04-09 08:00 A | 2026-04-09 13:00 A |  | 100% |  |  |  | start no earlier than 2026-04-09 08:00 | Бобренок В | 4h | 4h |
| 484 | 1.235.2 | тест принтера |  | 1h | 2026-05-14 09:00 A | 2026-05-14 10:00 A |  | 100% |  |  |  | start no earlier than 2026-05-14 09:00 | Зорькин В | 1h | 1h |
| 485 | 1.236 | замена шнек+гильзы (б/у) на 2 линии |  | 4h | 2026-04-09 08:00 A | 2026-04-09 13:00 A |  | 100% |  |  |  | start no earlier than 2026-04-09 08:00 | Тимофеев В | 4h | 4h |
| 486 | 1.237 | закрепить светильник в комнатке перед выходом, где вывозят готовую продукцию справа, оторвался | manual | 1h | 2026-04-08 09:00 A | 2026-04-08 10:00 A |  | 100% |  |  |  | start no earlier than 2026-04-08 08:00 | Бундин В | 1h | 1h |
| 487 | 1.238 | **замена лент на аппликаторе, подумать какой сделать отражатель для фотометки, чтобы не цепляло пакеты в работе** |  | 0.5d | 2026-05-27 09:00 | 2026-05-27 13:00 |  |  |  |  |  |  |  | 4h |  |
| 488 | 1.238.1 | замена ленеты |  | 4h | 2026-10-12 09:00 | 2026-10-12 13:00 |  |  |  |  | 107.09d | start no earlier than 2026-10-12 09:00 | Тимофеев В | 4h |  |
| 489 | 1.239 | подготовить электродную группу для парогенератора (собрать) |  | 2h | 2026-04-08 09:00 A | 2026-04-08 11:00 A |  | 100% |  |  |  | start no earlier than 2026-04-08 08:00 | Бундин В | 2h | 2h |
| 490 | 1.240 | **просыпается гранула на пересыпке с барабана в конвейер** |  | 0.5d | 2026-04-08 09:00 A | 2026-04-08 13:00 A |  | 100% |  |  |  |  |  | 6h | 6h |
| 491 | 1.240.1 | пододвинуть ближе к барабану конвейер + охладитель + вентилятор |  | 2h | 2026-04-08 09:00 A | 2026-04-08 11:00 A |  | 100% |  |  |  | start no earlier than 2026-04-08 09:00 | Бобренок В | 2h | 2h |
| 492 | 1.240.2 | доработка приемного лотка конвейера |  | 4h | 2026-04-08 09:00 A | 2026-04-08 13:00 A |  | 100% |  |  |  | start no earlier than 2026-04-08 09:00 | Некрасов А | 4h | 4h |
| 493 | 1.241 | забрать 2 рохли с пандуса, снять колеса в зип (зад- перед), а сами рохли в контейнер |  | 3h | 2026-04-04 09:00 A | 2026-04-06 12:00 A |  | 100% |  |  |  | start no earlier than 2026-04-04 09:00 | Труфанов А | 3h | 3h |

| ID | WBS | Task | Type | Duration | Start | Finish | Predecessors | Complete | Constraint | Resources | Work | Actual work |
| --- | --- | --- | --- | --- | --- | --- | --- | --- | --- | --- | --- | --- |
| 494 | 1.242 | **квадропак модернизация регулировки пластины нажима роликов для захвата пакета** |  | 2.12d | 2026-04-15 09:00 A | 2026-04-17 10:00 A |  | 100% |  |  | 3h | 3h |
| 495 | 1.242.1 | регулировочной тягой отвезти нажимную площадку на 5мм (остановить работу на 10 минут, согласовать с мастером) |  | 1h | 2026-04-17 09:00 A | 2026-04-17 10:00 A |  | 100% | start no earlier than 2026-04-17 09:00 | Бобренок В | 1h | 1h |
| 496 | 1.242.2 | изготовление пластины на ногу по аналогии как на первой ноге |  | 1h | 2026-04-15 09:00 A | 2026-04-15 10:00 A | 495 | 100% | start no earlier than 2026-04-15 09:00 | Бобренок В | 1h | 1h |
| 497 | 1.242.3 | монтаж |  | 1h | 2026-04-15 10:00 A | 2026-04-15 11:00 A | 496 | 100% | start no earlier than 2026-04-10 09:00 | Бобренок В | 1h | 1h |
| 498 | 1.243 | изготовить крышку на приямок слива канализации под раковинами зона экструдер. Из нерж, с ручкой. |  | 4h | 2026-04-02 08:00 A | 2026-04-02 13:00 A |  | 100% | start no earlier than 2026-04-02 08:00 | Бобренок В | 4h | 4h |
| 499 | 1.244 | выпрямить погнутые роль-ворота на рампе - в сторону слесарки (нужно откутить левую направляшку и вставить воротину на место) |  | 1h | 2026-04-02 08:00 A | 2026-04-02 10:00 A |  | 100% | start no earlier than 2026-04-02 08:00 | Бобренок В | 1h | 1h |
| 500 | 1.245 | **выключатель света на входе в гидролизатную закрепить сам рычаг переключения, проскальзывает** |  | 15.12d | 2026-04-06 09:00 A | 2026-04-27 10:00 A |  | 100% |  | Макаревич А | 123h | 123h |
| 501 | 1.245.1 | заказать выключатель |  | 1h | 2026-04-06 09:00 A | 2026-04-06 10:00 A |  | 100% | start no earlier than 2026-04-06 08:00 | Шуранов Ю | 1h | 1h |
| 502 | 1.245.2 | замена выключателя (выключатель в слесарке тебе показывал) |  | 1h | 2026-04-25 09:00 A | 2026-04-27 10:00 A |  | 100% | start no earlier than 2026-04-25 09:00 | Бобренок В | 1h | 1h |
| 503 | 1.246 | на пандусе 1 цеха справа - пометить шнеки и гильзы что они рабочие и вывести в контейнер |  | 2h | 2026-04-01 08:00 A | 2026-04-01 11:00 A |  | 100% | start no earlier than 2026-04-01 08:00 | Бобренок В | 2h | 2h |
| 504 | 1.247 | взять с контейнера пысос- проверить рабочий или нет (если работает выдать в 1 цех) |  | 2h | 2026-04-01 08:00 A | 2026-04-01 11:00 A |  | 100% | start no earlier than 2026-04-01 08:00 | Бобренок В | 2h | 2h |
| 505 | 1.248 | заменить плату интерфейса RS485 |  | 1h | 2026-04-04 09:00 A | 2026-04-06 10:00 A |  | 100% | start no earlier than 2026-04-04 09:00 | Труфанов А | 1h | 1h |
| 506 | 1.249 | замена шнеки 1 линия |  | 4h | 2026-03-31 08:00 A | 2026-03-31 13:00 A |  | 100% | start no earlier than 2026-03-31 08:00 | Тимофеев В; Бобренок В | 8h | 8h |
| 507 | 1.250 | замер износ шнеков |  | 1h | 2026-03-31 08:00 A | 2026-03-31 10:00 A |  | 100% | start no earlier than 2026-03-31 08:00 | Тимофеев В; Бобренок В; Зорькин В | 3h | 3h |
| 508 | 1.251 | почистить канальные вентиляторы вытяжки в курилке |  | 2h | 2026-03-28 09:00 A | 2026-03-30 11:00 A |  | 100% | start no earlier than 2026-03-28 09:00 | Бундин В | 2h | 2h |
| 509 | 1.252 | монтаж розетки на ногу нотис справа для подключения весов |  | 2h | 2026-03-27 09:00 A | 2026-03-27 11:00 A |  | 100% | start no earlier than 2026-03-27 09:00 | Труфанов А | 2h | 2h |
| 510 | 1.253 | добавить вибрации на виброохладителе линия 2 (согласовать с мастером, если будет остановка) |  | 2h | 2026-04-30 09:00 A | 2026-04-30 11:00 A | 519 | 100% |  | Бундин В | 2h | 2h |
| 511 | 1.254 | **замена ленты конвейер 2 линия 2** |  | 12.38d | 2026-04-07 09:00 A | 2026-04-23 12:00 A |  | 100% |  |  | 15h | 15h |
| 512 | 1.254.1 | взять ленту 400мм и начать крепить ковши для транспортера тип 2 (посчитать количество на транспортере) | manual | 9h | 2026-04-07 09:00 A | 2026-04-08 10:00 A |  | 100% | start no earlier than 2026-04-07 09:00 | Тимофеев В | 9h | 9h |
| 513 | 1.254.2 | замена ленты |  | 3h | 2026-04-23 09:00 A | 2026-04-23 12:00 A |  | 100% | start no earlier than 2026-04-23 09:00 | Тимофеев В; Бундин В | 6h | 6h |
| 514 | 1.255 | заменить на штабелере второй АКБ в зоне экструдера |  | 1h | 2026-03-28 09:00 A | 2026-03-30 10:00 A |  | 100% | start no earlier than 2026-03-28 09:00 | Дедов В | 1h | 1h |
| 515 | 1.256 | на кпп №1 опустить на 10см кабель в гофре для камер видеонаблюдения | manual | 2h | 2026-03-28 09:00 A | 2026-03-28 11:00 A |  | 100% | start no earlier than 2026-03-28 09:00 | Бундин В | 2h | 2h |
| 516 | 1.257 | вход охладителя 1 линии - нужно на среднем лотке между уровнями сделать сбоков шторки (фото скину) |  | 2h | 2026-03-28 09:00 A | 2026-03-30 11:00 A |  | 100% | start no earlier than 2026-03-28 09:00 | Бундин В | 2h | 2h |
| 517 | 1.258 | на первой линии под выходом из печи прикрутить на стенку оргстекло (Слава готовил по размерам оргстекло) |  | 1h | 2026-03-28 09:00 A | 2026-03-30 10:00 A |  | 100% | start no earlier than 2026-03-28 09:00 | Труфанов А | 1h | 1h |
| 518 | 1.259 | На пробниках оторвали разъем питания, нужно припаять |  | 2h | 2026-03-27 09:00 A | 2026-03-27 11:00 A |  | 100% | start no earlier than 2026-03-27 09:00 | Дедов В | 2h | 2h |
| 519 | 1.260 | подготовить 1 ленты с ковшами для транспортера тип 2 (зип) |  | 1d? | 2026-04-29 09:00 A | 2026-04-29 18:00 A |  | 100% | start no earlier than 2026-04-29 09:00 | Шуранов Ю | 8h | 8h |
| 520 | 1.261 | замена на старые капролонновые втулки в питателе линия 1 |  | 1h | 2026-03-26 09:00 A | 2026-03-26 10:00 A |  | 100% | start no earlier than 2026-03-26 09:00 | Тимофеев В | 1h | 1h |
| 521 | 1.262 | сделать на 2 линии вставыш на ленту транспортера тип 2 и установить на транспортер |  | 4h | 2026-03-25 09:00 A | 2026-03-25 13:00 A |  | 100% | start no earlier than 2026-03-25 09:00 | Некрасов А; Бобренок В | 8h | 8h |
| 522 | 1.263 | герметизация мезонина подачи навесок по шву |  | 1h | 2026-04-15 09:00 A | 2026-04-15 10:00 A |  | 100% | start no earlier than 2026-04-15 09:00 | Бобренок В | 1h | 1h |

| ID | WBS | Task | Type | Duration | Start | Finish | Complete | Remaining | Actual start | Actual finish | Constraint | Resources | Work | Actual work |
| --- | --- | --- | --- | --- | --- | --- | --- | --- | --- | --- | --- | --- | --- | --- |
| 523 | 1.264 | **на 2 линии на хомуты закрепить горловину к бункеру подачи сухого гидрализата (все расскажу)** |  | 0.25d | 2026-04-27 09:00 A | 2026-04-27 11:00 A | 100% |  |  |  |  | Некрасов А | 4h | 4h |
| 524 | 1.264.1 | на горловине подачи сухого гидрализата приварить выход под углом 45 градусов (углы из нерж есть в 3 цехе) |  | 2h | 2026-04-27 09:00 A | 2026-04-27 11:00 A | 100% |  |  |  | start no earlier than 2026-04-27 09:00 | Макаревич А | 2h | 2h |
| 525 | 1.265 | **разобрать с двух сторон питатель 2 линия - ревизия шестеренок и втулок спереди (оставить все разобранное)** |  | 2h | 2026-03-24 09:00 | 2026-03-24 11:00 | 100% |  | 2026-03-26 09:00 | 2026-03-26 11:00 |  |  | 2h | 2h |
| 526 | 1.265.1 | собрать питатель, ревизия втулок, подшипников, шнеков, шестеренок. Подогнать капролонновые втулки |  | 2h | 2026-03-26 09:00 A | 2026-03-26 11:00 A | 100% |  |  |  | start no earlier than 2026-03-26 09:00 | Тимофеев В | 2h | 2h |
| 527 | 1.266 | пульт управления кондиционером в зоне экструдера- закрепить гофру и заизолировать разрыв гофры, закрепить к стенке |  | 1h | 2026-03-24 08:00 A | 2026-03-24 10:00 A | 100% |  |  |  | start no earlier than 2026-03-24 08:00 | Бобренок В | 1h | 1h |
| 528 | 1.267 | блок питания для весов на жирах развалился, стянуть изолентой |  | 1h | 2026-03-24 08:00 A | 2026-03-24 10:00 A | 100% |  |  |  | start no earlier than 2026-03-24 08:00 | Бобренок В | 1h | 1h |
| 529 | 1.268 | **ремонт /отключить 2 вентилятора охладитель 1 линия** |  | 801d | 2023-06-21 09:00 A | 2026-07-15 18:00 A | 100% |  |  |  |  | Тимофеев В | 12801h | 12801h |
| 530 | 1.268.1 | заказать в зип |  | 6392h | 2023-06-21 09:00 A | 2026-07-15 18:00 A | 100% |  |  |  |  | Шуранов Ю | 6392h | 6392h |
| 531 | 1.268.2 | заменить 2 вентилятора |  | 1h | 2026-04-04 09:00 A | 2026-04-06 10:00 A | 100% |  |  |  |  | Макаревич А | 1h | 1h |
| 532 | 1.269 | демонтаж крышка лотка в проеме между краем площадки вентиляции приточной и проемом ворот вход в кооридор завода навесок |  | 383520min | 2023-06-21 09:00 A | 2026-07-15 18:00 A | 100% |  |  |  |  | Труфанов А | 6392h | 6392h |
| 533 | 1.270 | стук шнек 2 линия - проверить, при необходимости разобрать |  | 3h | 2026-04-27 09:00 A | 2026-04-27 12:00 A | 100% |  |  |  | start no earlier than 2026-04-27 09:00 | Тимофеев В; Бобренок В | 6h | 6h |
| 534 | 1.271 | слить конденсат и продуть все радиаторы компрессор |  | 1h | 2026-03-21 09:00 A | 2026-03-23 10:00 A | 100% |  |  |  | start no earlier than 2026-03-21 09:00 | Дедов В | 1h | 1h |
| 535 | 1.272 | закрепить аварийную кнопку в гидролизатной (фото в чате будет) / пожарный выключатель |  | 1h | 2026-03-22 09:00 A | 2026-03-23 10:00 A | 100% |  |  |  | start no earlier than 2026-03-22 09:00 | Бобренок В | 1h | 1h |
| 536 | 1.273 | кнопки на управление ворот зона жиров поднять и закпепить выше |  | 2h | 2026-03-18 08:00 A | 2026-03-18 11:00 A | 100% |  |  |  | start no earlier than 2026-03-18 08:00 | Макаревич А | 2h | 2h |
| 537 | 1.274 | закрепить все отбойники где завозят навески экструдерщики |  | 2h | 2026-03-18 08:00 A | 2026-03-18 11:00 A | 100% |  |  |  | start no earlier than 2026-03-18 08:00 | Макаревич А | 2h | 2h |
| 538 | 1.275 | закрыить все электро шкафы |  | 30min | 2026-03-17 08:00 A | 2026-03-17 09:30 A | 100% |  |  |  | start no earlier than 2026-03-17 08:00 | Бобренок В | 0.5h | 0.5h |
| 539 | 1.276 | поломоечная машинка устранить течь |  | 1h | 2026-03-17 08:00 A | 2026-03-17 10:00 A | 100% |  |  |  | start no earlier than 2026-03-17 08:00 | Бобренок В | 1h | 1h |
| 540 | 1.277 | закрыить крышку на пробниках, задняя стенка прикрутить |  | 30min | 2026-03-17 08:00 A | 2026-03-17 09:30 A | 100% |  |  |  | start no earlier than 2026-03-17 08:00 | Бобренок В | 0.5h | 0.5h |
| 541 | 1.278 | продувка кабельного лотка |  | 2h | 2026-03-18 09:00 A | 2026-03-18 11:00 A | 100% |  |  |  | start no earlier than 2026-03-18 09:00 | Труфанов А; Некрасов А | 4h | 4h |
| 542 | 1.279 | монтаж крючков под халаты. Получить у мастера |  | 1h | 2026-03-17 08:00 A | 2026-03-17 10:00 A | 100% |  |  |  | start no earlier than 2026-03-17 08:00 | Бобренок В | 1h | 1h |
| 543 | 1.280 | **установить расходомеры пара на ПГ** |  | 0.38d | 2026-04-01 09:00 | 2026-04-01 12:00 |  | 0.38d | 2026-09-28 09:00 |  |  |  | 3h |  |
| 544 | 1.280.1 | монтаж 1 линия расходомер / кабель / блок питания | manual | 3h | 2026-09-28 09:00 A | 2026-09-28 12:00 |  | 3h |  |  | start no earlier than 2026-09-28 09:00 | Некрасов А | 3h |  |
| 545 | 1.281 | **монтаж регистратор данных линия 1 и 2:** |  | 0.25d | 2026-03-18 09:00 A | 2026-03-18 11:00 A | 100% |  |  |  |  |  | 2h | 2h |
| 546 | 1.281.1 | подключение линия 1 |  | 2h | 2026-03-18 09:00 A | 2026-03-18 11:00 A | 100% |  |  |  | start no earlier than 2026-03-18 09:00 | Домоводов К | 2h | 2h |

| ID | WBS | Task | Type | Duration | Start | Finish | Predecessors | Complete | Remaining | Total slack | Free slack | Constraint | Resources | Work | Actual work |
| --- | --- | --- | --- | --- | --- | --- | --- | --- | --- | --- | --- | --- | --- | --- | --- |
| 547 | 1.282 | **разделить воду в экструдер и парогенераторы** |  | 119.44d | 2026-03-19 09:00 A | 2026-09-02 12:30 |  | 90% | 11.69d | 141.16d |  |  |  | 117.5h | 106h |
| 548 | 1.282.1 | заявка поплавкой клапан вертикальный, подводка с боку по аналогии с 4ц |  | 1h | 2026-03-19 09:00 A | 2026-03-19 10:00 A |  | 100% |  |  |  | start no earlier than 2026-03-19 08:00 | Зорькин В | 1h | 1h |
| 549 | 1.282.2 | доставка |  | 10d | 2026-03-19 10:00 A | 2026-04-02 10:00 A | 548 | 100% |  |  |  | start no earlier than 2026-03-19 08:00 | Карабанов | 80h | 80h |
| 550 | 1.282.3 | испытать производсительность маленького черн насоса с "медленным" счетким |  | 2h | 2026-05-20 09:00 A | 2026-05-20 11:00 A |  | 100% |  |  |  | start no earlier than 2026-05-20 09:00 | Тимофеев В | 2h | 2h |
| 551 | 1.282.4 | изготовить емкость для поплавкой камеры и насоса из нерж |  | 4h | 2026-04-27 09:00 A | 2026-04-27 13:00 A |  | 100% |  |  |  | start no earlier than 2026-04-27 09:00 | Макаревич А | 4h | 4h |
| 552 | 1.282.5 | доставка частотный 220 контроль | milestone | 0d | 2026-04-24 09:00 A | 2026-04-24 09:00 A |  | 100% |  |  |  | start no earlier than 2026-04-24 09:00 | Зорькин В |  |  |
| 553 | 1.282.6 | испытать регулирование насоса на частотнике |  | 1h | 2026-05-26 09:00 A | 2026-05-26 10:00 A |  | 100% |  |  |  | start no earlier than 2026-05-26 09:00 | Дедов В | 1h | 1h |
| 554 | 1.282.7 | монтаж насоса + бак нерж на линия 2 |  | 1h | 2026-05-27 09:00 A | 2026-05-27 10:00 A |  | 100% |  |  |  | start no earlier than 2026-05-27 09:00 | Тимофеев В | 1h | 1h |
| 555 | 1.282.8 | монтаж розетка, кабель до насаса, подключение двигатель насоса |  | 1h | 2026-05-27 09:00 A | 2026-05-27 10:00 A |  | 100% |  |  |  | start no earlier than 2026-05-27 09:00 | Бундин В | 1h | 1h |
| 556 | 1.282.9 | подключение насос + счетчик + кран + частотник - сборка схема с байпасом на мал насосе |  | 2h | 2026-08-11 09:00 A | 2026-08-11 11:00 A |  | 100% |  |  |  | start no earlier than 2026-08-11 09:00 | Тимофеев В | 2h | 2h |
| 557 | 1.282.10 | установить счетчик в линию |  | 1h | 2026-08-12 09:00 A | 2026-08-12 10:00 A |  | 100% |  |  |  | start no earlier than 2026-08-12 09:00 | Тимофеев В | 1h | 1h |
| 558 | 1.282.11 | испытания производительности и регулировки |  | 1h | 2026-08-12 09:00 A | 2026-08-12 10:00 A |  | 100% |  |  |  | start no earlier than 2026-08-12 09:00 | Тимофеев В | 1h | 1h |
| 559 | 1.282.12 | тестирование работы при обновленном SSID |  | 1h | 2026-08-19 09:00 A | 2026-08-19 10:00 A |  | 100% |  |  |  | start no earlier than 2026-08-19 09:00 | Домоводов К | 1h | 1h |
| 560 | 1.282.13 | **монтаж на линия 1** |  | 18.44d | 2026-08-07 09:00 | 2026-09-02 12:30 |  |  |  | 141.16d |  |  |  | 11.5h |  |
| 561 | 1.282.13.1 | заявка на счетчик, насос, 3х ход клапан, фитинги, канистра |  | 1h | 2026-08-07 09:00 | 2026-08-07 10:00 |  |  |  | 141.16d | 0d | start no earlier than 2026-08-07 09:00 | Зорькин В | 1h |  |
| 562 | 1.282.13.2 | контроль поставки |  | 30min | 2026-08-28 10:00 | 2026-08-28 10:30 | 561FS+15d |  |  | 141.16d | 0d | start no earlier than 2026-08-12 09:00 | Зорькин В | 0.5h |  |
| 563 | 1.282.13.3 | сборка корпус |  | 4h | 2026-08-31 10:30 | 2026-08-31 15:30 | 562FS+1d |  |  | 141.16d | 0d | start no earlier than 2026-08-12 09:00 | Тимофеев В | 4h |  |
| 564 | 1.282.13.4 | монтаж линия 1 |  | 6h | 2026-09-01 15:30 | 2026-09-02 12:30 | 563FS+1d |  |  | 141.16d |  | start no earlier than 2026-08-12 09:00 | Тимофеев В | 6h |  |
| 565 | 1.282.14 | подключть конденсатор к насосу, запуск системы |  | 1h | 2026-05-27 08:00 A | 2026-05-27 10:00 A |  | 100% |  |  |  | start no earlier than 2026-05-27 08:00 | Дедов В | 1h | 1h |
| 566 | 1.282.15 | подготовить емкость нерж (попловок, сгон) для подключения к насосу |  | 4h | 2026-05-26 09:00 A | 2026-05-26 13:00 A |  | 100% |  |  |  | start no earlier than 2026-05-26 09:00 | Бундин В | 4h | 4h |
| 567 | 1.282.16 | испытать насос на часотоном приводе |  | 2h | 2026-05-19 09:00 A | 2026-05-19 11:00 A | 552 | 100% |  |  |  | start no earlier than 2026-05-20 09:00 | Тимофеев В | 2h | 2h |
| 568 | 1.282.17 | перенос с 3й линии бак с насосом, установка на линия 2 |  | 4h | 2026-04-08 09:00 A | 2026-04-08 13:00 A | 551 | 100% |  |  |  | start no earlier than 2026-04-08 09:00 | Некрасов А | 4h | 4h |
| 569 | 1.283 | бойлер на экструдере - установить трубку на клапан сброса и смонтировать её ы раковину |  | 1h | 2026-03-14 09:00 A | 2026-03-16 10:00 A |  | 100% |  |  |  | start no earlier than 2026-03-14 09:00 | Бундин В | 1h | 1h |
| 570 | 1.284 | смазать дверную ручку (входную) |  | 1h | 2026-03-15 09:00 A | 2026-03-16 10:00 A |  | 100% |  |  |  | start no earlier than 2026-03-15 09:00 | Бундин В | 1h | 1h |
| 571 | 1.285 | сделать ручку дверную (вход на упаковку) |  | 1h | 2026-03-15 09:00 A | 2026-03-16 10:00 A |  | 100% |  |  |  | start no earlier than 2026-03-15 09:00 | Бундин В | 1h | 1h |
| 572 | 1.286 | дверная ручка в туалет (подкрутить) |  | 1h | 2026-03-15 09:00 A | 2026-03-16 10:00 A |  | 100% |  |  |  | start no earlier than 2026-03-15 09:00 | Бундин В | 1h | 1h |
| 573 | 1.287 | штабелер экструдера натянуть цепь |  | 1h | 2026-03-13 08:00 A | 2026-03-13 10:00 A |  | 100% |  |  |  | start no earlier than 2026-03-13 08:00 | Дедов В | 1h | 1h |
| 574 | 1.288 | установить розетку возле роутера. Место монтажа фото от Шуранова |  | 2h | 2026-03-14 09:00 A | 2026-03-16 11:00 A |  | 100% |  |  |  | start no earlier than 2026-03-14 09:00 | Бундин В | 2h | 2h |
| 575 | 1.289 | линия 1 лоток охладителя под конвейером (по фото) - поднять на 3см, что бы не цеплял сетку. Снять / пересверлить крепеж |  | 2h | 2026-03-14 09:00 A | 2026-03-16 11:00 A |  | 100% |  |  |  | start no earlier than 2026-03-14 09:00 | Бундин В | 2h | 2h |
| 576 | 1.290 | изготовтиь полочку для роутера с "крышей. Двух скатная". |  | 4h | 2026-03-14 09:00 A | 2026-03-16 13:00 A |  | 100% |  |  |  | start no earlier than 2026-03-14 09:00 | Бундин В | 4h | 4h |

| ID | WBS | Task | Type | Duration | Start | Finish | Predecessors | Complete | Remaining | Actual start | Total slack | Constraint | Resources | Work | Actual work |
| --- | --- | --- | --- | --- | --- | --- | --- | --- | --- | --- | --- | --- | --- | --- | --- |
| 577 | 1.291 | **АКБ штабелер на навесках** |  | 43d | 2026-03-13 08:00 A | 2026-05-12 18:00 A |  | 100% |  |  |  |  |  | 2h | 2h |
| 578 | 1.291.1 | заявка на новые АКБ, отправить | milestone | 0d | 2026-03-13 08:00 A | 2026-03-13 08:00 A |  | 100% |  |  |  | start no earlier than 2026-03-13 08:00 | Шуранов Ю |  |  |
| 579 | 1.291.2 | получить счет | milestone | 0d | 2026-03-16 09:00 A | 2026-03-16 09:00 A | 578 | 100% |  |  |  | start no earlier than 2026-03-16 09:00 | Шуранов Ю |  |  |
| 580 | 1.291.3 | доставыка\ |  | 40d | 2026-03-16 09:00 A | 2026-05-12 18:00 A | 579 | 100% |  |  |  | start no earlier than 2026-03-13 08:00 |  |  |  |
| 581 | 1.291.4 | замена (получить на складе 2 АКБ и поменять на штабелере) |  | 2h | 2026-03-25 09:00 A | 2026-03-25 11:00 A |  | 100% |  |  |  | start no earlier than 2026-03-25 09:00 | Бобренок В | 2h | 2h |
| 582 | 1.292 | замена шнеков на 1 линии по команде. Подготовить / старые увезти |  | 1h | 2026-03-14 09:00 A | 2026-03-16 10:00 A |  | 100% |  |  |  | start no earlier than 2026-03-14 09:00 | Бобренок В; Некрасов А | 2h | 2h |
| 583 | 1.293 | **установить принтер датаматрикс на пролистыватель** |  | 150d? | 2026-03-13 09:00 A | 2026-09-30 18:00 |  | 20% | 120d? |  | 114.59d |  |  | 11h | 3h |
| 584 | 1.293.1 | разработка крепления принтера |  | 1h | 2026-03-13 09:00 A | 2026-03-13 10:00 A |  | 100% |  |  |  | start no earlier than 2026-03-13 08:00 | Зорькин В; Шуранов Ю | 2h | 2h |
| 585 | 1.293.2 | настройка ПО с агрегатором |  | 1d? | 2026-09-30 09:00 | 2026-09-30 18:00 |  |  |  |  | 114.59d | start no earlier than 2026-09-30 09:00 | Домоводов К | 8h |  |
| 586 | 1.293.3 | изучение документации |  | 1h | 2026-05-28 09:00 A | 2026-05-28 10:00 A |  | 100% |  |  |  | start no earlier than 2026-05-28 09:00 | Домоводов К | 1h | 1h |
| 587 | 1.294 | **заменить мятый профлист коррдиор подачи навесок** |  | 32.25d | 2026-03-13 09:00 A | 2026-04-28 11:00 A |  | 100% |  |  |  |  |  | 85h | 85h |
| 588 | 1.294.1 | расчет материал / заявка |  | 1h | 2026-03-13 09:00 A | 2026-03-13 10:00 A |  | 100% |  |  |  | start no earlier than 2026-03-13 09:00 | Шуранов Ю | 1h | 1h |
| 589 | 1.294.2 | доставка |  | 10d | 2026-03-13 10:00 A | 2026-03-27 10:00 A | 588 | 100% |  |  |  | start no earlier than 2026-03-12 08:00 | Карабанов | 80h | 80h |
| 590 | 1.294.3 | замена |  | 2h | 2026-04-28 09:00 A | 2026-04-28 11:00 A | 589 | 100% |  |  |  | start no earlier than 2026-04-28 09:00 | Некрасов А; Труфанов А | 4h | 4h |
| 591 | 1.295 | **заменить плинтус стена вдольпечи 2** |  | 11.06d? | 2026-03-26 09:00 | 2026-04-10 09:30 |  | 91% | 1d? | 2026-03-13 09:00 |  |  |  | 96.5h | 80.5h |
| 592 | 1.295.1 | заявка |  | 30min | 2026-03-13 09:00 A | 2026-03-13 09:30 A |  | 100% |  |  |  | start no earlier than 2026-03-13 09:00 | Шуранов Ю | 0.5h | 0.5h |
| 593 | 1.295.2 | доставка |  | 10d | 2026-03-13 09:30 A | 2026-03-27 09:30 A | 592 | 100% |  |  |  | start no earlier than 2026-03-12 08:00 | Карабанов | 80h | 80h |
| 594 | 1.295.3 | замена |  | 1d? | 2026-10-06 09:00 | 2026-10-06 18:00 | 593 |  |  |  | 110.59d | start no earlier than 2026-10-06 09:00 | Некрасов А; Олег | 16h |  |
| 595 | 1.296 | **заменить аллюминевый скотч на швах вентиляции** |  | 18.25d | 2026-03-12 09:00 A | 2026-04-07 11:00 A |  | 100% |  |  |  |  |  | 82.33h | 82.33h |
| 596 | 1.296.1 | заявка |  | 20min | 2026-03-12 09:00 A | 2026-03-12 09:20 A |  | 100% |  |  |  | start no earlier than 2026-03-12 08:00 | Зорькин В | 0.33h | 0.33h |
| 597 | 1.296.2 | доставка |  | 10d | 2026-03-12 09:20 A | 2026-03-26 09:20 A | 596 | 100% |  |  |  | start no earlier than 2026-03-12 08:00 | Карабанов | 80h | 80h |
| 598 | 1.296.3 | замена (также на улитках печей, циклона, стык регулировки шибера улитки) | manual | 2h | 2026-04-07 09:00 A | 2026-04-07 11:00 A | 597 | 100% |  |  |  | start no earlier than 2026-04-07 09:00 | Бундин В | 2h | 2h |
| 599 | 1.297 | **замена скорлупа утеплитель горячих труб печи** |  | 16d | 2026-03-13 09:00 A | 2026-04-05 11:00 A |  | 100% |  |  |  |  |  | 83h | 83h |
| 600 | 1.297.1 | заявка |  | 1h | 2026-03-13 09:00 A | 2026-03-13 10:00 A |  | 100% |  |  |  | start no earlier than 2026-03-13 09:00 | Зорькин В | 1h | 1h |
| 601 | 1.297.2 | доставка |  | 10d | 2026-03-13 10:00 A | 2026-03-27 10:00 A | 600 | 100% |  |  |  | start no earlier than 2026-03-12 08:00 | Карабанов | 80h | 80h |
| 602 | 1.297.3 | замена | manual | 2h | 2026-04-05 09:00 A | 2026-04-05 11:00 A | 601 | 100% |  |  |  | start no earlier than 2026-04-05 09:00 | Бундин В | 2h | 2h |

| ID | WBS | Task | Type | Duration | Start | Finish | Predecessors | Complete | Actual start | Actual finish | Constraint | Resources | Work | Actual work |
| --- | --- | --- | --- | --- | --- | --- | --- | --- | --- | --- | --- | --- | --- | --- |
| 603 | 1.298 | **купить прокатный запайщик** |  | 85.12d? | 2026-03-16 09:00 A | 2026-07-13 10:00 A |  | 100% |  |  |  |  | 11h | 11h |
| 604 | 1.298.1 | поиск / заявка |  | 2h | 2026-03-16 09:00 A | 2026-03-16 11:00 A |  | 100% |  |  | start no earlier than 2026-03-16 09:00 | Зорькин В | 2h | 2h |
| 605 | 1.298.2 | получить счет + договор |  | 1h | 2026-05-12 09:00 A | 2026-05-12 10:00 A | 604 | 100% |  |  | start no earlier than 2026-05-12 09:00 | Зорькин В | 1h | 1h |
| 606 | 1.298.3 | оплата | milestone | 0d | 2026-05-12 10:00 A | 2026-05-12 10:00 A | 605 | 100% |  |  | start no earlier than 2026-03-12 08:00 | Домоводов К |  |  |
| 607 | 1.298.4 | доставка |  | 40d | 2026-05-12 10:00 A | 2026-07-13 10:00 A | 606 | 100% |  |  | start no earlier than 2026-03-12 08:00 |  |  |  |
| 608 | 1.298.5 | приемка / сборка |  | 1d? | 2026-06-29 09:00 A | 2026-06-29 18:00 A | 607 | 100% |  |  | start no earlier than 2026-03-12 08:00 | Тимофеев В | 8h | 8h |
| 609 | 1.299 | сборка рохли 2шт |  | 1h | 2026-03-13 09:00 A | 2026-03-13 10:00 A |  | 100% |  |  | start no earlier than 2026-03-13 09:00 | Тимофеев В | 1h | 1h |
| 610 | 1.300 | изготовить герметичную крышку на подачку гидролизата |  | 2h | 2026-05-20 09:00 A | 2026-05-20 11:00 A |  | 100% |  |  | start no earlier than 2026-05-20 09:00 | Дедов В; Шуранов Ю | 4h | 4h |
| 611 | 1.301 | **установить крышку печи торцевую с стороны экструдера на шарниры** |  | 12.5d | 2026-03-25 09:00 | 2026-04-10 13:00 |  | 100% | 2026-03-06 09:00 | 2026-09-11 13:00 |  |  | 88.08h | 88.08h |
| 612 | 1.301.1 | заказ шарниры |  | 5min | 2026-03-06 09:00 A | 2026-03-06 09:05 A |  | 100% |  |  | start no earlier than 2026-03-06 08:00 | Шуранов Ю | 0.08h | 0.08h |
| 613 | 1.301.2 | доставка |  | 10d | 2026-03-06 09:05 A | 2026-03-20 09:05 A | 612 | 100% |  |  | start no earlier than 2026-03-06 08:00 | Карабанов | 80h | 80h |
| 614 | 1.301.3 | монтаж линия 1 |  | 4h | 2026-05-13 09:00 A | 2026-05-13 13:00 A | 613 | 100% |  |  | start no earlier than 2026-05-13 09:00 | Бобренок В | 4h | 4h |
| 615 | 1.301.4 | монтаж линия 1 и 2 печи (чтобы открывалась и не мешала открыванию лотку сверху) | manual | 4h | 2026-09-11 09:00 A | 2026-09-11 13:00 A | 613 | 100% |  |  | start no earlier than 2026-09-11 09:00 | Макаревич А | 4h | 4h |
| 616 | 1.302 | **квадропак заменить пружины на лапках** |  | 10.12d | 2026-03-18 09:00 A | 2026-04-01 10:00 A |  | 100% |  |  |  |  | 3h | 3h |
| 617 | 1.302.1 | попытка заменить |  | 1h | 2026-03-18 09:00 A | 2026-03-18 10:00 A |  | 100% |  |  | start no earlier than 2026-03-18 09:00 | Дедов В | 1h | 1h |
| 618 | 1.302.2 | проврить ролики на износ / заказать |  | 1h | 2026-03-19 09:00 A | 2026-03-19 10:00 A |  | 100% |  |  | start no earlier than 2026-03-19 08:00 | Зорькин В | 1h | 1h |
| 619 | 1.302.3 | проверить / разрабоать полпн прижимная пластина регулировка |  | 1h | 2026-04-01 09:00 A | 2026-04-01 10:00 A |  | 100% |  |  | start no earlier than 2026-04-01 09:00 | Шуранов Ю | 1h | 1h |
| 620 | 1.303 | **звонок на ворота по привозу навесок** |  | 37.25d | 2026-03-05 09:00 A | 2026-04-27 11:00 A |  | 100% |  |  |  |  | 82.5h | 82.5h |
| 621 | 1.303.1 | заявка на сирену / звонок |  | 30min | 2026-03-05 09:00 A | 2026-03-05 09:30 A |  | 100% |  |  | start no earlier than 2026-03-05 09:00 | Шуранов Ю | 0.5h | 0.5h |
| 622 | 1.303.2 | доставка |  | 10d | 2026-03-12 09:00 A | 2026-03-25 18:00 A | 621 | 100% |  |  | start no earlier than 2026-03-12 08:00 | Карабанов | 80h | 80h |
| 623 | 1.303.3 | монтаж кнопка и звонок на складе (кнопку устанавливаем справа от ворот- звонок возле ВРУ слева |  | 2h | 2026-04-25 09:00 A | 2026-04-27 11:00 A | 622 | 100% |  |  | start no earlier than 2026-04-25 09:00 | Бобренок В | 2h | 2h |
| 624 | 1.304 | **установить профлист на левую стену** |  | 47d? | 2026-03-12 09:00 A | 2026-05-15 18:00 A |  | 100% |  |  |  |  | 185.5h | 185.5h |
| 625 | 1.304.1 | расчет материал с Олегом |  | 1h | 2026-03-12 09:00 A | 2026-03-12 10:00 A |  | 100% |  |  | start no earlier than 2026-03-12 09:00 | Шуранов Ю | 1h | 1h |
| 626 | 1.304.2 | заявка |  | 30min | 2026-03-19 09:00 A | 2026-03-19 09:30 A | 625 | 100% |  |  | start no earlier than 2026-03-19 09:00 | Шуранов Ю | 0.5h | 0.5h |
| 627 | 1.304.3 | доставка |  | 10d | 2026-03-19 09:30 A | 2026-04-02 09:30 A | 626 | 100% |  |  | start no earlier than 2026-03-04 08:00 | Карабанов | 80h | 80h |
| 628 | 1.304.4 | монтаж пробный ряд |  | 4h | 2026-04-22 09:00 A | 2026-04-22 13:00 A |  | 100% |  |  | start no earlier than 2026-04-22 09:00 | Некрасов А; Олег; Труфанов А | 12h | 12h |
| 629 | 1.304.5 | монтаж каркас |  | 1d? | 2026-04-23 14:00 A | 2026-04-24 13:00 A | 627, 628FS+1d | 100% |  |  | start no earlier than 2026-04-22 09:00 | Некрасов А; Труфанов А | 16h | 16h |
| 630 | 1.304.6 | монтаж лист |  | 6h | 2026-04-28 09:00 A | 2026-04-28 16:00 A | 629 | 100% |  |  | start no earlier than 2026-04-28 09:00 | Некрасов А; Труфанов А | 12h | 12h |
| 631 | 1.304.7 | монтаж уровень 2 |  | 4d | 2026-05-12 09:00 A | 2026-05-15 18:00 A |  | 100% |  |  | start no earlier than 2026-05-12 08:00 | Некрасов А; Труфанов А | 64h | 64h |

| ID | WBS | Task | Type | Duration | Start | Finish | Predecessors | Complete | Remaining | Total slack | Constraint | Resources | Work | Actual work |
| --- | --- | --- | --- | --- | --- | --- | --- | --- | --- | --- | --- | --- | --- | --- |
| 632 | 1.305 | **модернизация вентиляции** |  | 135.5d | 2026-03-13 09:00 A | 2026-09-15 13:00 |  | 62% | 51.62d | 129.09d |  |  | 14.5h | 10.5h |
| 633 | 1.305.1 | заявка врезки для отбора проб |  | 15min | 2026-08-21 09:00 A | 2026-08-21 09:15 A |  | 100% |  |  | start no earlier than 2026-08-21 09:00 | Зорькин В | 0.25h | 0.25h |
| 634 | 1.305.2 | контроль доставки врезки для отбора проб |  | 15min | 2026-09-09 09:00 A | 2026-09-09 09:15 A | 633FS+7d | 100% |  |  | start no earlier than 2026-09-09 09:00 | Зорькин В | 0.25h | 0.25h |
| 635 | 1.305.3 | монтаж врезки для отбора проб |  | 4h | 2026-09-15 09:00 A | 2026-09-15 13:00 A | 634FS+1d | 100% |  |  | start no earlier than 2026-09-15 09:00 | Некрасов А; Труфанов А | 8h | 8h |
| 636 | 1.305.4 | составить схему, расчет |  | 2h | 2026-03-13 09:00 A | 2026-03-13 11:00 A |  | 100% |  |  | start no earlier than 2026-03-13 09:00 | Домоводов К | 2h | 2h |
| 637 | 1.305.5 | монтаж вентиляторов |  | 4h | 2026-05-12 09:00 | 2026-05-12 13:00 |  |  |  | 222.09d | start no earlier than 2026-05-12 08:00 | оплот | 4h |  |
| 638 | 1.306 | **заменаить фитинги на жирах** |  | 44.12d | 2026-02-19 09:00 A | 2026-04-22 10:00 A |  | 100% |  |  |  |  | 81.5h | 81.5h |
| 639 | 1.306.1 | заявка |  | 30min | 2026-02-19 09:00 A | 2026-02-19 09:30 A |  | 100% |  |  | start no earlier than 2026-02-19 09:00 | Шуранов Ю | 0.5h | 0.5h |
| 640 | 1.306.2 | доставка |  | 10d | 2026-02-19 09:30 A | 2026-03-05 09:30 A | 639 | 100% |  |  |  | Карабанов | 80h | 80h |
| 641 | 1.306.3 | контроль поставки | milestone | 0d | 2026-03-12 08:00 A | 2026-03-12 08:00 A | 640 | 100% |  |  | start no earlier than 2026-03-12 08:00 | Шуранов Ю |  |  |
| 642 | 1.306.4 | контроль. Пришли опять не те | milestone | 0min | 2026-03-12 09:00 A | 2026-03-12 09:00 A | 640, 641 | 100% |  |  | start no earlier than 2026-03-12 09:00 | Зорькин В |  |  |
| 643 | 1.306.5 | контроль | milestone | 0d | 2026-04-01 09:00 A | 2026-04-01 09:00 A |  | 100% |  |  | start no earlier than 2026-04-01 09:00 | Зорькин В |  |  |
| 644 | 1.306.6 | замена |  | 1h | 2026-04-22 09:00 A | 2026-04-22 10:00 A | 642FS+2d | 100% |  |  | start no earlier than 2026-04-22 09:00 | Бобренок В | 1h | 1h |
| 645 | 1.307 | **жиротопка замена воздухоотводчиков** |  | 24.12d | 2026-03-04 09:00 A | 2026-04-07 10:00 A |  | 100% |  |  |  |  | 41.25h | 41.25h |
| 646 | 1.307.1 | заявка |  | 15min | 2026-03-04 09:00 A | 2026-03-04 09:15 A |  | 100% |  |  | start no earlier than 2026-03-04 09:00 | Зорькин В | 0.25h | 0.25h |
| 647 | 1.307.2 | доставка |  | 5d | 2026-03-04 09:15 A | 2026-03-11 09:15 A | 646 | 100% |  |  | start no earlier than 2026-02-27 08:00 | Карабанов | 40h | 40h |
| 648 | 1.307.3 | замена |  | 1h | 2026-04-07 09:00 A | 2026-04-07 10:00 A | 647 | 100% |  |  | start no earlier than 2026-04-07 09:00 | Бундин В | 1h | 1h |
| 649 | 1.308 | **увеличить освещение в зоне квадропака** |  | 11.12d | 2026-03-04 09:00 A | 2026-03-19 10:00 A |  | 100% |  |  |  |  | 83.5h | 83.5h |
| 650 | 1.308.1 | составить список мматериал для монтажа |  | 30min | 2026-03-04 09:00 A | 2026-03-04 09:30 A |  | 100% |  |  | start no earlier than 2026-03-04 09:00 | Зорькин В; Шуранов Ю | 1h | 1h |
| 651 | 1.308.2 | заявка трос, светильники |  | 30min | 2026-03-04 09:30 A | 2026-03-04 10:00 A | 650 | 100% |  |  | start no earlier than 2026-02-27 08:00 | Шуранов Ю | 0.5h | 0.5h |
| 652 | 1.308.3 | доставка |  | 10d | 2026-03-05 10:00 A | 2026-03-19 10:00 A | 651FS+1d | 100% |  |  | start no earlier than 2026-02-27 08:00 | Карабанов | 80h | 80h |
| 653 | 1.308.4 | монтаж |  | 2h | 2026-03-06 09:00 A | 2026-03-06 11:00 A |  | 100% |  |  | start no earlier than 2026-03-06 09:00 | Бобренок В | 2h | 2h |
| 654 | 1.309 | **установить орг стекло/нерж на обратный ход ленты на раму конвейера** |  | 38.25d | 2026-03-03 09:00 A | 2026-04-24 11:00 A |  | 100% |  |  |  |  | 83.5h | 83.5h |
| 655 | 1.309.1 | заявка нерж |  | 30min | 2026-03-03 09:00 A | 2026-03-03 09:30 A |  | 100% |  |  | start no earlier than 2026-03-03 09:00 | Зорькин В | 0.5h | 0.5h |
| 656 | 1.309.2 | доставка |  | 10d | 2026-03-03 09:30 A | 2026-03-17 09:30 A | 655 | 100% |  |  | start no earlier than 2026-03-02 09:00 | Карабанов | 80h | 80h |
| 657 | 1.309.3 | подготовка материала в размер по аналогии 2 линии |  | 1h | 2026-04-15 09:00 A | 2026-04-15 10:00 A | 656 | 100% |  |  | start no earlier than 2026-04-15 09:00 | Бундин В | 1h | 1h |
| 658 | 1.309.4 | установка на остановке 1 линии (переустановить) |  | 2h | 2026-04-24 09:00 A | 2026-04-24 11:00 A |  | 100% |  |  | start no earlier than 2026-04-24 09:00 | Бобренок В | 2h | 2h |

| ID | WBS | Task | Duration | Start | Finish | Predecessors | Complete | Constraint | Resources | Work | Actual work |
| --- | --- | --- | --- | --- | --- | --- | --- | --- | --- | --- | --- |
| 659 | 1.310 | **установить роутер в зону экструдера для регистрации данных** | 2.12d | 2026-03-02 09:00 A | 2026-03-04 10:00 A |  | 100% |  |  | 10.17h | 10.17h |
| 660 | 1.310.1 | монтаж кабель / розетка, роутер | 4h | 2026-03-02 09:00 A | 2026-03-02 13:00 A |  | 100% | start no earlier than 2026-03-02 09:00 | Некрасов А; Труфанов А | 8h | 8h |
| 661 | 1.310.2 | Монтаж розетки для роутера | 1h | 2026-03-03 09:00 A | 2026-03-03 10:00 A |  | 100% | start no earlier than 2026-03-03 09:00 | Тимофеев В | 1h | 1h |
| 662 | 1.310.3 | Заявка Айтишнику на монтаж наконечников | 10min | 2026-03-03 09:00 A | 2026-03-03 09:10 A |  | 100% | start no earlier than 2026-03-03 09:00 | Зорькин В | 0.17h | 0.17h |
| 663 | 1.310.4 | Монтаж штекеров на кабель | 1h | 2026-03-04 09:00 A | 2026-03-04 10:00 A |  | 100% | start no earlier than 2026-03-04 09:00 | Коленкоров | 1h | 1h |
| 664 | 1.311 | **ремонт приточной вентиляции** | 47.25d | 2026-02-26 09:00 A | 2026-05-04 11:00 A |  | 100% |  |  | 334.5h | 334.5h |
| 665 | 1.311.1 | заявка калорифер | 30min | 2026-03-04 09:00 A | 2026-03-04 09:30 A |  | 100% | start no earlier than 2026-03-04 09:00 | Зорькин В | 0.5h | 0.5h |
| 666 | 1.311.2 | доставка | 10d | 2026-03-04 09:30 A | 2026-03-20 09:30 A | 665 | 100% |  | Карабанов | 80h | 80h |
| 667 | 1.311.3 | замена калорифер | 4h | 2026-03-11 09:00 A | 2026-03-11 13:00 A |  | 100% | start no earlier than 2026-03-11 09:00 | Некрасов А; Труфанов А | 8h | 8h |
| 668 | 1.311.4 | дать фото насоса | 20min | 2026-02-26 09:00 A | 2026-02-26 09:20 A |  | 100% | start no earlier than 2026-02-26 08:00 | Бундин В | 0.33h | 0.33h |
| 669 | 1.311.5 | заявка насос вода | 30min | 2026-03-02 09:30 A | 2026-03-02 10:00 A | 665, 668 | 100% | start no earlier than 2026-02-26 08:00 | Зорькин В | 0.5h | 0.5h |
| 670 | 1.311.6 | доставка | 10d | 2026-03-02 10:00 A | 2026-03-16 10:00 A | 669 | 100% | start no earlier than 2026-02-26 08:00 | Карабанов | 80h | 80h |
| 671 | 1.311.7 | контроль доставки насос и заслонка | 10min | 2026-03-24 09:00 A | 2026-03-24 09:10 A |  | 100% | start no earlier than 2026-03-24 08:00 | Зорькин В | 0.17h | 0.17h |
| 672 | 1.311.8 | замена насоса | 1h | 2026-03-25 09:10 A | 2026-03-25 10:10 A | 671FS+1d | 100% | start no earlier than 2026-03-24 09:00 | Труфанов А | 1h | 1h |
| 673 | 1.311.9 | заявка привод заслонки | 30min | 2026-03-04 09:00 A | 2026-03-04 09:30 A | 669 | 100% | start no earlier than 2026-03-04 09:00 | Зорькин В | 0.5h | 0.5h |
| 674 | 1.311.10 | доставка | 10d | 2026-03-04 09:30 A | 2026-03-18 09:30 A | 673 | 100% | start no earlier than 2026-02-26 08:00 | Карабанов | 80h | 80h |
| 675 | 1.311.11 | замена привода заслонки | 1h | 2026-05-04 09:00 A | 2026-05-04 10:00 A | 671FS+1d | 100% | start no earlier than 2026-05-04 09:00 | Бобренок В | 1h | 1h |
| 676 | 1.311.12 | заявка фильтры на приточная вентиляция | 30min | 2026-03-04 09:00 A | 2026-03-04 09:30 A |  | 100% | start no earlier than 2026-03-04 09:00 | Зорькин В | 0.5h | 0.5h |
| 677 | 1.311.13 | доставка | 10d | 2026-03-04 09:30 A | 2026-03-18 09:30 A | 676 | 100% | start no earlier than 2026-02-27 08:00 | Карабанов | 80h | 80h |
| 678 | 1.311.14 | замена | 2h | 2026-05-04 09:00 A | 2026-05-04 11:00 A | 677 | 100% | start no earlier than 2026-05-04 09:00 | Некрасов А | 2h | 2h |
| 679 | 1.312 | **монтаж регистратор данных линия 1 и 2:** | 1.12d | 2026-02-24 09:00 A | 2026-02-25 10:00 A |  | 100% |  |  | 5h | 5h |
| 680 | 1.312.1 | установить розетку и автомат для для блока питания в ШУ экструдера, без подключения | 2h | 2026-02-24 09:00 A | 2026-02-24 11:00 A |  | 100% | start no earlier than 2026-02-24 09:00 | Дедов В | 2h | 2h |
| 681 | 1.312.2 | монтаж безподключения кабель RS485 по аналогии с линия 3 - только часотный привод. На складе. | 1h | 2026-02-24 09:00 A | 2026-02-24 10:00 A |  | 100% | start no earlier than 2026-02-24 09:00 | Дедов В | 1h | 1h |
| 682 | 1.312.3 | подключение розеток для блока питания в ШУ | 1h | 2026-02-25 09:00 A | 2026-02-25 10:00 A |  | 100% | start no earlier than 2026-02-25 09:00 | Некрасов А | 1h | 1h |
| 683 | 1.312.4 | монтаж пультов управления и индикации регистратор, по аналогии с линия 3 | 1h | 2026-02-25 09:00 A | 2026-02-25 10:00 A |  | 100% | start no earlier than 2026-02-25 09:00 | Некрасов А | 1h | 1h |
| 684 | 1.313 | заменить пластик втулку на металл деталь уплотнение вала прекондицинера 2 линия | 1d? | 2025-09-08 09:00 A | 2025-09-08 18:00 A |  | 100% | start no earlier than 2025-09-08 09:00 |  |  |  |

| ID | WBS | Task | Duration | Start | Finish | Predecessors | Complete | Actual finish | Total slack | Constraint | Resources | Work | Actual work |
| --- | --- | --- | --- | --- | --- | --- | --- | --- | --- | --- | --- | --- | --- |
| 685 | 1.314 | **баки жир 2 линия устноавить наконечники. От 23.05.25** | 265.25d | 2025-04-16 09:00 A | 2026-04-22 11:00 A |  | 100% |  |  |  |  | 42.5h | 42.5h |
| 686 | 1.314.1 | заявка на наконечнки | 30min | 2025-04-16 09:00 A | 2025-04-16 09:30 A |  | 100% |  |  | start no earlier than 2025-04-16 09:00 | Зорькин В | 0.5h | 0.5h |
| 687 | 1.314.2 | доставка | 5d | 2025-04-16 09:30 A | 2025-04-23 09:30 A | 686 | 100% |  |  | start no earlier than 2025-04-14 09:00 | Мультан | 40h | 40h |
| 688 | 1.314.3 | ТО каблей, клемников | 2h | 2026-04-22 09:00 A | 2026-04-22 11:00 A | 687 | 100% |  |  | start no earlier than 2026-04-22 09:00 | Труфанов А | 2h | 2h |
| 689 | 1.315 | **установить фильтры на жир** | 89.12d? | 2025-05-14 09:00 A | 2025-09-16 10:00 A |  | 100% |  |  |  |  | 50h | 50h |
| 690 | 1.315.1 | изготовить переходники токарь разместить | 1h | 2025-09-08 09:00 A | 2025-09-08 10:00 A |  | 100% |  |  | start no earlier than 2025-09-08 09:00 | Зорькин В | 1h | 1h |
| 691 | 1.315.2 | контроль доставки | 5d | 2025-09-08 10:00 A | 2025-09-15 10:00 A | 690 | 100% |  |  | start no earlier than 2025-09-08 09:00 | Зорькин В | 40h | 40h |
| 692 | 1.315.3 | замена | 1d? | 2025-09-15 10:00 A | 2025-09-16 10:00 A | 691 | 100% |  |  | start no earlier than 2025-09-08 09:00 | Тимофеев В | 8h | 8h |
| 693 | 1.315.4 | установить фильтры на жир 2шт через краны на тройник | 1h | 2025-05-14 09:00 A | 2025-05-14 10:00 A |  | 100% |  |  | start no earlier than 2025-05-14 09:00 | Тимофеев В | 1h | 1h |
| 694 | 1.316 | **палетные ворота подача навесок + подача жир** | 14d? | 2025-07-17 09:00 A | 2025-08-05 18:00 A |  | 100% |  |  |  |  | 32h | 32h |
| 695 | 1.316.1 | подготовить чертеж | 1d? | 2025-07-17 09:00 A | 2025-07-17 18:00 A |  | 100% |  |  | start no earlier than 2025-07-17 09:00 | Зорькин В | 8h | 8h |
| 696 | 1.316.2 | сборка рамы | 2d | 2025-07-25 09:00 A | 2025-07-28 18:00 A | 695 | 100% |  |  | start no earlier than 2025-07-25 09:00 | Некрасов А | 16h | 16h |
| 697 | 1.316.3 | монтаж | 1d? | 2025-08-05 09:00 A | 2025-08-05 18:00 A | 696 | 100% |  |  | start no earlier than 2025-08-05 09:00 | Некрасов А | 8h | 8h |
| 698 | 1.317 | защита подшипников паронтом + подготовка | 4h | 2025-06-18 09:00 A | 2025-06-18 13:00 A |  | 100% |  |  | start no earlier than 2025-06-18 09:00 | Тимофеев В | 4h | 4h |
| 699 | 1.318 | **квадропак ТО + составить карту смазки и ТО + составить список ЗИП** | 0.5d | 2025-04-02 09:00 A | 2025-04-02 13:00 A |  | 100% |  |  |  |  | 4h | 4h |
| 700 | 1.318.1 | оформить карту ТО | 4h | 2025-04-02 09:00 A | 2025-04-02 13:00 A |  | 100% |  |  | start no earlier than 2025-04-02 09:00 | Зорькин В | 4h | 4h |
| 701 | 1.319 | **квадропак некрасивый шов - золотинка** | 104.25d | 2025-01-13 09:00 A | 2025-06-06 11:00 |  | 100% | 2025-04-17 16:30 |  |  |  | 8h | 8h |
| 702 | 1.319.1 | **изготовление термоножа с вставкойвставкой** | 0.12d | 2025-01-13 09:00 A | 2025-01-13 10:00 A |  | 100% |  |  |  |  | 1h | 1h |
| 703 | 1.319.1.1 | чертеж | 1h | 2025-01-13 09:00 A | 2025-01-13 10:00 A |  | 100% |  |  | start no earlier than 2025-01-13 09:00 | Зорькин В | 1h | 1h |
| 704 | 1.319.2 | **установка тефлона на термонож** | 42.25d | 2025-04-17 09:00 A | 2025-06-06 11:00 |  | 100% | 2025-04-17 16:30 |  |  |  | 7h | 7h |
| 705 | 1.319.2.1 | разработать метод крепления | 30min | 2025-04-17 09:00 A | 2025-04-17 09:30 A |  | 100% |  |  | start no earlier than 2025-04-17 09:00 | Зорькин В; Шуранов Ю | 1h | 1h |
| 706 | 1.319.2.2 | чертеж | 4h | 2025-04-17 09:30 A | 2025-04-17 14:30 A | 705 | 100% |  |  | start no earlier than 2025-01-17 09:00 | Зорькин В | 4h | 4h |
| 707 | 1.319.2.3 | орг изготовление деталей | 2h | 2025-04-17 14:30 A | 2025-04-17 16:30 A | 706 | 100% |  |  | start no earlier than 2025-04-16 09:00 | Шуранов Ю | 2h | 2h |
| 708 | 1.320 | **режет кабель ЛУКАС силовой в лотке эстакада у КПП** | 444.5d | 2024-08-02 09:00 | 2026-04-16 13:00 |  |  |  | 240.09d |  |  | 4.5h |  |
| 709 | 1.320.1 | решение о переговорах ГП | 30min | 2024-08-02 09:00 | 2024-08-02 09:30 |  |  |  | 684.53d | start no earlier than 2024-08-02 09:00 | Домоводов К | 0.5h |  |
| 710 | 1.320.2 | перекладка кабель | 4h | 2026-04-16 09:00 | 2026-04-16 13:00 |  |  |  | 240.09d | start no earlier than 2026-04-16 08:00 | Олег | 4h |  |

| ID | WBS | Task | Duration | Start | Finish | Predecessors | Complete | Total slack | Constraint | Resources | Work | Actual work |
| --- | --- | --- | --- | --- | --- | --- | --- | --- | --- | --- | --- | --- |
| 711 | 1.321 | **ШР2.2 замена автомат на циклон на номинальный** | 5.06d | 2026-04-10 09:00 A | 2026-04-17 09:30 A |  | 100% |  |  |  | 41.5h | 41.5h |
| 712 | 1.321.1 | прорверить какой стоит / заявка по мощности мотора | 30min | 2026-04-10 09:00 A | 2026-04-10 09:30 A |  | 100% |  | start no earlier than 2026-04-10 09:00 | Тимофеев В | 0.5h | 0.5h |
| 713 | 1.321.2 | достьавка | 5d | 2026-04-10 09:30 A | 2026-04-17 09:30 A | 712 | 100% |  | start no earlier than 2024-03-04 09:00 | Малинина М | 40h | 40h |
| 714 | 1.321.3 | замена | 1h | 2026-04-16 09:30 A | 2026-04-16 10:30 A | 713 | 100% |  | start no earlier than 2026-04-06 09:00 | Шуранов Ю | 1h | 1h |
| 715 | 1.322 | **кронштейн фотометки ТЕКО усилить** | 10.12d | 2024-09-11 09:00 A | 2024-09-25 10:00 A |  | 100% |  |  |  | 82h | 82h |
| 716 | 1.322.1 | поиск заявка кронштейна для датчика с регулировкой в3 плоскостях | 1h | 2024-09-11 09:00 A | 2024-09-11 10:00 A |  | 100% |  | start no earlier than 2024-09-11 09:00 | Зорькин В | 1h | 1h |
| 717 | 1.322.2 | доставка | 10d | 2024-09-11 10:00 A | 2024-09-25 10:00 A | 716 | 100% |  | start no earlier than 2024-09-11 09:00 | Мультан | 80h | 80h |
| 718 | 1.322.3 | замена | 1h | 2024-09-21 10:00 A | 2024-09-23 10:00 A | 717 | 100% |  | start no earlier than 2024-09-11 09:00 | Тимофеев В | 1h | 1h |
| 719 | 1.323 | **квадропак греет пневмоцилиндр термоножа** | 14.5d | 2024-09-12 09:00 A | 2024-10-02 13:00 A |  | 100% |  |  |  | 85h | 85h |
| 720 | 1.323.1 | решение о применении теплоизоляц пластины / заявка | 1h | 2024-09-12 09:00 A | 2024-09-12 10:00 A |  | 100% |  | start no earlier than 2024-09-12 09:00 | Зорькин В | 1h | 1h |
| 721 | 1.323.2 | доставка | 10d | 2024-09-12 10:00 A | 2024-09-26 10:00 A | 720 | 100% |  | start no earlier than 2024-09-11 09:00 | Мультан | 80h | 80h |
| 722 | 1.323.3 | замена | 4h | 2024-10-02 09:00 A | 2024-10-02 13:00 A | 721 | 100% |  | start no earlier than 2024-10-02 09:00 | Тимофеев В | 4h | 4h |
| 723 | 1.324 | **ремонт комппрессора - сдать по гарантии** | 739.12d | 2023-10-31 09:00 A | 2026-08-31 10:00 A |  | 100% |  |  |  | 2h | 2h |
| 724 | 1.324.1 | контроль снабжения - отправитьт поставщику | 1h | 2023-10-31 09:00 A | 2023-10-31 10:00 A |  | 100% |  | start no earlier than 2023-10-31 09:00 | Лобанов И | 1h | 1h |
| 725 | 1.324.2 | контроль возврата | 1h | 2026-08-31 09:00 A | 2026-08-31 10:00 A | 724 | 100% |  | start no earlier than 2026-08-31 09:00 | Зорькин В | 1h | 1h |
| 726 | 1.325 | **убрать кабеля с пола на упаковке 1 цех** | 0.02d | 2026-09-01 09:00 | 2026-09-01 09:10 |  |  | 142.57d |  |  | 0.17h |  |
| 727 | 1.325.1 | проверить на актуальность | 10min | 2026-09-01 09:00 | 2026-09-01 09:10 |  |  | 142.57d | start no earlier than 2026-09-01 09:00 | Зорькин В | 0.17h |  |
| 728 | 1.326 | режет металлом изоляцию кабеля в прорходе стены в 1 цех угол комппрессора - обезвредить | 1h | 2023-12-28 09:00 A | 2023-12-28 10:00 A |  | 100% |  | start no earlier than 2023-12-28 09:00 | Бобренок В; Дедов В | 2h | 2h |
| 729 | 1.327 | **убрать кабеля с пола и заменить переноски штатными розетками - участок жира 1 цех** | 0.01d | 2026-09-01 09:00 | 2026-09-01 09:05 |  |  | 142.58d |  |  | 0.08h |  |
| 730 | 1.327.1 | проверить на актуальность | 5min | 2026-09-01 09:00 | 2026-09-01 09:05 |  |  | 142.58d | start no earlier than 2026-09-01 09:00 | Зорькин В | 0.08h |  |
| 731 | 1.328 | изготовить ключь для ТП | 2h | 2023-06-21 09:00 A | 2023-06-21 11:00 A |  | 100% |  | start no earlier than 2023-06-21 09:00 | Домоводов К | 2h | 2h |
| 732 | 1.329 | заменитьт автомат 63С кондиционер 1 цех | 1h | 2023-06-22 09:00 A | 2023-06-22 10:00 A |  | 100% |  | start no earlier than 2023-06-22 09:00 | Тимофеев В | 1h | 1h |
| 733 | 1.330 | **Барабаны 2 линия дражжировка** | 18d | 2026-04-21 09:00 A | 2026-05-14 18:00 A |  | 100% |  |  |  | 94.5h | 94.5h |
| 734 | 1.330.1 | Проработать модернизацию форсунок | 3h | 2026-04-22 09:00 A | 2026-04-22 12:00 A |  | 100% |  | start no earlier than 2026-04-22 09:00 | Зорькин В; Домоводов К | 6h | 6h |
| 735 | 1.330.2 | сделать заявку на доп форсунки, расходники | 30min | 2026-04-22 09:00 A | 2026-04-22 09:30 A |  | 100% |  | start no earlier than 2026-04-22 09:00 | Зорькин В | 0.5h | 0.5h |
| 736 | 1.330.3 | доставка | 10d | 2026-04-30 09:00 A | 2026-05-14 18:00 A |  | 100% |  | start no earlier than 2026-04-30 09:00 | Карабанов | 80h | 80h |
| 737 | 1.330.4 | Внедрение и монтаж | 2h | 2026-05-08 09:00 A | 2026-05-08 11:00 A |  | 100% |  | start no earlier than 2026-05-08 09:00 | Зорькин В; Тимофеев В | 4h | 4h |

| ID | WBS | Task | Type | Duration | Start | Finish | Predecessors | Complete | Remaining | Actual start | Actual finish | Total slack | Constraint | Resources | Work | Actual work |
| --- | --- | --- | --- | --- | --- | --- | --- | --- | --- | --- | --- | --- | --- | --- | --- | --- |
| 738 | 1.330.5 | **Парогенератор** |  | 0.25d | 2026-04-21 09:00 A | 2026-04-21 11:00 A |  | 100% |  |  |  |  |  |  | 4h | 4h |
| 739 | 1.330.5.1 | Проверить термадатчик (панельтемпературы) TC4R на корректность работы, скачет температура, по необходимости заменить |  | 2h | 2026-04-21 09:00 A | 2026-04-21 11:00 A |  | 100% |  |  |  |  | start no earlier than 2026-04-21 08:00 | Бундин В; Зорькин В | 4h | 4h |
| 740 | 1.331 | **Звонок на экструдер** |  | 14.12d | 2026-04-07 09:00 A | 2026-04-27 10:00 A |  | 100% |  |  |  |  |  |  | 6h | 6h |
| 741 | 1.331.1 | Протяжка кабеля от ворот к экструдерщикам |  | 4h | 2026-04-07 09:00 A | 2026-04-07 13:00 A |  | 100% |  |  |  |  | start no earlier than 2026-04-22 09:00 | Дедов В | 4h | 4h |
| 742 | 1.331.2 | монтаж звонка |  | 1h | 2026-04-25 09:00 A | 2026-04-27 10:00 A | 741 | 100% |  |  |  |  | start no earlier than 2026-04-25 09:00 | Дедов В | 1h | 1h |
| 743 | 1.331.3 | монтаж кнопки за воротами |  | 1h | 2026-04-25 10:00 A | 2026-04-27 10:00 A | 742 | 100% |  |  |  |  | start no earlier than 2026-04-21 08:00 | Дедов В | 1h | 1h |
| 744 | 1.332 | **Насос гидролизата** |  | 28.01d | 2026-08-04 09:00 A | 2026-09-10 09:05 |  | 80% | 5.6d |  |  | 134.58d |  |  | 0.42h | 0.33h |
| 745 | 1.332.1 | Заказать ремкомплект шнек, резинка, трубка, связаться с производителем |  | 20min | 2026-08-04 09:00 A | 2026-08-04 09:20 A |  | 100% |  |  |  |  | start no earlier than 2026-08-04 09:00 | Зорькин В | 0.33h | 0.33h |
| 746 | 1.332.2 | Доставка контроль сам насос шетсрен |  | 5min | 2026-09-10 09:00 | 2026-09-10 09:05 |  |  |  |  |  | 134.58d | start no earlier than 2026-09-10 09:00 | Зорькин В | 0.08h |  |
| 747 | 1.333 | **Дражжировка конвейер №1 после печки** |  | 121.12d | 2026-04-22 08:00 A | 2026-09-30 10:00 |  | 92% | 9.26d |  |  | 115.47d |  |  | 13.08h | 12.08h |
| 748 | 1.333.1 | Поставить резьбовые клепки на боковой кожух, где кончается лента |  | 1h | 2026-09-30 09:00 | 2026-09-30 10:00 |  |  |  |  |  | 115.47d | start no earlier than 2026-09-30 09:00 | Тимофеев В | 1h |  |
| 749 | 1.333.2 | Ремонт насоса от 2 линии 1 цех, статор взять на складе |  | 2h | 2026-09-10 09:00 A | 2026-09-10 11:00 A |  | 100% |  |  |  |  | start no earlier than 2026-09-10 09:00 | Некрасов А | 2h | 2h |
| 750 | 1.333.3 | контроль героторная пара оплата |  | 5min | 2026-08-21 09:00 A | 2026-08-21 09:05 A |  | 100% |  |  |  |  | start no earlier than 2026-08-21 09:00 | Зорькин В | 0.08h | 0.08h |
| 751 | 1.333.4 | Замена сальника на поворотном столе/проверить |  | 1h | 2026-07-23 09:00 A | 2026-07-23 10:00 A |  | 100% |  |  |  |  | start no earlier than 2026-07-23 08:00 | Бундин В | 1h | 1h |
| 752 | 1.333.5 | **дражжировка** |  | 0.62d | 2026-04-22 08:00 A | 2026-04-22 15:00 A |  | 100% |  |  |  |  |  |  | 9h | 9h |
| 753 | 1.333.5.1 | Установка рамы для фильтров |  | 3h | 2026-04-22 08:00 A | 2026-04-22 12:00 A |  | 100% |  |  |  |  | start no earlier than 2026-04-22 08:00 | Тимофеев В | 3h | 3h |
| 754 | 1.333.5.2 | установка счетчика |  | 1h | 2026-04-22 11:00 A | 2026-04-22 12:00 A | 753 | 100% |  |  |  |  | start no earlier than 2026-04-22 08:00 | Тимофеев В | 1h | 1h |
| 755 | 1.333.5.3 | кронштейн под пульт расходомера |  | 2h | 2026-04-22 12:00 A | 2026-04-22 15:00 A | 754 | 100% |  |  |  |  | start no earlier than 2026-04-22 08:00 | Тимофеев В | 2h | 2h |
| 756 | 1.333.5.4 | **Парогенератор** |  | 0.38d | 2026-04-22 09:00 A | 2026-04-22 12:00 A |  | 100% |  |  |  |  |  |  | 3h | 3h |
| 757 | 1.333.5.4.1 | чистка парогенераторов 1 и 2 линия |  | 3h | 2026-04-22 09:00 A | 2026-04-22 12:00 A |  | 100% |  |  |  |  | start no earlier than 2026-04-22 08:00 | Бундин В | 3h | 3h |
| 758 | 1.334 | **отмена** |  | 70.75d? | 2026-04-22 09:00 | 2026-07-29 16:00 A |  | 100% |  | 2026-07-08 09:00 |  |  |  |  | 12.33h | 12.33h |
| 759 | 1.334.1 | **Парогенератор** |  | 27.5d? | 2026-04-22 09:00 | 2026-05-25 13:00 |  | 100% |  | 2026-07-08 09:00 | 2026-07-29 16:00 |  |  |  | 12.33h | 12.33h |
| 760 | 1.334.1.1 | Замена говротрубы 1 линия |  | 1h | 2026-07-08 09:00 A | 2026-07-08 10:00 A |  | 100% |  |  |  |  | start no earlier than 2026-07-08 09:00 | Бобренок В | 1h | 1h |
| 761 | 1.334.1.2 | Осмотр стоек где стоит реле давления до расширительного бачка |  | 30min | 2026-07-27 09:00 A | 2026-07-27 09:30 A |  | 100% |  |  |  |  | start no earlier than 2026-07-27 09:00 | Тимофеев В | 0.5h | 0.5h |
| 762 | 1.334.1.3 | Составить список материала для ремонта и изготовления стоек |  | 30min | 2026-07-27 09:30 A | 2026-07-27 10:00 A | 761 | 100% |  |  |  |  | start no earlier than 2026-05-27 09:00 | Тимофеев В | 0.5h | 0.5h |
| 763 | 1.334.1.4 | Заказать недостающий материал |  | 20min | 2026-07-27 09:00 A | 2026-07-27 09:20 A |  | 100% |  |  |  |  | start no earlier than 2026-07-27 09:00 | Зорькин В | 0.33h | 0.33h |
| 764 | 1.334.1.5 | Изготовление стоек |  | 3h | 2026-07-29 09:00 A | 2026-07-29 12:00 A | 762 | 100% |  |  |  |  | start no earlier than 2026-07-29 09:00 | Некрасов А | 3h | 3h |
| 765 | 1.334.1.6 | Замена стойки под реле давления |  | 3h | 2026-07-29 12:00 A | 2026-07-29 16:00 A | 764 | 100% |  |  |  |  | start no earlier than 2026-05-27 09:00 | Некрасов А | 3h | 3h |
| 766 | 1.334.1.7 | Составить список материалов или заключение по 2-м частотникам из 1 цеха от теко 0,4 (поворотный стол и конвейер) |  | 1h | 2026-07-27 08:00 A | 2026-07-27 10:00 A |  | 100% |  |  |  |  | start no earlier than 2026-07-27 08:00 | Дедов В | 1h | 1h |
| 767 | 1.334.1.8 | Взять трубку в нашем кабинете и насверлить по всей длине симметрично отверстия самым маленьким сверлом которое у нас есть (по этому заданию позвонить) |  | 3h | 2026-07-28 08:00 A | 2026-07-28 12:00 A |  | 100% |  |  |  |  | start no earlier than 2026-07-28 08:00 | Макаревич А | 3h | 3h |
| 768 | 1.335 | Демонтаж разборка/сборка редукторы шлюз. Питателей циклона 1 и 2 линия | manual | 3h | 2026-04-24 09:00 A | 2026-04-24 12:00 A |  | 100% |  |  |  |  | start no earlier than 2026-04-24 09:00 | Бундин В | 3h | 3h |

| ID | WBS | Task | Type | Duration | Start | Finish | Predecessors | Complete | Remaining | Actual start | Total slack | Free slack | Constraint | Resources | Work | Actual work |
| --- | --- | --- | --- | --- | --- | --- | --- | --- | --- | --- | --- | --- | --- | --- | --- | --- |
| 769 | 1.336 | **Теко 0,4** |  | 0.38d | 2026-04-03 09:00 A | 2026-04-03 12:00 A |  | 100% |  |  |  |  |  |  | 3h | 3h |
| 770 | 1.336.1 | замена ковшей | manual | 3h | 2026-04-03 09:00 A | 2026-04-03 12:00 A |  | 100% |  |  |  |  | start no earlier than 2026-04-03 09:00 | Макаревич А | 3h | 3h |
| 771 | 2 | **2 цех** |  | 249d? | 2023-11-16 09:00 | 2024-10-29 18:00 |  | 89% | 27.58d? | 2024-01-08 09:00 |  |  |  |  | 2886.42h | 2580.25h |
| 772 | 2.1 | подготовить сменную трубку для подачи жира, насверлить резьбу, отверстия |  | 2h | 2026-09-25 09:00 | 2026-09-25 11:00 |  |  |  |  | 119.34d |  | start no earlier than 2026-09-25 09:00 | Тимофеев В | 2h |  |
| 773 | 2.2 | кран на жирах нет стопора - вращение на 360 устранить, найти этот кран. |  | 30min | 2026-09-24 09:00 | 2026-09-24 09:30 |  |  |  |  | 120.53d |  | start no earlier than 2026-09-24 09:00 | Тимофеев В | 0.5h |  |
| 774 | 2.3 | Проверить весы на смесителе прыгают в диапазаоне 40кг |  | 1h | 2026-09-23 09:00 | 2026-09-23 10:00 |  |  |  |  | 121.47d |  | start no earlier than 2026-09-23 09:00 | Дедов В | 1h |  |
| 775 | 2.4 | **лаборатория** |  | 0.12d | 2026-09-22 09:00 A | 2026-09-22 10:00 A |  | 100% |  |  |  |  |  |  | 1.5h | 1.5h |
| 776 | 2.4.1 | Перегорел тэн на дигистре |  | 30min | 2026-09-22 09:00 A | 2026-09-22 09:30 A |  | 100% |  |  |  |  | start no earlier than 2026-09-22 09:00 | Тимофеев В | 0.5h | 0.5h |
| 777 | 2.4.2 | Поставить колбу в лаборотории на бульбуляторе, колба в лаборатории |  | 1h | 2026-09-22 09:00 A | 2026-09-22 10:00 A |  | 100% |  |  |  |  | start no earlier than 2026-09-22 09:00 | Тимофеев В | 1h | 1h |
| 778 | 2.5 | Сделать ручки и щеколду для мусорки на улице |  | 1h | 2026-09-25 09:00 | 2026-09-25 10:00 |  |  |  |  | 119.47d |  | start no earlier than 2026-09-25 09:00 | Некрасов А | 1h |  |
| 779 | 2.6 | установить трубку жир ф12 - нарезать резьбу под фитинг / сверлить под "струйки" |  | 2h | 2026-09-24 09:00 | 2026-09-24 11:00 |  |  |  |  | 120.34d |  | start no earlier than 2026-09-24 09:00 | Тимофеев В | 2h |  |
| 780 | 2.7 | **система сброса муки с прекондиционера в мешки** |  | 2d? | 2026-09-18 09:00 A | 2026-09-19 18:00 A |  | 100% |  |  |  |  |  |  | 11h | 11h |
| 781 | 2.7.1 | Продумать варианты предложить, согласовать с Домоводовым и смонтировать, чтоб можно было вешать мешок на экструдере, под рассекатель потока муки выходящий из прекондиционера, который сделал Макаревич |  | 3h | 2026-09-18 09:00 A | 2026-09-18 12:00 A |  | 100% |  |  |  |  | start no earlier than 2026-09-18 09:00 | Бобренок В | 3h | 3h |
| 782 | 2.7.2 | изготовление тележки с креплением для 2х мешков. Покрасить |  | 1d? | 2026-09-19 09:00 A | 2026-09-19 18:00 A |  | 100% |  |  |  |  | start no earlier than 2026-09-19 09:00 | Бобренок В | 8h | 8h |
| 783 | 2.8 | Промывка дистилятора в лаборатории |  | 3h | 2026-09-18 09:00 A | 2026-09-18 12:00 A |  | 100% |  |  |  |  | start no earlier than 2026-09-18 09:00 | Бобренок В | 3h | 3h |
| 784 | 2.9 | Изготовить стопор для пленки на бестром (Обратиться к пацанам на фасовке или к мастеру, должны подсказать) |  | 2h | 2026-09-16 09:00 A | 2026-09-16 11:00 A |  | 100% |  |  |  |  | start no earlier than 2026-09-16 08:00 | Бундин В | 2h | 2h |
| 785 | 2.10 | ремонт лампа бактерициодная (это не инсекюьтер) на ГП (не горит табло). Ревизия. |  | 2h | 2026-09-13 09:00 A | 2026-09-13 11:00 A |  | 100% |  |  |  |  | start no earlier than 2026-09-13 09:00 | Дедов В | 2h | 2h |
| 786 | 2.11 | ремонт ворот ГП слетели тросы |  | 2h | 2026-09-11 09:00 A | 2026-09-11 11:00 A |  | 100% |  |  |  |  | start no earlier than 2026-09-11 08:00 | Бобренок В | 2h | 2h |
| 787 | 2.12 | ремонт светильник корридор у отк |  | 1h | 2026-09-14 09:00 A | 2026-09-14 10:00 A |  | 100% |  |  |  |  | start no earlier than 2026-09-14 09:00 | Макаревич А | 1h | 1h |
| 788 | 2.13 | замена квадрат ручка дверь экструдер |  | 1h | 2026-09-14 09:00 A | 2026-09-14 10:00 A |  | 100% |  |  |  |  | start no earlier than 2026-09-14 09:00 | Макаревич А | 1h | 1h |
| 789 | 2.14 | **ревизия сливной шланг моечная машинка** |  | 12.28d | 2026-09-14 09:00 A | 2026-09-26 11:15 |  | 36% | 7.89d |  | 118.31d |  |  |  | 3.5h | 1.25h |
| 790 | 2.14.1 | ревизия / удлинить |  | 1h | 2026-09-14 09:00 A | 2026-09-14 10:00 A |  | 100% |  |  |  |  | start no earlier than 2026-09-14 09:00 | Тимофеев В | 1h | 1h |
| 791 | 2.14.2 | заявка |  | 15min | 2026-09-18 09:00 A | 2026-09-18 09:15 A |  | 100% |  |  |  |  | start no earlier than 2026-09-18 09:00 | Зорькин В | 0.25h | 0.25h |
| 792 | 2.14.3 | контроль доставки |  | 15min | 2026-09-25 09:00 | 2026-09-25 09:15 | 791FS+5d |  |  |  | 118.31d | 0d | start no earlier than 2026-09-25 09:00 | Зорькин В | 0.25h |  |
| 793 | 2.14.4 | монтаж |  | 2h | 2026-09-26 09:15 | 2026-09-26 11:15 | 792FS+1d |  |  |  | 118.31d |  | start no earlier than 2026-09-10 08:00 | Тимофеев В | 2h |  |
| 794 | 2.15 | Проверка системы под давлением, при необходимости заменить шланги на пневматические?? |  | 1h | 2026-09-21 09:00 A | 2026-09-21 10:00 A |  | 100% |  |  |  |  | start no earlier than 2026-09-22 09:00 | Тимофеев В | 1h | 1h |
| 795 | 2.16 | Установить трубку на жирах, которую сделал викторович |  | 30min | 2026-09-09 09:00 A | 2026-09-09 09:30 A |  | 100% |  |  |  |  | start no earlier than 2026-09-09 08:00 | Тимофеев В | 0.5h | 0.5h |

| ID | WBS | Task | Type | Duration | Start | Finish | Predecessors | Complete | Remaining | Total slack | Constraint | Resources | Work | Actual work |
| --- | --- | --- | --- | --- | --- | --- | --- | --- | --- | --- | --- | --- | --- | --- |
| 796 | 2.17 | **реверс теплоносителя в приточном калорифере** |  | 29.25d | 2026-08-24 09:00 A | 2026-09-25 11:00 |  | 20% | 23.4d | 119.34d |  |  | 2.5h | 0.5h |
| 797 | 2.17.1 | заявка |  | 15min | 2026-08-24 09:00 A | 2026-08-24 09:15 A |  | 100% |  |  | start no earlier than 2026-08-24 09:00 | Зорькин В | 0.25h | 0.25h |
| 798 | 2.17.2 | контроль доставки |  | 15min | 2026-09-14 09:05 A | 2026-09-14 09:20 A | 1010FS+5d | 100% |  |  | start no earlier than 2026-09-09 09:00 | Зорькин В | 0.25h | 0.25h |
| 799 | 2.17.3 | монтаж |  | 2h | 2026-09-25 09:00 | 2026-09-25 11:00 | 1011FS+1d |  |  | 119.34d | start no earlier than 2026-09-25 09:00 | Бундин В | 2h |  |
| 800 | 2.18 | востановить потерю токов в печи / ревизия . Замена тенов |  | 4h | 2026-09-09 09:00 A | 2026-09-09 13:00 A |  | 100% |  |  | start no earlier than 2026-09-09 09:00 | Бобренок В | 4h | 4h |
| 801 | 2.19 | Смазка подшипников привода охладителя | manual | 1h | 2026-09-09 09:00 A | 2026-09-09 10:00 A |  | 100% |  |  |  | Бобренок В | 1h | 1h |
| 802 | 2.20 | Обрезать пенку пвх на двери в охладителе ,сделать ее ровной |  | 1h | 2026-09-07 09:00 A | 2026-09-07 10:00 A |  | 100% |  |  | start no earlier than 2026-09-05 09:00 | Макаревич А | 1h | 1h |
| 803 | 2.21 | Переборка парогенератора, поиск неисправности (подключили перемычку между реле времени) |  | 4h | 2026-09-02 09:00 A | 2026-09-02 13:00 A |  | 100% |  |  | start no earlier than 2026-09-02 09:00 | Бобренок В | 4h | 4h |
| 804 | 2.22 | **Подготовить электрическую часть для подключения второго насоса без частотника (продолжаем эту задачу)** |  | 13.25d | 2026-09-03 09:00 A | 2026-09-17 11:00 A |  | 100% |  |  |  |  | 4.17h | 4.17h |
| 805 | 2.22.1 | установить на линию доп насос (резервный) |  | 1h | 2026-09-10 09:00 A | 2026-09-10 10:00 A |  | 100% |  |  | start no earlier than 2026-09-10 09:00 | Тимофеев В | 1h | 1h |
| 806 | 2.22.2 | монтаж |  | 1h | 2026-09-09 09:00 A | 2026-09-09 10:00 A |  | 100% |  |  | start no earlier than 2026-09-09 09:00 | Тимофеев В | 1h | 1h |
| 807 | 2.22.3 | Переместить розетки со стола, смонтировать площадку к раме и закрепить на эту раму |  | 2h | 2026-09-17 09:00 A | 2026-09-17 11:00 A |  | 100% |  |  | start no earlier than 2026-09-17 09:00 | Тимофеев В | 2h | 2h |
| 808 | 2.22.4 | Подумать место установки автомата |  | 10min | 2026-09-03 09:00 A | 2026-09-03 09:10 A |  | 100% |  |  | start no earlier than 2026-09-03 09:00 | Тимофеев В | 0.17h | 0.17h |
| 809 | 2.23 | Ремонт парогенератора, замена реле давления + отвалился контакт + замена мембраны |  | 1h | 2026-09-02 09:00 A | 2026-09-02 10:00 A |  | 100% |  |  | start no earlier than 2026-09-02 08:00 | Труфанов А | 1h | 1h |
| 810 | 2.24 | Замена редуктора на печи |  | 2h | 2026-09-01 09:00 A | 2026-09-01 11:00 A |  | 100% |  |  | start no earlier than 2026-09-01 09:00 | Бундин В | 2h | 2h |
| 811 | 2.25 | проверка котлов на приточку (замена клапана и тена на большую мощность) | manual | 2h | 2026-09-07 09:00 A | 2026-09-07 11:00 A |  | 100% |  |  | start no earlier than 2026-09-07 09:00 | Дедов В | 2h | 2h |
| 812 | 2.26 | проверка всех котлов на отопление по цеху | manual | 4h | 2026-08-30 09:00 A | 2026-08-30 13:00 A |  | 100% |  |  | start no earlier than 2026-08-30 09:00 | Дедов В | 4h | 4h |
| 813 | 2.27 | закрепить коробку двери снизу (возле ШУ приточка 2 этаж) |  | 2h | 2026-08-28 09:00 A | 2026-08-28 11:00 A |  | 100% |  |  | start no earlier than 2026-08-28 09:00 | Макаревич А | 2h | 2h |
| 814 | 2.28 | **заменить фильтры на воду в цехе (проверить мембрану на гидроаккумуляторе)** |  | 1d? | 2026-08-28 09:00 A | 2026-08-28 18:00 A |  | 100% |  |  |  | Бобренок В | 16h | 16h |
| 815 | 2.28.1 | заказать фильтры |  | 1d? | 2026-08-28 09:00 A | 2026-08-28 18:00 A |  | 100% |  |  | start no earlier than 2026-08-28 09:00 | Шуранов Ю | 8h | 8h |
| 816 | 2.29 | монтаж и подключение розетки для кондиционера в кабинет ОТК |  | 2h | 2026-08-26 08:00 A | 2026-08-26 11:00 A |  | 100% |  |  | start no earlier than 2026-08-26 08:00 | Бобренок В | 2h | 2h |
| 817 | 2.30 | сливной шланг от кондиционеров наш кабинет и Шелепова спрятать в кабель канал 30х25 (он на складе) |  | 2h | 2026-08-26 08:00 A | 2026-08-26 11:00 A |  | 100% |  |  | start no earlier than 2026-08-26 08:00 | Бобренок В | 2h | 2h |
| 818 | 2.31 | сливной шланг от кондиционеров кабинет Сапелина спрятать в кабель канал 30х25 (он на складе) с 10 до 11ч |  | 1h | 2026-08-31 09:00 A | 2026-08-31 10:00 A |  | 100% |  |  | start no earlier than 2026-08-31 09:00 | Тимофеев В | 1h | 1h |
| 819 | 2.32 | замерить токи на оборудование (таблица в слесарке) |  | 3h | 2026-08-27 09:00 A | 2026-08-27 12:00 A |  | 100% |  |  | start no earlier than 2026-08-27 09:00 | Бобренок В | 3h | 3h |

| ID | WBS | Task | Type | Duration | Start | Finish | Predecessors | Complete | Remaining | Total slack | Free slack | Constraint | Resources | Work | Actual work |
| --- | --- | --- | --- | --- | --- | --- | --- | --- | --- | --- | --- | --- | --- | --- | --- |
| 820 | 2.33 | **дренаж кондиционеров жир и упаковка установить отдельный насос от жиров** |  | 28.06d | 2026-08-24 09:00 A | 2026-09-24 09:30 A |  | 100% |  |  |  |  |  | 122.5h | 122.5h |
| 821 | 2.33.1 | заявка насос |  | 30min | 2026-08-24 09:00 A | 2026-08-24 09:30 A |  | 100% |  |  |  | start no earlier than 2026-08-24 09:00 | Шуранов Ю | 0.5h | 0.5h |
| 822 | 2.33.2 | контроль доставка |  | 15d | 2026-09-02 09:30 A | 2026-09-24 09:30 A | 821FS+7d | 100% |  |  |  | start no earlier than 2026-08-20 09:00 | Зорькин В | 120h | 120h |
| 823 | 2.33.3 | Разорвать контур от насоса и сделать слив в раковину | manual | 1h | 2026-09-01 09:00 A | 2026-09-01 10:00 A | 822FS+1d | 100% |  |  |  | start no earlier than 2026-09-01 09:00 | Некрасов А; Тимофеев В | 2h | 2h |
| 824 | 2.34 | **бетонирование крыльцо вход в 2ц** |  | 0.02d | 2026-08-31 09:00 | 2026-08-31 09:10 |  |  |  | 143.57d |  |  |  | 0.17h |  |
| 825 | 2.34.1 | заявка Олегу |  | 10min | 2026-08-31 09:00 | 2026-08-31 09:10 |  |  |  | 143.57d |  | start no earlier than 2026-08-31 09:00 | Шуранов Ю | 0.17h |  |
| 826 | 2.35 | течь кондиционер жиры - контроль работы слива |  | 30min | 2026-08-31 09:00 A | 2026-08-31 09:30 A |  | 100% |  |  |  | start no earlier than 2026-08-31 09:00 | Тимофеев В | 0.5h | 0.5h |
| 827 | 2.36 | контроль замена фитинги или трубки жир, устранить возможность произвольного срыва |  | 30min | 2026-09-01 09:00 A | 2026-09-01 09:30 A |  | 100% |  |  |  | start no earlier than 2026-09-03 09:00 | Некрасов А; Шуранов Ю | 1h | 1h |
| 828 | 2.37 | **разгрузка синего накопителя, в реверс шнек + окно** |  | 5.12d | 2026-08-20 09:00 A | 2026-08-27 10:00 A |  | 100% |  |  |  |  |  | 4h | 4h |
| 829 | 2.37.1 | выполнить люк в шнеке: вырезать окно, крепеж на шарнир + притвор с уплотнением + застежка | milestone | 0h | 2026-08-20 09:00 A | 2026-08-20 09:00 A |  | 100% |  |  |  | start no earlier than 2026-08-20 09:00 | Некрасов А; Тимофеев В |  |  |
| 830 | 2.37.2 | быстросъемное крепление |  | 1h | 2026-08-27 09:00 A | 2026-08-27 10:00 A |  | 100% |  |  |  | start no earlier than 2026-08-27 09:00 | Тимофеев В | 1h | 1h |
| 831 | 2.37.3 | изготовление фланца + труба для крепления гофротрубы ф250 |  | 3h | 2026-08-24 09:00 A | 2026-08-24 12:00 A |  | 100% |  |  |  | start no earlier than 2026-08-24 09:00 | Некрасов А | 3h | 3h |
| 832 | 2.38 | перенос розетка на стену инсекютер корридор у ОТК |  | 1h | 2026-08-15 09:00 A | 2026-08-17 10:00 A |  | 100% |  |  |  | start no earlier than 2026-08-15 09:00 | Бундин В | 1h | 1h |
| 833 | 2.39 | перенос инсекютер ниже на фасовке, для возможности доступа операторами |  | 1h | 2026-09-24 09:00 | 2026-09-24 10:00 |  |  |  | 120.47d |  | start no earlier than 2026-09-24 09:00 | Бундин В | 1h |  |
| 834 | 2.40 | изготовить лопатку для датчика сырья, что бы было 2-4 лопасти и ниже на 5-10см |  | 2h | 2026-08-13 09:00 A | 2026-08-13 11:00 A |  | 100% |  |  |  | start no earlier than 2026-08-13 09:00 | Макаревич А | 2h | 2h |
| 835 | 2.41 | прикрепить план увакуации на место (зона отстоя навесок, стенка мойки) |  | 30min | 2026-08-12 09:00 A | 2026-08-12 09:30 A |  | 100% |  |  |  | start no earlier than 2026-08-12 09:00 | Макаревич А | 0.5h | 0.5h |
| 836 | 2.42 | ремонт ручка в экструдер 2ц |  | 1h | 2026-08-14 09:00 A | 2026-08-14 10:00 A |  | 100% |  |  |  | start no earlier than 2026-08-14 09:00 | Труфанов А | 1h | 1h |
| 837 | 2.43 | **установить сифон ф110 в линию слива жиров** |  | 40.31d | 2026-08-12 09:00 A | 2026-09-29 11:30 |  | 29% | 28.79d | 116.28d |  |  |  | 3.5h | 1h |
| 838 | 2.43.1 | заявка на сифон, планирование монтаж |  | 1h | 2026-08-12 09:00 A | 2026-08-12 10:00 A |  | 100% |  |  |  | start no earlier than 2026-08-12 09:00 | Зорькин В | 1h | 1h |
| 839 | 2.43.2 | возможно ли убрать сифоны ф50, достаточно ли заслонки без гидрозатвора? Как сделать гидрозатвор ф100 |  | 15min | 2026-09-28 09:00 | 2026-09-28 09:15 |  |  |  | 116.28d | 0d | start no earlier than 2026-09-28 09:00 | Труфанов А | 0.25h |  |
| 840 | 2.43.3 | решение | milestone | 0d | 2026-09-29 09:15 | 2026-09-29 09:15 | 839FS+1d |  |  | 116.28d | 0d | start no earlier than 2026-09-08 08:00 | Зорькин В |  |  |
| 841 | 2.43.4 | контроль доставка |  | 15min | 2026-09-29 09:15 | 2026-09-29 09:30 | 838FS+7d, 840 |  |  | 116.28d | 0d | start no earlier than 2026-08-31 09:00 | Зорькин В | 0.25h |  |
| 842 | 2.43.5 | монтаж |  | 2h | 2026-09-29 09:30 | 2026-09-29 11:30 | 841 |  |  | 116.28d |  | start no earlier than 2026-09-07 09:00 | Бобренок В | 2h |  |
| 843 | 2.44 | **установить инсекютер дополнительный на экструдер** |  | 22.25d | 2026-08-21 09:00 A | 2026-09-17 11:00 A |  | 100% |  |  |  |  |  | 2.5h | 2.5h |
| 844 | 2.44.1 | заявка инстекютер |  | 15min | 2026-08-21 09:00 A | 2026-08-21 09:15 A |  | 100% |  |  |  | start no earlier than 2026-08-21 09:00 | Зорькин В | 0.25h | 0.25h |
| 845 | 2.44.2 | контроль доставки |  | 15min | 2026-09-09 09:00 A | 2026-09-09 09:15 A | 844FS+7d | 100% |  |  |  | start no earlier than 2026-09-09 09:00 | Зорькин В | 0.25h | 0.25h |
| 846 | 2.44.3 | монтаж розетка / кабель |  | 2h | 2026-09-17 09:00 A | 2026-09-17 11:00 A | 845FS+1d | 100% |  |  |  | start no earlier than 2026-09-17 09:00 | Труфанов А | 2h | 2h |
| 847 | 2.45 | маркировка канистры гидролизата - передать на время гровер нач цеха 2 |  | 20min | 2026-08-11 09:00 A | 2026-08-11 09:20 A |  | 100% |  |  |  | start no earlier than 2026-08-11 09:00 | Бобренок В | 0.33h | 0.33h |

| ID | WBS | Task | Type | Duration | Start | Finish | Predecessors | Complete | Remaining | Total slack | Free slack | Constraint | Resources | Work | Actual work |
| --- | --- | --- | --- | --- | --- | --- | --- | --- | --- | --- | --- | --- | --- | --- | --- |
| 848 | 2.46 | **ограждение мусорного контейнера у 2ц** |  | 15d | 2026-08-31 09:00 A | 2026-09-15 18:00 A |  | 100% |  |  |  |  |  | 34.75h | 34.75h |
| 849 | 2.46.1 | схема размещения |  | 1h | 2026-08-31 09:00 A | 2026-08-31 10:00 A |  | 100% |  |  |  | start no earlier than 2026-08-31 09:00 | Зорькин В | 1h | 1h |
| 850 | 2.46.2 | контроль остатков материала - каркас + обшивка стен |  | 30min | 2026-08-31 10:00 A | 2026-08-31 10:30 A | 849 | 100% |  |  |  | start no earlier than 2026-08-14 09:00 | Зорькин В | 0.5h | 0.5h |
| 851 | 2.46.3 | заявка материал / лист |  | 1h | 2026-09-01 10:30 A | 2026-09-01 11:30 A | 850FS+1d | 100% |  |  |  | start no earlier than 2026-08-10 08:00 | Зорькин В | 1h | 1h |
| 852 | 2.46.4 | контроль поставка |  | 15min | 2026-09-14 11:30 A | 2026-09-14 11:45 A | 851FS+10d | 100% |  |  |  | start no earlier than 2026-08-10 08:00 | Зорькин В | 0.25h | 0.25h |
| 853 | 2.46.5 | монтаж каркас + обшивка |  | 2d | 2026-09-14 09:00 A | 2026-09-15 18:00 A | 852FS+1d | 100% |  |  |  | start no earlier than 2026-08-10 08:00 | Некрасов А; Тимофеев В | 32h | 32h |
| 854 | 2.47 | **установить кондиционер контролерам ОТК в 2ц** |  | 7.38d | 2026-08-19 09:00 A | 2026-08-28 12:00 A |  | 100% |  |  |  |  |  | 7.5h | 7.5h |
| 855 | 2.47.1 | оапата счет контроль |  | 15min | 2026-08-19 09:00 A | 2026-08-19 09:15 A |  | 100% |  |  |  | start no earlier than 2026-08-19 09:00 | Домоводов К | 0.25h | 0.25h |
| 856 | 2.47.2 | длоставка контроль |  | 15min | 2026-08-24 09:15 A | 2026-08-24 09:30 A | 855FS+4d | 100% |  |  |  | start no earlier than 2026-08-17 09:00 | Домоводов К | 0.25h | 0.25h |
| 857 | 2.47.3 | монтаж |  | 4h | 2026-08-24 09:30 A | 2026-08-24 14:30 A | 856 | 100% |  |  |  | start no earlier than 2026-08-10 08:00 | оплот | 4h | 4h |
| 858 | 2.47.4 | монтаж крозетка |  | 3h | 2026-08-28 09:00 A | 2026-08-28 12:00 A | 857FS-1d | 100% |  |  |  | start no earlier than 2026-08-28 09:00 | Бобренок В | 3h | 3h |
| 859 | 2.48 | **усиление подогрев приточной вентиляции** |  | 36.53d? | 2026-08-17 09:00 A | 2026-09-28 14:15 |  | 22% | 28.52d? | 117.06d |  |  |  | 18.25h | 4h |
| 860 | 2.48.1 | планирование мощности для приточная вент до 200 квт + тепл завесы |  | 4h | 2026-08-17 09:00 A | 2026-08-17 13:00 A |  | 100% |  |  |  | start no earlier than 2026-08-17 09:00 | Домоводов К | 4h | 4h |
| 861 | 2.48.2 | Подключить колорифер в противоток, гибкую подводку получить на складе |  | 2h | 2026-09-24 09:00 | 2026-09-24 11:00 |  |  |  | 120.34d |  | start no earlier than 2026-09-24 08:00 | Дедов В | 2h |  |
| 862 | 2.48.3 | заявка доп котлы + автоматика |  | 4h | 2026-09-16 09:00 | 2026-09-16 13:00 | 860FS+1d |  |  | 117.06d | 0d | start no earlier than 2026-09-16 09:00 | Домоводов К | 4h |  |
| 863 | 2.48.4 | контроль поствки |  | 15min | 2026-09-26 14:00 | 2026-09-26 14:15 | 862FS+10d |  |  | 117.06d | 0d | start no earlier than 2026-08-10 08:00 | Зорькин В | 0.25h |  |
| 864 | 2.48.5 | монтаж |  | 1d? | 2026-09-26 14:15 | 2026-09-28 14:15 | 863 |  |  | 117.06d |  | start no earlier than 2026-08-10 08:00 | Некрасов А | 8h |  |
| 865 | 2.49 | собрать 4 стула и тумбочку. Находятся у мастера |  | 4h | 2026-08-10 08:00 A | 2026-08-10 13:00 A |  | 100% |  |  |  | start no earlier than 2026-08-10 08:00 | Бобренок В | 4h | 4h |
| 866 | 2.50 | кабель к вентилятору печи примыкание гофры к трубе выполнить без пустот фото Фадеевой |  | 1h | 2026-08-11 09:00 A | 2026-08-11 10:00 A |  | 100% |  |  |  | start no earlier than 2026-08-11 09:00 | Бобренок В | 1h | 1h |
| 867 | 2.51 | закрыить все эл щщитки на ключь |  | 1h | 2026-08-10 08:00 A | 2026-08-10 10:00 A |  | 100% |  |  |  | start no earlier than 2026-08-10 08:00 | Бобренок В | 1h | 1h |
| 868 | 2.52 | установить отбойник склад навесок, стена мойки |  | 1h | 2026-08-10 08:00 A | 2026-08-10 10:00 A |  | 100% |  |  |  | start no earlier than 2026-08-10 08:00 | Бобренок В | 1h | 1h |
| 869 | 2.53 | **обеспечить не менее +15 зимой в зоне хранения навесок** |  | 65.34d? | 2026-08-04 09:00 A | 2026-10-26 11:45 |  | 22% | 51.25d? | 97.25d |  |  |  | 38.25h | 8.25h |
| 870 | 2.53.1 | **утепление стены** |  | 26d? | 2026-09-01 09:00 A | 2026-09-28 18:00 |  | 11% | 23.19d? | 116.59d |  |  |  | 9.25h | 1h |
| 871 | 2.53.1.1 | расчет количство утеплителя + профлист/саморезы. Заявка |  | 1h | 2026-09-09 09:00 A | 2026-09-09 10:00 A |  | 100% |  |  |  | start no earlier than 2026-09-09 09:00 | Зорькин В | 1h | 1h |
| 872 | 2.53.1.2 | получить цену / решение о тепловой завесе | milestone | 0d | 2026-09-01 09:00 A | 2026-09-01 09:00 A |  | 100% |  |  |  | start no earlier than 2026-09-01 09:00 | Домоводов К |  |  |
| 873 | 2.53.1.3 | контроль даты доставки |  | 15min | 2026-09-14 10:00 | 2026-09-14 10:15 | 871FS+5d |  |  | 128.44d | 11.84d | start no earlier than 2026-08-27 08:00 | Зорькин В | 0.25h |  |
| 874 | 2.53.1.4 | монтаж утеплитель и листы |  | 1d? | 2026-09-28 09:00 | 2026-09-28 18:00 | 873FS+1d |  |  | 116.59d |  | start no earlier than 2026-09-28 09:00 | Некрасов А | 8h |  |
| 875 | 2.53.1.5 | решение об утеплении стены сравнить с затратами на тепловые завесы | milestone | 0h | 2026-09-01 09:00 | 2026-09-01 09:00 | 872, 891 |  |  | 121.25d | 24d | start no earlier than 2026-08-24 09:00 | Домоводов К |  |  |

| ID | WBS | Task | Type | Duration | Start | Finish | Predecessors | Complete | Remaining | Total slack | Free slack | Constraint | Resources | Work | Actual work |
| --- | --- | --- | --- | --- | --- | --- | --- | --- | --- | --- | --- | --- | --- | --- | --- |
| 876 | 2.53.2 | **кап ремонт стен зона хранения навесок. Промерзают** |  | 5.12d | 2026-08-04 09:00 A | 2026-08-11 10:00 A |  | 100% |  |  |  |  |  | 5h | 5h |
| 877 | 2.53.2.1 | установить листы на место склад навесо стена с эл щитком |  | 1h | 2026-08-11 09:00 A | 2026-08-11 10:00 A |  | 100% |  |  |  | start no earlier than 2026-08-11 09:00 | Тимофеев В | 1h | 1h |
| 878 | 2.53.2.2 | вскрытие стен дя составления плана работ. Демонтировать несколько листов в зоне промерзания (гдещиток) |  | 4h | 2026-08-04 09:00 A | 2026-08-04 13:00 A |  | 100% |  |  |  | start no earlier than 2026-08-04 09:00 | Тимофеев В | 4h | 4h |
| 879 | 2.53.3 | **тепловые завесы в 2ц зона подачи навесок** |  | 56.34d? | 2026-08-17 09:00 A | 2026-10-26 11:45 |  | 8% | 51.6d? | 97.25d |  |  |  | 23.75h | 2h |
| 880 | 2.53.3.1 | **монтаж теплокалориферов** |  | 20.34d? | 2026-09-28 09:00 | 2026-10-26 11:45 |  |  |  | 97.25d |  |  |  | 10.75h |  |
| 881 | 2.53.3.1.1 | заявка |  | 2h | 2026-09-28 09:00 | 2026-09-28 11:00 | 875FS+1d |  |  | 97.25d | 0d | start no earlier than 2026-09-28 09:00 | Домоводов К | 2h |  |
| 882 | 2.53.3.1.2 | контроль оплаты\ |  | 15min | 2026-09-30 11:00 | 2026-09-30 11:15 | 881FS+2d |  |  | 97.25d | 0d | start no earlier than 2026-09-07 09:00 | Зорькин В | 0.25h |  |
| 883 | 2.53.3.1.3 | контроль доставки |  | 15min | 2026-10-21 11:15 | 2026-10-21 11:30 | 882FS+15d |  |  | 97.25d | 0d | start no earlier than 2026-08-10 08:00 | Зорькин В | 0.25h |  |
| 884 | 2.53.3.1.4 | приемка |  | 15min | 2026-10-22 11:30 | 2026-10-22 11:45 | 883FS+1d |  |  | 97.25d | 0d | start no earlier than 2026-08-10 08:00 | Зорькин В | 0.25h |  |
| 885 | 2.53.3.1.5 | монтаж калориферов |  | 1d? | 2026-10-23 11:45 | 2026-10-26 11:45 | 884FS+1d |  |  | 97.25d |  | start no earlier than 2026-08-10 08:00 | Некрасов А | 8h |  |
| 886 | 2.53.3.2 | **монтаж кабель** |  | 43.38d? | 2026-08-17 09:00 A | 2026-10-07 12:00 |  | 15% | 36.7d? | 110.22d |  |  |  | 13h | 2h |
| 887 | 2.53.3.2.1 | планирование мощности |  | 2h | 2026-08-17 09:00 A | 2026-08-17 11:00 A |  | 100% |  |  |  | start no earlier than 2026-08-17 09:00 | Домоводов К | 2h | 2h |
| 888 | 2.53.3.2.2 | заявка кабель /щиток |  | 2h | 2026-09-28 09:00 | 2026-09-28 11:00 | 887 |  |  | 110.22d | 0d | start no earlier than 2026-09-28 09:00 | Домоводов К | 2h |  |
| 889 | 2.53.3.2.3 | контроль доставка |  | 1h | 2026-10-05 11:00 | 2026-10-05 12:00 | 888FS+5d |  |  | 110.22d | 0d | start no earlier than 2026-08-10 08:00 | Зорькин В | 1h |  |
| 890 | 2.53.3.2.4 | монтаж |  | 1d? | 2026-10-06 12:00 | 2026-10-07 12:00 | 889FS+1d |  |  | 110.22d |  | start no earlier than 2026-08-10 08:00 | Некрасов А | 8h |  |
| 891 | 2.53.4 | контроль достаточности если не крепить верхние саморезы |  | 15min | 2026-08-13 09:00 A | 2026-08-13 09:15 A |  | 100% |  |  |  | start no earlier than 2026-08-13 09:00 | Домоводов К | 0.25h | 0.25h |
| 892 | 2.54 | **дверь в мойку сделать герметичный притвор** |  | 1.25d | 2026-08-14 09:00 A | 2026-08-17 11:00 A |  | 100% |  |  |  |  |  | 2.33h | 2.33h |
| 893 | 2.54.1 | подбор уплотнителя / заказать |  | 20min | 2026-08-14 09:00 A | 2026-08-14 09:20 A |  | 100% |  |  |  | start no earlier than 2026-08-14 09:00 | Домоводов К | 0.33h | 0.33h |
| 894 | 2.54.2 | монтаж резинки на клей |  | 2h | 2026-08-16 09:00 A | 2026-08-17 11:00 A |  | 100% |  |  |  | start no earlier than 2026-08-16 09:00 | Бобренок В | 2h | 2h |
| 895 | 2.55 | **пролистыватель с апликтором заказ** |  | 42d? | 2026-08-10 09:00 A | 2026-09-28 18:00 |  | 12% | 36.8d? | 116.59d |  |  |  | 9.42h | 1.17h |
| 896 | 2.55.1 | получить договор + счет |  | 1h | 2026-08-10 09:00 A | 2026-08-10 10:00 A |  | 100% |  |  |  | start no earlier than 2026-08-10 08:00 | Зорькин В | 1h | 1h |
| 897 | 2.55.2 | **согласвоание договор** |  | 3.02d | 2026-08-12 09:00 A | 2026-08-17 09:10 A |  | 100% |  |  |  |  |  | 0.17h | 0.17h |
| 898 | 2.55.2.1 | подать договор |  | 5min | 2026-08-12 09:00 A | 2026-08-12 09:05 A |  | 100% |  |  |  | start no earlier than 2026-08-12 09:00 | Домоводов К | 0.08h | 0.08h |
| 899 | 2.55.2.2 | контроль |  | 5min | 2026-08-17 09:05 A | 2026-08-17 09:10 A | 898FS+5d | 100% |  |  |  | start no earlier than 2026-08-12 09:00 | Домоводов К | 0.08h | 0.08h |
| 900 | 2.55.3 | оплата подать счет | milestone | 0d | 2026-08-12 09:00 A | 2026-08-12 09:00 A |  | 100% |  |  |  | start no earlier than 2026-08-12 09:00 | Домоводов К |  |  |
| 901 | 2.55.4 | доставка конетроль |  | 15min | 2026-09-18 09:00 | 2026-09-18 09:15 | 900FS+30d |  |  | 124.56d | 7.97d | start no earlier than 2026-08-10 08:00 | Зорькин В | 0.25h |  |
| 902 | 2.55.5 | монтаж |  | 1d? | 2026-09-28 09:00 | 2026-09-28 18:00 | 901FS+1d |  |  | 116.59d |  | start no earlier than 2026-09-28 09:00 | Тимофеев В | 8h |  |

| ID | WBS | Task | Type | Duration | Start | Finish | Predecessors | Complete | Remaining | Total slack | Free slack | Constraint | Resources | Work | Actual work |
| --- | --- | --- | --- | --- | --- | --- | --- | --- | --- | --- | --- | --- | --- | --- | --- |
| 903 | 2.56 | **вентиляция мойка приточно-вытяжная 1ц 2 линия** |  | 9.19d | 2026-08-13 09:00 A | 2026-08-26 10:30 A |  | 100% |  |  |  |  |  | 20h | 20h |
| 904 | 2.56.1 | монтаж вытяжной трубы в колектор. После переноса вентиляторов отключен |  | 4h | 2026-08-17 09:00 A | 2026-08-17 13:00 A |  | 100% |  |  |  | start no earlier than 2026-08-16 09:00 | Бобренок В | 4h | 4h |
| 905 | 2.56.2 | составить проект |  | 4h | 2026-08-13 09:00 A | 2026-08-13 13:00 A |  | 100% |  |  |  | start no earlier than 2026-08-13 09:00 | Домоводов К | 4h | 4h |
| 906 | 2.56.3 | заявка материалы |  | 1h | 2026-08-24 09:00 A | 2026-08-24 10:00 A | 905FS+7d | 100% |  |  |  | start no earlier than 2026-08-24 09:00 | Зорькин В | 1h | 1h |
| 907 | 2.56.4 | контроль поставки |  | 30min | 2026-08-25 10:00 A | 2026-08-25 10:30 A | 906FS+1d | 100% |  |  |  | start no earlier than 2026-08-10 08:00 | Зорькин В | 0.5h | 0.5h |
| 908 | 2.56.5 | монтаж |  | 1d | 2026-08-25 10:30 A | 2026-08-26 10:30 A | 907 | 100% |  |  |  | start no earlier than 2026-08-10 08:00 | Некрасов А; Тимофеев В | 10.5h | 10.5h |
| 909 | 2.57 | **выполнить обрамление двери в охладитель, что бы скрыть поверхность** |  | 27.25d | 2026-08-14 09:00 A | 2026-09-17 11:00 A |  | 100% |  |  |  |  |  | 4.5h | 4.5h |
| 910 | 2.57.1 | заказ декоративный уголок |  | 15min | 2026-08-14 09:00 A | 2026-08-14 09:15 A |  | 100% |  |  |  | start no earlier than 2026-08-14 09:00 | Домоводов К | 0.25h | 0.25h |
| 911 | 2.57.2 | контроль доставки |  | 15min | 2026-09-09 09:00 A | 2026-09-09 09:15 A | 910FS+5d | 100% |  |  |  | start no earlier than 2026-09-09 09:00 | Зорькин В | 0.25h | 0.25h |
| 912 | 2.57.3 | обить дверь в охладитель профлистом оцнк |  | 2h | 2026-09-17 09:00 A | 2026-09-17 11:00 A |  | 100% |  |  |  | start no earlier than 2026-09-17 09:00 | Некрасов А | 2h | 2h |
| 913 | 2.57.4 | монтаж |  | 2h | 2026-09-03 09:00 A | 2026-09-03 11:00 A | 911FS+1d | 100% |  |  |  | start no earlier than 2026-09-03 09:00 | Труфанов А | 2h | 2h |
| 914 | 2.58 | **ремонт осушителя компрессора 2ц** |  | 47.31d | 2026-08-09 09:00 A | 2026-10-06 11:30 |  | 80% | 9.59d | 111.28d |  |  |  | 13.58h | 11.08h |
| 915 | 2.58.1 | проверка давления фреона |  | 1h | 2026-09-17 09:00 A | 2026-09-17 10:00 A |  | 100% |  |  |  | start no earlier than 2026-09-17 09:00 | Труфанов А; Некрасов А | 2h | 2h |
| 916 | 2.58.2 | заявка фреон 134а |  | 15min | 2026-09-25 09:00 | 2026-09-25 09:15 | 915 |  |  | 111.28d | 0d | start no earlier than 2026-09-25 09:00 | Зорькин В | 0.25h |  |
| 917 | 2.58.3 | доставка контроль |  | 15min | 2026-10-05 09:15 | 2026-10-05 09:30 | 916FS+7d |  |  | 111.28d | 0d | start no earlier than 2026-09-18 08:00 | Зорькин В | 0.25h |  |
| 918 | 2.58.4 | заправить хладогент |  | 2h | 2026-10-06 09:30 | 2026-10-06 11:30 | 917FS+1d |  |  | 111.28d |  | start no earlier than 2026-10-01 09:00 | Некрасов А | 2h |  |
| 919 | 2.58.5 | фото шильдик для поиск в продаже |  | 10min | 2026-08-11 09:00 A | 2026-08-11 09:10 A |  | 100% |  |  |  | start no earlier than 2026-08-11 09:00 | Некрасов А | 0.17h | 0.17h |
| 920 | 2.58.6 | связь с сервисным отделом получить дату |  | 1h | 2026-08-12 09:00 A | 2026-08-12 10:00 A |  | 100% |  |  |  | start no earlier than 2026-08-12 09:00 | Зорькин В | 1h | 1h |
| 921 | 2.58.7 | фото шильдик для поиск в продаже |  | 1h | 2026-08-12 09:00 A | 2026-08-12 10:00 A |  | 100% |  |  |  | start no earlier than 2026-08-12 09:00 | Зорькин В | 1h | 1h |
| 922 | 2.58.8 | слить конденсат с компрессора, чистка фильтров | manual | 3h | 2026-08-09 09:00 A | 2026-08-09 12:00 A |  | 100% |  |  |  | start no earlier than 2026-08-09 09:00 | Бобренок В | 3h | 3h |
| 923 | 2.58.9 | попробовать смазать подшипники вентилятора осушителя |  | 15min | 2026-08-18 09:00 A | 2026-08-18 09:15 A |  | 100% |  |  |  | start no earlier than 2026-08-18 09:00 | Некрасов А | 0.25h | 0.25h |
| 924 | 2.58.10 | замер размеров вентилятора |  | 15min | 2026-08-18 09:00 A | 2026-08-18 09:15 A |  | 100% |  |  |  | start no earlier than 2026-08-18 09:00 | Зорькин В; Некрасов А | 0.5h | 0.5h |
| 925 | 2.58.11 | подбор аналога вентилятора погабариту |  | 1h | 2026-08-18 09:15 A | 2026-08-18 10:15 A | 924 | 100% |  |  |  | start no earlier than 2026-08-14 09:00 | Зорькин В | 1h | 1h |
| 926 | 2.58.12 | заменить вентилятор на осушителе (от охладителя, лежит на компрессоре). В 6 утра остановка |  | 2h | 2026-08-19 09:00 A | 2026-08-19 11:00 A |  | 100% |  |  |  | start no earlier than 2026-08-19 09:00 | Бобренок В | 2h | 2h |
| 927 | 2.58.13 | Заявка в сервис не работает осушитель |  | 10min | 2026-08-31 09:00 A | 2026-08-31 09:10 A |  | 100% |  |  |  | start no earlier than 2026-08-31 09:00 | Зорькин В | 0.17h | 0.17h |
| 928 | 2.59 | установить защитные крышки на клемник вентиляторов охладителя. От 3д печать | manual | 4h | 2026-09-16 09:00 A | 2026-09-16 13:00 A |  | 100% |  |  |  | start no earlier than 2026-09-16 09:00 | Труфанов А | 4h | 4h |
| 929 | 2.60 | заменить резинки на красном баке (выдать, если будет остановка, поменять) | manual | 1h | 2026-08-31 09:00 A | 2026-08-31 10:00 A |  | 100% |  |  |  | start no earlier than 2026-08-31 09:00 | Бобренок В | 1h | 1h |
| 930 | 2.61 | на приемной горловине красного смесителя закрутить второй ленточный хомут, чтобы не выпадала мука |  | 1h | 2026-08-06 09:00 A | 2026-08-06 10:00 A |  | 100% |  |  |  | start no earlier than 2026-08-06 08:00 | Труфанов А | 1h | 1h |

| ID | WBS | Task | Type | Duration | Start | Finish | Predecessors | Complete | Actual start | Actual finish | Constraint | Resources | Work | Actual work |
| --- | --- | --- | --- | --- | --- | --- | --- | --- | --- | --- | --- | --- | --- | --- |
| 931 | 2.62 | **закрутить болты на петлях двери печи** |  | 0.12d | 2026-09-02 09:00 A | 2026-09-02 10:00 A |  | 100% |  |  |  |  | 1h | 1h |
| 932 | 2.62.1 | попробовать закрутить на винтовые заклепки |  | 1h | 2026-09-02 09:00 A | 2026-09-02 10:00 A |  | 100% |  |  | start no earlier than 2026-09-04 09:00 | Некрасов А | 1h | 1h |
| 933 | 2.63 | установка фильтров на подачу жира (осн. + резерв) |  | 2h | 2026-08-06 08:00 A | 2026-08-06 11:00 A |  | 100% |  |  | start no earlier than 2026-08-06 08:00 | Тимофеев В | 2h | 2h |
| 934 | 2.64 | эксперимент с лейкой подача жиров |  | 1h | 2026-08-06 08:00 A | 2026-08-06 10:00 A |  | 100% |  |  | start no earlier than 2026-08-06 08:00 | Тимофеев В | 1h | 1h |
| 935 | 2.65 | **по аналогии второй линии насверлить сверлом 1 мм отверстия в трубке для жиров** |  | 0.12d | 2026-08-06 09:00 A | 2026-08-06 10:00 A |  | 100% |  |  |  | Макаревич А | 2h | 2h |
| 936 | 2.65.1 | установка трубки на жиры |  | 1h | 2026-08-06 09:00 A | 2026-08-06 10:00 A |  | 100% |  |  | start no earlier than 2026-08-06 09:00 | Тимофеев В | 1h | 1h |
| 937 | 2.66 | поломоечная машинка вырезать из силикона шторку захвата воды |  | 2h | 2026-08-03 08:00 A | 2026-08-03 11:00 A |  | 100% |  |  | start no earlier than 2026-08-03 08:00 | Бобренок В | 2h | 2h |
| 938 | 2.67 | **втулка фторопласт заказать 26х44х5** |  | 1d? | 2026-08-04 09:00 A | 2026-08-04 18:00 A |  | 100% |  |  |  | Шуранов Ю | 8h | 8h |
| 939 | 2.67.1 | счет доставка |  | 1d? | 2026-08-04 09:00 A | 2026-08-04 18:00 A |  | 100% |  |  | start no earlier than 2026-08-04 08:00 |  |  |  |
| 940 | 2.68 | **посмотреть вентилятор Сапелина у нас в кабинете (не работает)** |  | 1d? | 2026-08-04 09:00 A | 2026-08-04 18:00 A |  | 100% |  |  |  | Бобренок В | 8h | 8h |
| 941 | 2.68.1 | сгорел двигатель |  | 1d? | 2026-08-04 09:00 A | 2026-08-04 18:00 A |  | 100% |  |  | start no earlier than 2026-08-04 08:00 |  |  |  |
| 942 | 2.69 | слить конденсат с компрессора |  | 0.5h | 2026-08-02 09:00 A | 2026-08-03 09:30 A |  | 100% |  |  | start no earlier than 2026-08-02 09:00 | Бобренок В | 0.5h | 0.5h |
| 943 | 2.70 | **продолжить изготовление приемной горловины по аналогии 3 ц.** |  | 4h? | 2026-08-10 09:00 | 2026-08-10 13:00 |  | 100% | 2026-07-29 09:00 | 2026-09-04 11:00 |  |  | 14.08h | 14.08h |
| 944 | 2.70.1 | заказать прут нерж. |  | 1d? | 2026-07-29 09:00 A | 2026-07-29 18:00 A |  | 100% |  |  | start no earlier than 2026-07-29 09:00 | Зорькин В | 8h | 8h |
| 945 | 2.70.2 | контроль доставка |  | 5min | 2026-08-18 09:00 A | 2026-08-18 09:05 A |  | 100% |  |  | start no earlier than 2026-08-18 09:00 | Зорькин В | 0.08h | 0.08h |
| 946 | 2.70.3 | изготовление / установка |  | 4h | 2026-08-20 09:00 A | 2026-08-20 13:00 A | 945 | 100% |  |  | start no earlier than 2026-08-20 09:00 | Макаревич А | 4h | 4h |
| 947 | 2.70.4 | Корректировка горловины, сделать более плотные зазоры, посмотреть по месту |  | 2h | 2026-09-04 09:00 A | 2026-09-04 11:00 A |  | 100% |  |  | start no earlier than 2026-09-04 09:00 | Макаревич А | 2h | 2h |
| 948 | 2.71 | прикрутить лотки охладителя, чтобы не задевали сетку (лишние отверстия заварить) | manual | 2h | 2026-08-03 09:00 A | 2026-08-03 11:00 A |  | 100% |  |  | start no earlier than 2026-08-03 09:00 | Бобренок В | 2h | 2h |
| 949 | 2.72 | чистка фильтров кондиционеров | manual | 1h | 2026-08-01 09:00 A | 2026-08-01 10:00 A |  | 100% |  |  | start no earlier than 2026-08-01 09:00 | Бундин В | 1h | 1h |
| 950 | 2.73 | слить конденсат с компрессора |  | 1h | 2026-07-30 08:00 A | 2026-07-30 10:00 A |  | 100% |  |  | start no earlier than 2026-07-30 08:00 | Дедов В | 1h | 1h |
| 951 | 2.74 | слив конденсата с кондиционеров прочистить трубу | manual | 2h | 2026-08-01 09:00 A | 2026-08-01 11:00 A |  | 100% |  |  | start no earlier than 2026-08-01 09:00 | Бундин В | 2h | 2h |
| 952 | 2.75 | Настройка частотника питателя (созвон с Валентином) |  | 1h | 2026-07-31 09:00 A | 2026-07-31 10:00 A |  | 100% |  |  | start no earlier than 2026-07-31 09:00 | Бундин В | 1h | 1h |
| 953 | 2.76 | дверь металлическая зона выдачи ГП ревизия, плоход закрывается |  | 1h | 2026-07-15 09:00 A | 2026-07-15 10:00 A |  | 100% |  |  | start no earlier than 2026-07-15 09:00 | Бундин В | 1h | 1h |
| 954 | 2.77 | крепление доводчик дверь входная |  | 1h | 2026-07-15 09:00 A | 2026-07-15 10:00 A |  | 100% |  |  | start no earlier than 2026-07-15 09:00 | Бундин В | 1h | 1h |
| 955 | 2.78 | снять меющийся, установить новый прайсчекер (лежит у мастеров) |  | 1h | 2026-07-15 09:00 A | 2026-07-15 10:00 A |  | 100% |  |  | start no earlier than 2026-07-15 09:00 | Бундин В | 1h | 1h |
| 956 | 2.79 | ремонт кронштейна датчик давления |  | 30min | 2026-07-10 09:00 A | 2026-07-10 09:30 A |  | 100% |  |  | start no earlier than 2026-07-10 09:00 | Бобренок В | 0.5h | 0.5h |
| 957 | 2.80 | замерить демонтированные шнеки, заполнить ьабличку Зорькина |  | 1h | 2026-07-11 09:00 A | 2026-07-13 10:00 A |  | 100% |  |  | start no earlier than 2026-07-11 09:00 | Макаревич А | 1h | 1h |
| 958 | 2.81 | обшить входной проем п-образным профилем (на складе лежит) | manual | 3h | 2026-07-08 09:00 A | 2026-07-08 12:00 A |  | 100% |  |  | start no earlier than 2026-07-08 09:00 | Некрасов А; Тимофеев В | 6h | 6h |
| 959 | 2.82 | чистка воздушных клапанов на септике |  | 1d? | 2026-07-02 09:00 A | 2026-07-02 18:00 A |  | 100% |  |  | start no earlier than 2026-07-02 09:00 | Олег | 8h | 8h |
| 960 | 2.83 | закрепить щиток транспортера у стены на фасовке, малый дозатор) | manual | 1h | 2026-07-04 09:00 A | 2026-07-04 10:00 A |  | 100% |  |  | start no earlier than 2026-07-04 09:00 | Дедов В | 1h | 1h |

| ID | WBS | Task | Type | Duration | Start | Finish | Complete | Remaining | Total slack | Constraint | Resources | Work | Actual work |
| --- | --- | --- | --- | --- | --- | --- | --- | --- | --- | --- | --- | --- | --- |
| 961 | 2.84 | **под экструдером масло- ревизия откуда** |  | 0.12d | 2026-07-03 09:00 A | 2026-07-03 10:00 A | 100% |  |  |  |  | 1h | 1h |
| 962 | 2.84.1 | заменить шланг 20мм (лежит черный на стеллаже справа, где кабель) при остановке- согласовать с мастером |  | 1h | 2026-07-03 09:00 A | 2026-07-03 10:00 A | 100% |  |  | start no earlier than 2026-07-03 09:00 | Макаревич А | 1h | 1h |
| 963 | 2.85 | чистка труб сброса конденсата с кондиционеров |  | 2h | 2026-06-30 09:00 A | 2026-06-30 11:00 A | 100% |  |  | start no earlier than 2026-06-30 09:00 | Некрасов А; Тимофеев В | 2h | 2h |
| 964 | 2.86 | чистка всех фильтров на кондиционеры, разобраться с питанием внутреннего блока |  | 1d? | 2026-06-29 09:00 A | 2026-06-29 18:00 A | 100% |  |  | start no earlier than 2026-06-29 09:00 |  |  |  |
| 965 | 2.87 | ТО бестром |  | 2h | 2026-06-30 09:00 A | 2026-06-30 11:00 A | 100% |  |  | start no earlier than 2026-06-30 09:00 | Бундин В | 2h | 2h |
| 966 | 2.88 | промыть внешние блоки кондиционеров |  | 3h | 2026-06-26 09:00 A | 2026-06-26 12:00 A | 100% |  |  | start no earlier than 2026-06-26 09:00 | Тимофеев В; Дедов В | 6h | 6h |
| 967 | 2.89 | вернуть кожух защиты на прекондиционер (подогнать в размер) на остановке линии |  | 2h | 2026-06-24 09:00 A | 2026-06-24 11:00 A | 100% |  |  | start no earlier than 2026-06-24 09:00 | Труфанов А | 2h | 2h |
| 968 | 2.90 | подключение тепловой защиты на приточке и вытяжке |  | 2h | 2026-06-23 08:00 A | 2026-06-23 11:00 A | 100% |  |  | start no earlier than 2026-06-23 08:00 | Тимофеев В; Макаревич А | 4h | 4h |
| 969 | 2.91 | заменить фильтр приточка 2 этаж и указать кол-во остатка на складе |  | 1h | 2026-06-20 09:00 A | 2026-06-22 10:00 A | 100% |  |  | start no earlier than 2026-06-20 09:00 | Дедов В | 1h | 1h |
| 970 | 2.92 | сделать защиту жировика от холода (изготовить из сенгвич панели на навесках 2ц.) жировик расскажет | manual | 2h | 2026-06-21 09:00 A | 2026-06-21 11:00 A | 100% |  |  | start no earlier than 2026-06-21 09:00 | Бундин В | 2h | 2h |
| 971 | 2.93 | проверка теко 0,4 -пакет запаенный |  | 1h | 2026-06-18 08:00 A | 2026-06-18 10:00 A | 100% |  |  | start no earlier than 2026-06-18 08:00 | Дедов В | 1h | 1h |
| 972 | 2.94 | подключение датчика давления через гидрошланг |  | 1h | 2026-07-09 09:00 A | 2026-07-09 10:00 A | 100% |  |  | start no earlier than 2026-07-09 09:00 | Бундин В | 1h | 1h |
| 973 | 2.95 | чистка парогенератора |  | 2h | 2026-06-18 08:00 A | 2026-06-18 11:00 A | 100% |  |  | start no earlier than 2026-06-18 08:00 | Тимофеев В | 2h | 2h |
| 974 | 2.96 | слив конденсата с компрессора и продуть радиаторы и фильтры |  | 1h | 2026-06-20 09:00 A | 2026-06-22 10:00 A | 100% |  |  | start no earlier than 2026-06-20 09:00 | Бобренок В | 1h | 1h |
| 975 | 2.97 | проверить, есть ли давление во всех гидроаккумуляторах на отоплении по цеху, зафиксировать с порванными мембранами |  | 2h | 2026-06-11 09:00 A | 2026-06-11 11:00 A | 100% |  |  | start no earlier than 2026-06-11 09:00 | Дедов В | 2h | 2h |
| 976 | 2.98 | дверь охладителя и угол - прикрутить наружний уголок 20х50 и 50х50, чтобы не резали руки (уголок на входе напротив ворот в синем складе) |  | 3h | 2026-06-12 09:00 A | 2026-06-12 12:00 A | 100% |  |  | start no earlier than 2026-06-12 09:00 | Дедов В | 3h | 3h |
| 977 | 2.99 | взять на складе специальный п-образный профиль и обшить дверной проем вход в охладитель | manual | 2h | 2026-07-05 09:00 A | 2026-07-05 11:00 A | 100% |  |  | start no earlier than 2026-07-05 09:00 |  |  |  |
| 978 | 2.100 | проверка гидроаккумулятора на водоподготовке |  | 0.5h | 2026-06-11 09:00 A | 2026-06-11 09:30 A | 100% |  |  | start no earlier than 2026-06-11 09:00 | Дедов В | 0.5h | 0.5h |
| 979 | 2.101 | чистка парогенератора |  | 2h | 2026-06-11 09:00 A | 2026-06-11 11:00 A | 100% |  |  | start no earlier than 2026-06-11 09:00 | Тимофеев В | 2h | 2h |
| 980 | 2.102 | **посмотреть на желтом складе шибер, если найдем устанавливаем на аквариум зона экструдера** |  | 0.12d | 2026-06-12 09:00 A | 2026-06-12 10:00 A | 100% |  |  |  |  | 1h | 1h |
| 981 | 2.102.1 | монтаж воздуховод под углом на шибер- настройка с операторами направление обдува |  | 1h | 2026-06-12 09:00 A | 2026-06-12 10:00 A | 100% |  |  | start no earlier than 2026-06-12 09:00 | Бундин В | 1h | 1h |
| 982 | 2.103 | **ворота выход готовой продукции (прикрутить ролик, ролик у нас в кабинете)** |  | 1d? | 2026-06-11 09:00 A | 2026-06-11 18:00 | 99% | 0d? | 0d |  | Труфанов А | 16h | 15h |
| 983 | 2.103.1 | выкл. Ручной режим |  | 1d? | 2026-06-11 09:00 A | 2026-06-11 18:00 A | 100% |  |  | start no earlier than 2026-06-11 09:00 | Дедов В | 8h | 8h |
| 984 | 2.104 | промерить шнеки / гильзы износ. Маркировать |  | 1h | 2026-07-08 09:00 A | 2026-07-08 10:00 A | 100% |  |  | start no earlier than 2026-07-08 09:00 | Зорькин В | 1h | 1h |
| 985 | 2.105 | сверлить сетку от фильеры, сверлом на станке, все отверстия. |  | 4h | 2026-06-06 09:00 A | 2026-06-08 13:00 A | 100% |  |  | start no earlier than 2026-06-06 09:00 | Бобренок В | 4h | 4h |

| ID | WBS | Task | Type | Duration | Start | Finish | Predecessors | Complete | Remaining | Actual start | Actual finish | Total slack | Free slack | Constraint | Resources | Work | Actual work |
| --- | --- | --- | --- | --- | --- | --- | --- | --- | --- | --- | --- | --- | --- | --- | --- | --- | --- |
| 986 | 2.106 | **заменаить сальник редуктора транспортер №3** |  | 0.12d | 2026-06-18 09:00 A | 2026-06-18 10:00 A |  | 100% |  |  |  |  |  |  |  | 2h | 2h |
| 987 | 2.106.1 | заменаить редутор из зип |  | 1h | 2026-06-18 09:00 A | 2026-06-18 10:00 A |  | 100% |  |  |  |  |  | start no earlier than 2026-06-18 09:00 | Тимофеев В | 1h | 1h |
| 988 | 2.106.2 | замена сальник на снятом |  | 1h | 2026-06-18 09:00 A | 2026-06-18 10:00 A |  | 100% |  |  |  |  |  | start no earlier than 2026-06-19 09:00 | Тимофеев В | 1h | 1h |
| 989 | 2.107 | законтрогаить шпильки-ножки запайщиков |  | 1h | 2026-06-06 09:00 A | 2026-06-08 10:00 A |  | 100% |  |  |  |  |  | start no earlier than 2026-06-06 09:00 | Бобренок В | 1h | 1h |
| 990 | 2.108 | **нория квадропак -устранить просыпание** |  | 1d? | 2026-06-04 09:00 A | 2026-06-04 18:00 A |  | 100% |  |  |  |  |  |  | Тимофеев В | 16h | 16h |
| 991 | 2.108.1 | добавить частоту частотника до 70 на норию |  | 1d? | 2026-06-04 09:00 A | 2026-06-04 18:00 A |  | 100% |  |  |  |  |  | start no earlier than 2026-06-04 09:00 | Дедов В | 8h | 8h |
| 992 | 2.109 | Замена шнеков (усиленные) - по уровню |  | 4h | 2026-06-04 09:00 A | 2026-06-04 13:00 A |  | 100% |  |  |  |  |  | start no earlier than 2026-06-04 09:00 | Тимофеев В | 4h | 4h |
| 993 | 2.110 | монтаж воздуховод приточный в площадку загрузки смесителя |  | 3h | 2026-06-05 09:00 A | 2026-06-05 12:00 A |  | 100% |  |  |  |  |  | start no earlier than 2026-06-05 09:00 | Некрасов А | 3h | 3h |
| 994 | 2.111 | очистка вентилятора окно экструдер |  | 40min | 2026-06-04 09:00 A | 2026-06-04 09:40 A |  | 100% |  |  |  |  |  | start no earlier than 2026-06-04 09:00 | Некрасов А; Бундин В | 1.33h | 1.33h |
| 995 | 2.112 | **доп освещение зона охладитель** |  | 4.75d? | 2026-06-09 09:00 | 2026-06-15 16:00 |  | 100% |  | 2026-06-10 09:00 | 2026-08-06 11:00 |  |  |  |  | 12.67h | 12.67h |
| 996 | 2.112.1 | спланировать монтаж / проверить наличие матералов |  | 20min | 2026-06-25 09:00 A | 2026-06-25 09:20 A |  | 100% |  |  |  |  |  | start no earlier than 2026-06-25 09:00 | Шуранов Ю; Дедов В | 0.67h | 0.67h |
| 997 | 2.112.2 | заказать |  | 1d? | 2026-06-10 09:00 A | 2026-06-10 18:00 A |  | 100% |  |  |  |  |  | start no earlier than 2026-06-10 09:00 | Шуранов Ю | 8h | 8h |
| 998 | 2.112.3 | монтаж |  | 2h | 2026-08-06 09:00 A | 2026-08-06 11:00 A | 996 | 100% |  |  |  |  |  | start no earlier than 2026-08-06 09:00 | Тимофеев В; Бундин В | 4h | 4h |
| 999 | 2.113 | отключить двигатель зиплока бестром |  | 1h | 2026-06-12 09:00 A | 2026-06-12 10:00 A |  | 100% |  |  |  |  |  | start no earlier than 2026-06-12 09:00 | Бундин В | 1h | 1h |
| 1000 | 2.114 | ж гардероб душ кабина осмотр гидрозатвор - сильный запах |  | 2h | 2026-05-30 09:00 A | 2026-06-01 11:00 A |  | 100% |  |  |  |  |  | start no earlier than 2026-05-30 09:00 | Бобренок В | 2h | 2h |
| 1001 | 2.115 | ремонт кресло , паук находится на складе у Веры |  | 1h | 2026-06-13 09:00 A | 2026-06-15 10:00 A |  | 100% |  |  |  |  |  | start no earlier than 2026-06-13 09:00 | Бобренок В | 1h | 1h |
| 1002 | 2.116 | ревизия нихром запайщик |  | 1h | 2026-05-29 09:00 A | 2026-05-29 10:00 A |  | 100% |  |  |  |  |  | start no earlier than 2026-05-29 08:00 | Бундин В | 1h | 1h |
| 1003 | 2.117 | штабелер 2ц ревизия колес |  | 1h | 2026-06-01 09:00 A | 2026-06-01 10:00 A |  | 100% |  |  |  |  |  | start no earlier than 2026-06-01 09:00 | Макаревич А | 1h | 1h |
| 1004 | 2.118 | **ремонт эл котел №3 охладитель** |  | 79.25d? | 2026-06-05 09:00 A | 2026-09-19 11:00 |  | 92% | 6.54d? |  |  | 119.31d |  |  |  | 24.25h | 22.25h |
| 1005 | 2.118.1 | заказать плату |  | 1d? | 2026-07-15 09:00 A | 2026-07-15 18:00 A |  | 100% |  |  |  |  |  | start no earlier than 2026-07-15 09:00 | Зорькин В | 8h | 8h |
| 1006 | 2.118.2 | замена силовой платы зота в районе мойки экструдера (плата на складе) -проверка | manual | 2h | 2026-08-09 09:00 A | 2026-08-09 11:00 A |  | 100% |  |  |  |  |  | start no earlier than 2026-08-09 09:00 | Бобренок В | 2h | 2h |
| 1007 | 2.118.3 | котел №3 проверка платы силовой управления тенами (после откл управления перегрелся пошел дым) на складе есть платы 2 шт. для ЗОТА. Слава плату заменил грешит на д температуры |  | 2h | 2026-09-01 09:00 A | 2026-09-01 11:00 A |  | 100% |  |  |  |  |  | start no earlier than 2026-09-01 09:00 | Дедов В | 2h | 2h |
| 1008 | 2.118.4 | Замена силовой платы, где сгорела 1 ТТР |  | 2h | 2026-08-31 08:00 A | 2026-08-31 11:00 A |  | 100% |  |  |  |  |  | start no earlier than 2026-08-31 08:00 | Дедов В | 2h | 2h |
| 1009 | 2.118.5 | Не работает блок тенов, заказать |  | 10min | 2026-09-01 09:00 A | 2026-09-01 09:10 A |  | 100% |  |  |  |  |  | start no earlier than 2026-09-01 08:00 | Зорькин В | 0.17h | 0.17h |
| 1010 | 2.118.6 | Контроль доставки |  | 5min | 2026-09-09 09:00 A | 2026-09-09 09:05 A |  | 100% |  |  |  |  |  | start no earlier than 2026-09-09 09:00 | Зорькин В | 0.08h | 0.08h |
| 1011 | 2.118.7 | замена блок тенов |  | 2h | 2026-09-19 09:00 | 2026-09-19 11:00 |  |  |  |  |  | 119.31d | 0d | start no earlier than 2026-09-19 09:00 | Дедов В | 2h |  |
| 1012 | 2.118.8 | заказать плату управления |  | 1d? | 2026-06-05 09:00 A | 2026-06-05 18:00 A |  | 100% |  |  |  |  |  | start no earlier than 2026-06-05 09:00 | Зорькин В | 8h | 8h |
| 1013 | 2.119 | замена задних подшипников на прекондиционере (посмотреть итальянские на складе) |  | 6h | 2026-05-26 09:00 A | 2026-05-26 16:00 A |  | 100% |  |  |  |  |  | start no earlier than 2026-05-26 09:00 | Тимофеев В; Некрасов А | 12h | 12h |
| 1014 | 2.120 | перемотать трубы скотчем серым и по низу стык улиток "загерметизировать" |  | 2h | 2026-05-25 08:00 A | 2026-05-25 11:00 A |  | 100% |  |  |  |  |  | start no earlier than 2026-05-25 08:00 | Макаревич А | 2h | 2h |

| ID | WBS | Task | Type | Duration | Start | Finish | Complete | Actual finish | Constraint | Resources | Work | Actual work |
| --- | --- | --- | --- | --- | --- | --- | --- | --- | --- | --- | --- | --- |
| 1015 | 2.121 | **изготовить мойка малая из нерж** |  | 0.5d | 2026-06-01 08:00 A | 2026-06-01 13:00 A | 100% |  |  | Макаревич А | 8h | 8h |
| 1016 | 2.121.1 | подключить мойку на месте (по телефону обсудим) |  | 4h | 2026-06-01 08:00 A | 2026-06-01 13:00 A | 100% |  | start no earlier than 2026-06-01 08:00 | Макаревич А | 4h | 4h |
| 1017 | 2.122 | **дополнительное освещение в зоне жиров** |  | 6.5d | 2026-05-26 09:00 A | 2026-06-01 13:00 | 100% | 2026-06-04 09:30 |  |  | 5h | 5h |
| 1018 | 2.122.1 | заказ светильников |  | 1h | 2026-05-26 09:00 A | 2026-05-26 10:00 A | 100% |  | start no earlier than 2026-05-26 09:00 | Шуранов Ю | 1h | 1h |
| 1019 | 2.122.2 | монтаж |  | 4h | 2026-06-01 09:00 A | 2026-06-01 13:00 A | 100% |  | start no earlier than 2026-06-01 09:00 | Макаревич А | 4h | 4h |
| 1020 | 2.122.3 | подключить к автомату на мойке |  | 0.5h | 2026-06-04 09:00 A | 2026-06-04 09:30 A | 100% |  | start no earlier than 2026-06-04 09:00 |  |  |  |
| 1021 | 2.123 | подключить пк мастеров через ИБП (согласовать с мастером 1 цеха) |  | 1h | 2026-05-25 09:00 A | 2026-05-25 10:00 A | 100% |  | start no earlier than 2026-05-25 08:00 | Шуранов Ю | 1h | 1h |
| 1022 | 2.124 | заменить помпу на термопоте в кухне |  | 1h | 2026-05-27 09:00 A | 2026-05-27 10:00 A | 100% |  | start no earlier than 2026-05-27 09:00 | Дедов В | 1h | 1h |
| 1023 | 2.125 | лопнул шланг от насосной станции до редуктора- заменить |  | 1h | 2026-05-25 08:00 A | 2026-05-25 10:00 A | 100% |  | start no earlier than 2026-05-25 08:00 | Макаревич А | 1h | 1h |
| 1024 | 2.126 | установить влагоотделитель на квадропак |  | 1h | 2026-05-25 08:00 A | 2026-05-25 10:00 A | 100% |  | start no earlier than 2026-05-25 08:00 | Дедов В | 1h | 1h |
| 1025 | 2.127 | закрепить монтажную коробку в коридоре до жировика слева, от кондиционера |  | 1h | 2026-05-22 09:00 A | 2026-05-22 10:00 A | 100% |  | start no earlier than 2026-05-22 09:00 | Бобренок В | 1h | 1h |
| 1026 | 2.128 | закрепить на доп. Клипсы трубу-воздух к стене за бестромом |  | 1h | 2026-05-23 09:00 A | 2026-05-25 10:00 A | 100% |  | start no earlier than 2026-05-23 09:00 | Бобренок В | 1h | 1h |
| 1027 | 2.129 | заменить сетку печки (находиться в слесарке) | manual | 3h | 2026-05-24 09:00 A | 2026-05-24 12:00 A | 100% |  | start no earlier than 2026-05-24 09:00 | Макаревич А | 3h | 3h |
| 1028 | 2.130 | уложить красиво и закрепить гофру от нории до красного смесителя | manual | 2h | 2026-05-24 09:00 A | 2026-05-24 11:00 A | 100% |  | start no earlier than 2026-05-24 09:00 | Макаревич А | 2h | 2h |
| 1029 | 2.131 | взять ножевой узел с желтого склада и фильеры, подготовить и передать во второй цех на экструдер |  | 1h | 2026-05-21 09:00 A | 2026-05-21 10:00 A | 100% |  | start no earlier than 2026-05-21 08:00 | Бундин В | 1h | 1h |
| 1030 | 2.132 | проверить все лотки на охладителе, чтобы не задевали сетку- если нужно поднять. |  | 1h | 2026-05-21 09:00 A | 2026-05-21 10:00 A | 100% |  | start no earlier than 2026-05-21 08:00 | Бундин В | 1h | 1h |
| 1031 | 2.133 | чистка парогенератора, если нужно замена электродов |  | 2h | 2026-05-21 08:00 A | 2026-05-21 11:00 A | 100% |  | start no earlier than 2026-05-21 08:00 | Тимофеев В | 2h | 2h |
| 1032 | 2.134 | чистка фильтра редуктора экструдера, проверка уровня масла |  | 1h | 2026-05-21 08:00 A | 2026-05-21 10:00 A | 100% |  | start no earlier than 2026-05-21 08:00 | Тимофеев В | 1h | 1h |
| 1033 | 2.135 | проверить пневмоцилиндры на встряхивателях квадропака |  | 1h | 2026-05-21 08:00 A | 2026-05-21 10:00 A | 100% |  | start no earlier than 2026-05-21 08:00 | Бобренок В | 1h | 1h |
| 1034 | 2.136 | проверка токов на печи, если просадка проверяем перемычки, тены |  | 1h | 2026-05-21 09:00 A | 2026-05-21 10:00 A | 100% |  | start no earlier than 2026-05-21 08:00 | Некрасов А | 1h | 1h |
| 1035 | 2.137 | коротит на баке жиров все проверить |  | 1h | 2026-05-21 09:00 A | 2026-05-21 10:00 A | 100% |  | start no earlier than 2026-05-21 08:00 |  |  |  |
| 1036 | 2.138 | в зоне фасовки сделать конструкцию, чтобы не выпадала макулатура |  | 6h | 2026-08-31 09:00 A | 2026-08-31 16:00 A | 100% |  | start no earlier than 2026-08-31 09:00 | Макаревич А | 6h | 6h |
| 1037 | 2.139 | закрепить доводчик на входной двери |  | 1h | 2026-05-23 09:00 A | 2026-05-25 10:00 A | 100% |  | start no earlier than 2026-05-23 09:00 | Бундин В | 1h | 1h |
| 1038 | 2.140 | установить розетку для палетооботчика на его колону |  | 2h | 2026-05-18 09:00 A | 2026-05-18 11:00 A | 100% |  | start no earlier than 2026-05-18 09:00 | Дедов В | 2h | 2h |

| ID | WBS | Task | Type | Duration | Start | Finish | Predecessors | Complete | Constraint | Resources | Work | Actual work |
| --- | --- | --- | --- | --- | --- | --- | --- | --- | --- | --- | --- | --- |
| 1039 | 2.141 | **ИБП установить на принтер SAVEMA** |  | 5.25d | 2026-05-19 09:00 A | 2026-05-26 11:00 A |  | 100% |  |  | 3.25h | 3.25h |
| 1040 | 2.141.1 | подбор и заявка ИБП |  | 1h | 2026-05-19 09:00 A | 2026-05-19 10:00 A |  | 100% | start no earlier than 2026-05-19 09:00 | Шуранов Ю | 1h | 1h |
| 1041 | 2.141.2 | контроль поставки |  | 15min | 2026-05-26 09:00 A | 2026-05-26 09:15 A |  | 100% | start no earlier than 2026-05-26 09:00 | Шуранов Ю | 0.25h | 0.25h |
| 1042 | 2.141.3 | монтаж и подключение в шкафу | manual | 2h | 2026-05-26 09:00 A | 2026-05-26 11:00 A | 1041 | 100% | start no earlier than 2026-05-26 09:00 | Дедов В | 2h | 2h |
| 1043 | 2.142 | **переместить на склад ЗИП палет сетка, зарядка АКБ штабелера** |  | 0.12d | 2026-06-01 09:00 A | 2026-06-01 10:00 A |  | 100% |  |  | 1h | 1h |
| 1044 | 2.142.1 | зарядку АКБ переместить в контейнер, она находится в мойке зона экструдера | manual | 1h | 2026-06-01 09:00 A | 2026-06-01 10:00 A |  | 100% | start no earlier than 2026-06-01 09:00 | Макаревич А | 1h | 1h |
| 1045 | 2.143 | **бестром замена линейный подшипник прижима красных ремней** |  | 24.5d | 2026-05-15 09:00 A | 2026-06-18 13:00 A |  | 100% |  |  | 5.25h | 5.25h |
| 1046 | 2.143.1 | заявка |  | 1h | 2026-05-15 09:00 A | 2026-05-15 10:00 A |  | 100% | start no earlier than 2026-05-15 09:00 | Зорькин В | 1h | 1h |
| 1047 | 2.143.2 | доставка контроль |  | 15min | 2026-05-27 10:00 A | 2026-05-27 10:15 A | 1046FS+10d | 100% | start no earlier than 2026-05-14 08:00 | Зорькин В | 0.25h | 0.25h |
| 1048 | 2.143.3 | замена |  | 4h | 2026-06-18 09:00 A | 2026-06-18 13:00 A | 1047 | 100% | start no earlier than 2026-06-18 09:00 | Тимофеев В | 4h | 4h |
| 1049 | 2.144 | осмотр цепи муфты редуктора экструдера |  | 1h | 2026-05-14 09:00 A | 2026-05-14 10:00 A |  | 100% | start no earlier than 2026-05-14 09:00 | Тимофеев В | 1h | 1h |
| 1050 | 2.145 | Линия 3 на жирах нужно поменять колеса на транспортёре, который идет на охладитель |  | 1h | 2026-05-14 09:00 A | 2026-05-14 10:00 A |  | 100% | start no earlier than 2026-05-14 09:00 | Макаревич А | 1h | 1h |
| 1051 | 2.146 | осмотр прекондиционер "звон" |  | 30min | 2026-05-14 09:00 A | 2026-05-14 09:30 A |  | 100% | start no earlier than 2026-05-14 09:00 | Тимофеев В | 0.5h | 0.5h |
| 1052 | 2.147 | **заменить гофра унитаз правый отсек** |  | 16.12d | 2026-05-13 09:00 A | 2026-06-04 10:00 A |  | 100% |  |  | 41.25h | 41.25h |
| 1053 | 2.147.1 | заявка гофра |  | 15min | 2026-05-13 09:00 A | 2026-05-13 09:15 A |  | 100% | start no earlier than 2026-05-13 09:00 | Зорькин В | 0.25h | 0.25h |
| 1054 | 2.147.2 | доставка |  | 5d | 2026-05-13 09:15 A | 2026-05-20 09:15 A | 1053 | 100% | start no earlier than 2026-05-12 08:00 | Карабанов | 40h | 40h |
| 1055 | 2.147.3 | замена |  | 1h | 2026-06-04 09:00 A | 2026-06-04 10:00 A | 1054 | 100% | start no earlier than 2026-06-04 09:00 | Бобренок В | 1h | 1h |
| 1056 | 2.148 | замена смазка шприц на экструдере |  | 30min | 2026-05-13 09:00 A | 2026-05-13 09:30 A |  | 100% | start no earlier than 2026-05-13 09:00 | Некрасов А | 0.5h | 0.5h |
| 1057 | 2.149 | замена передний подшипник + набивка прекондиционер |  | 1h | 2026-05-14 09:00 A | 2026-05-14 10:00 A |  | 100% | start no earlier than 2026-05-14 09:00 | Тимофеев В | 1h | 1h |
| 1058 | 2.150 | прикрутить лоток выше на 1 ярусе, задевает сетку со сторону редуктора |  | 1h | 2026-05-08 08:00 A | 2026-05-08 10:00 A |  | 100% | start no earlier than 2026-05-08 08:00 | Макаревич А | 1h | 1h |
| 1059 | 2.151 | взять шайбу у нас в кабинете и шлифануть одну сторону |  | 1h | 2026-05-08 09:00 A | 2026-05-08 10:00 A |  | 100% | start no earlier than 2026-05-08 09:00 | Макаревич А | 1h | 1h |
| 1060 | 2.152 | смотровое окно на загрузке прекондиционера установить |  | 4h | 2026-08-25 09:00 A | 2026-08-25 13:00 A |  | 100% | start no earlier than 2026-08-31 09:00 | Тимофеев В | 4h | 4h |
| 1061 | 2.153 | добавить воду в систему отопления зота охладитель |  | 1h | 2026-05-09 09:00 A | 2026-05-11 10:00 A |  | 100% | start no earlier than 2026-05-09 09:00 | Макаревич А | 1h | 1h |
| 1062 | 2.154 | монтаж сетки на палетообмотчике | manual | 4h | 2026-05-14 09:00 A | 2026-05-14 13:00 A |  | 100% | start no earlier than 2026-05-14 09:00 | Некрасов А; Труфанов А | 8h | 8h |
| 1063 | 2.155 | Собрать стул, находится в кабинете мастеров 2 цех |  | 1h | 2026-05-13 09:00 A | 2026-05-13 10:00 A |  | 100% | start no earlier than 2026-05-13 09:00 | Бундин В | 1h | 1h |

| ID | WBS | Task | Type | Duration | Start | Finish | Complete | Actual start | Actual finish | Constraint | Resources | Work | Actual work |
| --- | --- | --- | --- | --- | --- | --- | --- | --- | --- | --- | --- | --- | --- |
| 1064 | 2.156 | **взять у нас на складе инсектицидные светильники и повесить их во 2 цехе, где нет** |  | 1.12d | 2026-05-12 09:00 A | 2026-05-13 10:00 A | 100% |  |  |  |  | 3h | 3h |
| 1065 | 2.156.1 | ремонт |  | 2h | 2026-05-12 09:00 A | 2026-05-12 11:00 A | 100% |  |  | start no earlier than 2026-05-12 09:00 | Бундин В | 2h | 2h |
| 1066 | 2.156.2 | монтаж ламп / заполнить в журнал мастера |  | 1h | 2026-05-13 09:00 A | 2026-05-13 10:00 A | 100% |  |  | start no earlier than 2026-05-13 09:00 | Бундин В | 1h | 1h |
| 1067 | 2.157 | герметиком замазать гофру на унитазах (запах) | manual | 1h | 2026-05-07 08:00 A | 2026-05-07 09:00 A | 100% |  |  | start no earlier than 2026-05-07 08:00 | Бобренок В | 1h | 1h |
| 1068 | 2.158 | заменить фильтр на приточку 2 этаж |  | 1h | 2026-05-07 08:00 A | 2026-05-07 10:00 A | 100% |  |  | start no earlier than 2026-05-07 08:00 | Тимофеев В | 1h | 1h |
| 1069 | 2.159 | ревизия перемычек, тен на печи - замена |  | 4h | 2026-05-07 09:00 A | 2026-05-07 13:00 A | 100% |  |  | start no earlier than 2026-05-07 08:00 | Труфанов А | 4h | 4h |
| 1070 | 2.160 | **повесить на места светильники инсектицидные (замена ламп)** |  | 1d? | 2026-05-11 09:00 | 2026-05-11 18:00 | 100% | 2026-05-12 09:00 | 2026-05-12 11:00 |  |  | 2h | 2h |
| 1071 | 2.160.1 | **заказать досели** |  | 0.25d | 2026-05-12 09:00 A | 2026-05-12 11:00 A | 100% |  |  |  |  | 2h | 2h |
| 1072 | 2.160.1.1 | ремонт не рабочих светильников |  | 2h | 2026-05-12 09:00 A | 2026-05-12 11:00 A | 100% |  |  | start no earlier than 2026-05-12 09:00 | Бундин В | 2h | 2h |
| 1073 | 2.161 | уложить кабель в гофре вдоль экструдера в лоток |  | 2h | 2026-05-04 09:00 A | 2026-05-04 11:00 A | 100% |  |  | start no earlier than 2026-05-04 08:00 | Бундин В | 2h | 2h |
| 1074 | 2.162 | **подготовить ТРМ для парогенератора цех 2** |  | 0d | 2026-05-16 09:00 A | 2026-05-16 10:00 A | 100% |  |  |  | Дедов В | 1h | 1h |
| 1075 | 2.162.1 | установить на остановке ТРМ (который сняли отдать Дедову для восстановления) восстановить кнопку | manual | 1h | 2026-05-16 09:00 A | 2026-05-16 10:00 A | 100% |  |  | start no earlier than 2026-05-16 09:00 | Дедов В | 1h | 1h |
| 1076 | 2.163 | повесить светильники 3шт. |  | 1h | 2026-05-04 09:00 A | 2026-05-04 10:00 A | 100% |  |  | start no earlier than 2026-05-04 08:00 | Труфанов А | 1h | 1h |
| 1077 | 2.164 | монтаж свет на фасовке |  | 8h | 2026-05-05 09:00 A | 2026-05-05 18:00 A | 100% |  |  | start no earlier than 2026-05-05 09:00 | Тимофеев В; Труфанов А | 15h | 15h |
| 1078 | 2.165 | заменить кулер в ШУ на жирах |  | 1h | 2026-04-29 08:00 A | 2026-04-29 10:00 A | 100% |  |  | start no earlier than 2026-04-29 08:00 | Дедов В | 1h | 1h |
| 1079 | 2.166 | заменить 3х ходовой кран и фитинги с гайкой на жирах |  | 1h | 2026-04-29 09:00 A | 2026-04-29 10:00 A | 100% |  |  | start no earlier than 2026-04-30 09:00 | Дедов В | 1h | 1h |
| 1080 | 2.167 | закрепить на подножке резинку на штабелере зона экструдера (можно на саморез/клепки) |  | 1h | 2026-04-29 08:00 A | 2026-04-29 10:00 A | 100% |  |  | start no earlier than 2026-04-29 08:00 | Дедов В | 1h | 1h |
| 1081 | 2.168 | **заменить сетку для печи из зип** |  | 0.38d | 2026-05-05 09:00 A | 2026-05-05 12:00 A | 100% |  |  |  |  | 5h | 5h |
| 1082 | 2.168.1 | **заменить сетку , которую сняли с печи** |  | 3h | 2026-05-05 09:00 A | 2026-05-05 12:00 A | 100% |  |  |  | Бундин В | 5h | 5h |
| 1083 | 2.168.1.1 | ремонт сетки |  | 2h | 2026-05-05 09:00 A | 2026-05-05 11:00 A | 100% |  |  | start no earlier than 2026-05-05 09:00 | Бобренок В | 2h | 2h |
| 1084 | 2.169 | под норией сыпит сырье устранить |  | 4h | 2026-04-30 09:00 A | 2026-04-30 13:00 A | 100% |  |  | start no earlier than 2026-04-30 09:00 | Труфанов А; Некрасов А | 8h | 8h |
| 1085 | 2.170 | устранить течь, сброс пара под прекондиционером |  | 1h | 2026-05-01 09:00 A | 2026-05-01 10:00 A | 100% |  |  | start no earlier than 2026-05-01 09:00 | Дедов В | 1h | 1h |
| 1086 | 2.171 | устранить течь редуктор прекондиционера |  | 5h | 2026-04-29 09:00 A | 2026-04-29 15:00 A | 100% |  |  | start no earlier than 2026-04-29 08:00 | Некрасов А; Труфанов А | 10h | 10h |
| 1087 | 2.172 | почистить фильтр на поломоечной машинке |  | 1h | 2026-04-29 09:00 A | 2026-04-29 10:00 A | 100% |  |  | start no earlier than 2026-04-29 09:00 | Тимофеев В | 1h | 1h |
| 1088 | 2.173 | Полное ТО квадропак (чистка тен, смазка штоков пневмоцилиндров, шприцевание подшипников) |  | 3h | 2026-04-28 09:00 A | 2026-04-28 12:00 A | 100% |  |  | start no earlier than 2026-04-28 09:00 | Тимофеев В | 3h | 3h |
| 1089 | 2.174 | Полное ТО бестром (чистка тен, смазка штоков пневмоцилиндров, шприцевание подшипников) |  | 2h | 2026-04-28 09:00 A | 2026-04-28 11:00 A | 100% |  |  | start no earlier than 2026-04-28 09:00 | Тимофеев В | 2h | 2h |
| 1090 | 2.175 | демонтаж инсектютерной ламп на очистку / продуть |  | 1h | 2026-04-27 08:00 A | 2026-04-27 10:00 A | 100% |  |  | start no earlier than 2026-04-27 08:00 | Тимофеев В | 1h | 1h |
| 1091 | 2.176 | ремонт инсектецидных ламп взять у Мастера в каб. (проверить контакты соединения самих лам, дросели). 3 исправно/1 сломан дросель |  | 1h | 2026-04-29 09:00 A | 2026-04-29 10:00 A | 100% |  |  | start no earlier than 2026-04-29 09:00 | Дедов В | 1h | 1h |

| ID | WBS | Task | Type | Duration | Start | Finish | Predecessors | Complete | Remaining | Actual start | Total slack | Constraint | Resources | Work | Actual work |
| --- | --- | --- | --- | --- | --- | --- | --- | --- | --- | --- | --- | --- | --- | --- | --- |
| 1092 | 2.177 | **замена дроселя инсекцидной лампы** |  | 17.38d | 2026-04-30 09:00 A | 2026-05-25 12:00 A |  | 100% |  |  |  |  |  | 84.25h | 84.25h |
| 1093 | 2.177.1 | заявка |  | 15min | 2026-04-30 09:00 A | 2026-04-30 09:15 A |  | 100% |  |  |  | start no earlier than 2026-04-30 08:00 | Шуранов Ю | 0.25h | 0.25h |
| 1094 | 2.177.2 | замена |  | 3h | 2026-05-25 08:00 A | 2026-05-25 12:00 A |  | 100% |  |  |  | start no earlier than 2026-05-25 08:00 | Дедов В | 3h | 3h |
| 1095 | 2.177.3 | доставка |  | 10d | 2026-05-04 09:00 A | 2026-05-18 18:00 A | 1093 | 100% |  |  |  | start no earlier than 2026-05-04 09:00 | Карабанов | 80h | 80h |
| 1096 | 2.177.4 | замена |  | 1h | 2026-05-12 09:00 A | 2026-05-12 10:00 A |  | 100% |  |  |  | start no earlier than 2026-05-12 09:00 | Бундин В | 1h | 1h |
| 1097 | 2.178 | поликарбанат в зоне седла жировика оторвался, ремонт |  | 1h | 2026-04-30 09:00 A | 2026-04-30 10:00 A |  | 100% |  |  |  | start no earlier than 2026-04-30 09:00 | Бундин В | 1h | 1h |
| 1098 | 2.179 | зачистить и покрасить решетку на входе в 2 ц. |  | 4h | 2026-04-28 09:00 A | 2026-04-28 13:00 A |  | 100% |  |  |  | start no earlier than 2026-04-28 09:00 | Дворник | 4h | 4h |
| 1099 | 2.180 | поднять лотки на 10 мм на охладителе со стороны фасовки (видео вышлю) |  | 1h | 2026-04-24 09:00 A | 2026-04-24 10:00 A |  | 100% |  |  |  | start no earlier than 2026-04-24 08:00 | Бундин В | 1h | 1h |
| 1100 | 2.181 | добавить в систему отопления котла в мойке и в охладителе воды | manual | 2h | 2026-04-24 09:00 A | 2026-04-24 11:00 A |  | 100% |  |  |  | start no earlier than 2026-04-24 09:00 | Бундин В | 2h | 2h |
| 1101 | 2.182 | на углы установить отбойники выход с зоны экструдера |  | 2h | 2026-04-23 09:00 A | 2026-04-23 11:00 A |  | 100% |  |  |  | start no earlier than 2026-04-23 08:00 | Бундин В | 2h | 2h |
| 1102 | 2.183 | сделать ТО Бестром (чистка тен и т.д.) |  | 2h | 2026-04-22 08:00 A | 2026-04-22 11:00 A |  | 100% |  |  |  | start no earlier than 2026-04-22 08:00 | Дедов В | 2h | 2h |
| 1103 | 2.184 | собрать кабинку в мужской раздевалке, она там стоит в коробке |  | 1h | 2026-04-23 09:00 A | 2026-04-23 10:00 A |  | 100% |  |  |  | start no earlier than 2026-04-23 09:00 | Дедов В | 1h | 1h |
| 1104 | 2.185 | заменить датчик переполнения на загрузке с синего бункера, на складе взять |  | 1h | 2026-04-29 09:00 A | 2026-04-29 10:00 A |  | 100% |  |  |  | start no earlier than 2026-04-29 09:00 | Дедов В | 1h | 1h |
| 1105 | 2.186 | **включить все исектицидные светильники по цеху, проверить есть ли напряжение в розетках** |  | 0.12d | 2026-04-23 09:00 A | 2026-04-23 10:00 A |  | 100% |  |  |  |  | Дедов В | 2h | 2h |
| 1106 | 2.186.1 | проверить напряжение в розетке светильника на фасовке |  | 1h | 2026-04-23 09:00 A | 2026-04-23 10:00 A |  | 100% |  |  |  | start no earlier than 2026-04-23 08:00 | Бундин В | 1h | 1h |
| 1107 | 2.187 | **установить кольцо "вентури" в фильеру** |  | 2.38d? | 2026-05-04 09:00 | 2026-05-06 12:00 |  | 78% | 0.53d? | 2026-04-27 09:00 |  |  |  | 4.5h | 3.5h |
| 1108 | 2.187.1 | определить диаметр отверстия кольца |  | 1h | 2026-04-27 09:00 A | 2026-04-27 10:00 A |  | 100% |  |  |  | start no earlier than 2026-04-27 09:00 | Зорькин В | 1h | 1h |
| 1109 | 2.187.2 | заявка на изготовление |  | 1h | 2026-04-28 10:00 A | 2026-04-28 11:00 A | 1108FS+1d | 100% |  |  |  | start no earlier than 2026-04-20 08:00 | Зорькин В | 1h | 1h |
| 1110 | 2.187.3 | контроль |  | 1h | 2026-05-04 09:00 A | 2026-05-04 10:00 A | 1109FS+1d | 100% |  |  |  | start no earlier than 2026-05-04 09:00 | Зорькин В | 1h | 1h |
| 1111 | 2.187.4 | заявка на выжечь проставку лдя кольца |  | 30min | 2026-07-15 09:00 A | 2026-07-15 09:30 A |  | 100% |  |  |  | start no earlier than 2026-07-15 09:00 | Зорькин В | 0.5h | 0.5h |
| 1112 | 2.187.5 | контроль доставки | milestone | 0d | 2026-07-22 09:30 A | 2026-07-22 09:30 A | 1111FS+5d | 100% |  |  |  | start no earlier than 2026-07-15 09:00 | Зорькин В |  |  |
| 1113 | 2.187.6 | провести тест |  | 1h | 2026-09-10 09:00 | 2026-09-10 10:00 |  |  |  |  | 134.47d | start no earlier than 2026-09-10 09:00 | Зорькин В | 1h |  |
| 1114 | 2.188 | замена фильтр вода подача в накопитель |  | 1h | 2026-04-21 09:00 A | 2026-04-21 10:00 A |  | 100% |  |  |  | start no earlier than 2026-04-21 09:00 | Тимофеев В | 1h | 1h |
| 1115 | 2.189 | замена потускневших ламп в инсекютере. Мастеру сообщить кол-во. б/у складывать в коробку |  | 2h | 2026-05-04 09:00 A | 2026-05-04 11:00 A |  | 100% |  |  |  | start no earlier than 2026-05-04 09:00 | Макаревич А | 2h | 2h |

| ID | WBS | Task | Type | Duration | Start | Finish | Predecessors | Complete | Actual start | Actual finish | Constraint | Resources | Work | Actual work |
| --- | --- | --- | --- | --- | --- | --- | --- | --- | --- | --- | --- | --- | --- | --- |
| 1116 | 2.190 | **ограждение палетообмотчика** |  | 19.25d | 2026-04-17 08:00 A | 2026-05-14 11:00 A |  | 100% |  |  |  |  | 190.5h | 190.5h |
| 1117 | 2.190.1 | **подготовка и монтаж рамы** |  | 6.75d | 2026-04-17 08:00 A | 2026-04-27 16:00 A |  | 100% |  |  |  |  | 24h | 24h |
| 1118 | 2.190.1.1 | изготовить ограждения для палетообмотчика (размеры обговорим) |  | 10h | 2026-04-17 08:00 A | 2026-04-20 11:00 A |  | 100% |  |  | start no earlier than 2026-04-17 08:00 | Макаревич А | 10h | 10h |
| 1119 | 2.190.1.2 | очистка, покраска рам ограждения. Быстросохн грунт-эмаль по ржавчине 3в1. |  | 4h | 2026-04-20 08:00 A | 2026-04-20 13:00 A |  | 100% |  |  | start no earlier than 2026-04-20 08:00 | Макаревич А | 4h | 4h |
| 1120 | 2.190.1.3 | монтаж рамы ограждения |  | 4h | 2026-04-27 09:00 A | 2026-04-27 13:00 A | 1119 | 100% |  |  | start no earlier than 2026-04-27 09:00 | Тимофеев В | 4h | 4h |
| 1121 | 2.190.1.4 | приварить пластины под стойки ограждения и закрепить к полу, чтобы оператор был вне зоны опасности) |  | 6h | 2026-04-25 09:00 A | 2026-04-27 16:00 A |  | 100% |  |  | start no earlier than 2026-04-25 09:00 | Макаревич А | 6h | 6h |
| 1122 | 2.190.2 | **обклеить рамы лентой** |  | 17.25d | 2026-04-21 09:00 A | 2026-05-14 11:00 A |  | 100% |  |  |  |  | 82.25h | 82.25h |
| 1123 | 2.190.2.1 | заявка клейка лента сигнальная черно-желтая / негабарит |  | 15min | 2026-04-21 09:00 A | 2026-04-21 09:15 A |  | 100% |  |  | start no earlier than 2026-04-21 09:00 | Зорькин В | 0.25h | 0.25h |
| 1124 | 2.190.2.2 | доставка |  | 10d | 2026-04-21 09:15 A | 2026-05-05 09:15 A | 1123 | 100% |  |  | start no earlier than 2026-04-20 08:00 | Карабанов | 80h | 80h |
| 1125 | 2.190.2.3 | монтаж ленты черно-желтой |  | 2h | 2026-05-14 09:00 A | 2026-05-14 11:00 A | 1124 | 100% |  |  | start no earlier than 2026-05-14 09:00 | Бобренок В | 2h | 2h |
| 1126 | 2.190.3 | **монтаж сетки на раму** |  | 10.03d | 2026-04-21 09:00 A | 2026-05-05 09:15 A |  | 100% |  |  |  |  | 84.25h | 84.25h |
| 1127 | 2.190.3.1 | заявка сетка для ограждения |  | 15min | 2026-04-21 09:00 A | 2026-04-21 09:15 A |  | 100% |  |  | start no earlier than 2026-04-21 09:00 | Зорькин В | 0.25h | 0.25h |
| 1128 | 2.190.3.2 | доставка сетка |  | 10d | 2026-04-21 09:15 A | 2026-05-05 09:15 A | 1127 | 100% |  |  | start no earlier than 2026-04-20 08:00 | Карабанов | 80h | 80h |
| 1129 | 2.190.3.3 | монтаж сетка |  | 4h | 2026-05-04 09:15 A | 2026-05-04 14:15 A | 1128 | 100% |  |  | start no earlier than 2026-04-20 08:00 | Некрасов А | 4h | 4h |
| 1130 | 2.191 | воздухозабоник циклона отпилить и вернуть как было раньше |  | 1h | 2026-04-28 09:00 A | 2026-04-28 10:00 A |  | 100% |  |  | start no earlier than 2026-04-28 09:00 | Тимофеев В | 1h | 1h |
| 1131 | 2.192 | проверка всех гидроаккумуляторов парогенератор, в вент комнате и отопительные |  | 2h | 2026-04-17 09:00 A | 2026-04-17 11:00 A |  | 100% |  |  | start no earlier than 2026-04-17 08:00 |  |  |  |
| 1132 | 2.193 | сборка полетообмотчика на фасовке |  | 1h | 2026-04-16 09:00 A | 2026-04-16 10:00 A |  | 100% |  |  | start no earlier than 2026-04-16 09:00 | Бобренок В | 1h | 1h |
| 1133 | 2.194 | заменить ремень на охладителе |  | 1h | 2026-04-15 09:00 A | 2026-04-15 10:00 A |  | 100% |  |  | start no earlier than 2026-04-15 08:00 | Некрасов А | 1h | 1h |
| 1134 | 2.195 | оторвался контроллер мониторинга на ШУ экструдера |  | 1h | 2026-04-15 09:00 A | 2026-04-15 10:00 A |  | 100% |  |  | start no earlier than 2026-04-15 08:00 | Некрасов А | 1h | 1h |
| 1135 | 2.196 | **сделать горловину на быстросъемах прекондиционер** |  | 3.88d? | 2026-04-16 09:00 | 2026-04-21 17:00 |  | 100% | 2026-08-20 09:00 | 2026-09-14 12:00 |  |  | 23h | 23h |
| 1136 | 2.196.1 | заказать защелки |  | 1d? | 2026-08-31 09:00 A | 2026-08-31 18:00 A |  | 100% |  |  | start no earlier than 2026-08-31 09:00 | Шуранов Ю | 8h | 8h |
| 1137 | 2.196.2 | Удлинить носик, чтоб можно было вешать мешок, куда будет ссыпаться мука |  | 3h | 2026-09-14 09:00 A | 2026-09-14 12:00 A |  | 100% |  |  | start no earlier than 2026-09-14 08:00 | Макаревич А | 3h | 3h |
| 1138 | 2.196.3 | изготовить установить люк для чистки с обр стороны как в 3ц (шапочка) |  | 4h | 2026-09-12 09:00 A | 2026-09-12 13:00 A |  | 100% |  |  | start no earlier than 2026-09-12 09:00 | Макаревич А | 4h | 4h |
| 1139 | 2.196.4 | установка |  | 1d? | 2026-08-20 09:00 A | 2026-08-20 18:00 A |  | 100% |  |  | start no earlier than 2026-09-02 09:00 | Тимофеев В | 8h | 8h |
| 1140 | 2.197 | перенести светильник квадропака (на край мезонина) |  | 2h | 2026-04-13 09:00 A | 2026-04-13 11:00 A |  | 100% |  |  | start no earlier than 2026-04-13 09:00 | Труфанов А | 2h | 2h |
| 1141 | 2.198 | сделать или мусоросборник на лотке выхода экструдера, или обратный лоток в сторону охдадителя (обсудим по телефону) |  | 4h | 2026-08-31 09:00 A | 2026-08-31 13:00 A |  | 100% |  |  | start no earlier than 2026-08-31 09:00 | Макаревич А | 4h | 4h |
| 1142 | 2.199 | слить конденсат с компрессора, продуть радиаторы, чистка фильтров | manual | 2h | 2026-04-12 09:00 A | 2026-04-12 11:00 A |  | 100% |  |  | start no earlier than 2026-04-12 09:00 | Труфанов А | 2h | 2h |
| 1143 | 2.200 | добавить в систему отопления воды (зона экструдера, вход в мойку) | manual | 2h | 2026-04-12 09:00 A | 2026-04-12 11:00 A |  | 100% |  |  | start no earlier than 2026-04-12 09:00 | Труфанов А | 2h | 2h |
| 1144 | 2.201 | починить стул Шелепову (выстучать середину и посадить на хомут) |  | 1h | 2026-04-11 09:00 A | 2026-04-13 10:00 A |  | 100% |  |  | start no earlier than 2026-04-11 09:00 | Труфанов А | 1h | 1h |
| 1145 | 2.202 | не работает вентилятор третий справа, плохой контакт- прикрутить |  | 1h | 2026-04-10 08:00 A | 2026-04-10 10:00 A |  | 100% |  |  | start no earlier than 2026-04-10 08:00 | Бобренок В | 1h | 1h |
| 1146 | 2.203 | взять канистру со склада и сделать подачу снизу, взять сгон с канистры 2 линии (канистру я видел в гидрализатной 1 ц.) |  | 1h | 2026-04-26 09:00 A | 2026-04-27 10:00 A |  | 100% |  |  | start no earlier than 2026-04-26 09:00 | Макаревич А | 1h | 1h |
| 1147 | 2.204 | сделать лоток под канистру рыбий жир - подача в прекондиционер |  | 3h | 2026-04-11 09:00 A | 2026-04-13 12:00 A |  | 100% |  |  | start no earlier than 2026-04-11 09:00 | Макаревич А | 3h | 3h |
| 1148 | 2.205 | перескочила цепь на 2ом ярусе охладителя -поправить |  | 1h | 2026-04-10 08:00 A | 2026-04-10 10:00 A |  | 100% |  |  | start no earlier than 2026-04-10 08:00 | Макаревич А | 1h | 1h |

| ID | WBS | Task | Type | Duration | Start | Finish | Predecessors | Complete | Remaining | Total slack | Constraint | Resources | Work | Actual work |
| --- | --- | --- | --- | --- | --- | --- | --- | --- | --- | --- | --- | --- | --- | --- |
| 1149 | 2.206 | **установка фосунок - подача жира 2 линия** |  | 5d | 2026-04-24 09:00 A | 2026-04-30 18:00 A |  | 100% |  |  |  |  | 8.42h | 8.42h |
| 1150 | 2.206.1 | заявка краны 1/2 |  | 15min | 2026-04-24 09:00 A | 2026-04-24 09:15 A |  | 100% |  |  | start no earlier than 2026-04-24 08:00 | Зорькин В | 0.25h | 0.25h |
| 1151 | 2.206.2 | доставка контроль |  | 10min | 2026-04-30 09:15 A | 2026-04-30 09:25 A | 1150FS+5d | 100% |  |  | start no earlier than 2026-04-24 08:00 | Зорькин В | 0.17h | 0.17h |
| 1152 | 2.206.3 | сборка кронштейн для фильтров + счетчик |  | 4h | 2026-04-30 09:25 A | 2026-04-30 14:25 A | 1151 | 100% |  |  | start no earlier than 2026-04-24 08:00 | Тимофеев В | 4h | 4h |
| 1153 | 2.206.4 | монтаж на линию фильтры + кронштейн + форсунка |  | 4h | 2026-04-30 13:25 A | 2026-04-30 18:00 A | 1152 | 100% |  |  | start no earlier than 2026-04-24 08:00 | Тимофеев В | 4h | 4h |
| 1154 | 2.207 | вывести на синий склад старые цепи от печи зона навесок |  | 2h | 2026-05-22 09:00 A | 2026-05-22 11:00 A |  | 100% |  |  | start no earlier than 2026-04-09 08:00 | Тимофеев В | 2h | 2h |
| 1155 | 2.208 | прикрутить уголок снизу выхода охладителя, забивается кормом (фото скину) |  | 1h | 2026-04-08 09:00 A | 2026-04-08 10:00 A |  | 100% |  |  | start no earlier than 2026-04-08 08:00 | Бундин В | 1h | 1h |
| 1156 | 2.209 | закрыть шибер кондиционера над жировиком |  | 1h | 2026-04-09 09:00 A | 2026-04-09 10:00 A |  | 100% |  |  | start no earlier than 2026-04-09 09:00 | Бобренок В | 1h | 1h |
| 1157 | 2.210 | прикрутить оргстекло в аквариуме где забрасывают навески в смеситель |  | 1h | 2026-04-08 09:00 A | 2026-04-08 10:00 A |  | 100% |  |  | start no earlier than 2026-04-08 09:00 | Бундин В | 1h | 1h |
| 1158 | 2.211 | ревизия двигатель, контакты ножевого узла |  | 1h | 2026-04-09 09:00 A | 2026-04-09 10:00 A |  | 100% |  |  | start no earlier than 2026-04-09 09:00 | Тимофеев В | 1h | 1h |
| 1159 | 2.212 | земена сеток печи |  | 2h | 2026-05-04 09:00 A | 2026-05-04 11:00 A |  | 100% |  |  | start no earlier than 2026-05-04 09:00 | Макаревич А; Некрасов А; Тимофеев В | 4h | 4h |
| 1160 | 2.213 | получить метал-лоток 100х50, закрепить слева от двери выхода с зоны экструдера и уложить все провода | manual | 2h | 2026-04-11 09:00 A | 2026-04-11 11:00 A |  | 100% |  |  |  | Труфанов А | 2h | 2h |
| 1161 | 2.214 | получить аллюминевый скотч- замотать стыки циклона, улитки печек, место рычага шибера улитки | manual | 2h | 2026-04-05 09:00 A | 2026-04-05 11:00 A |  | 100% |  |  | start no earlier than 2026-04-05 09:00 | Труфанов А | 2h | 2h |
| 1162 | 2.215 | **установить водоподготовку на парогенератор** |  | 139d? | 2026-04-08 09:00 A | 2026-10-09 18:00 |  | 3% | 135.24d? | 107.59d |  |  | 17.25h | 0.25h |
| 1163 | 2.215.1 | планирование монтажа |  | 1h | 2026-10-05 09:00 | 2026-10-05 10:00 |  |  |  | 112.47d | start no earlier than 2026-10-05 09:00 | Домоводов К | 1h |  |
| 1164 | 2.215.2 | запрос КП | milestone | 0min | 2026-04-08 09:00 A | 2026-04-08 09:00 A |  | 100% |  |  | start no earlier than 2026-04-08 09:00 | Зорькин В |  |  |
| 1165 | 2.215.3 | решение о покупке | milestone | 0d | 2026-04-08 18:00 A | 2026-04-08 18:00 A | 1164FS+1d | 100% |  |  | start no earlier than 2026-04-03 08:00 | Домоводов К |  |  |
| 1166 | 2.215.4 | контроль поставки |  | 15min | 2026-04-27 09:00 A | 2026-04-27 09:15 A |  | 100% |  |  | start no earlier than 2026-04-27 09:00 | Зорькин В | 0.25h | 0.25h |
| 1167 | 2.215.5 | монтаж (установка) |  | 1d? | 2026-10-09 09:00 | 2026-10-09 18:00 |  |  |  | 107.59d | start no earlier than 2026-10-09 09:00 | Тимофеев В; Некрасов А | 16h |  |
| 1168 | 2.216 | **изготовить сетку перед фильерой экструдера от костей** |  | 11d | 2026-04-17 09:00 A | 2026-05-01 18:00 A |  | 100% |  |  |  |  | 83.25h | 83.25h |
| 1169 | 2.216.1 | составить чертеж |  | 2h | 2026-04-17 09:00 A | 2026-04-17 11:00 A |  | 100% |  |  | start no earlier than 2026-04-17 09:00 | Зорькин В | 2h | 2h |
| 1170 | 2.216.2 | разместить заказ |  | 1h | 2026-04-18 11:00 A | 2026-04-20 10:00 A | 1169FS+1d | 100% |  |  | start no earlier than 2026-04-03 08:00 | Зорькин В | 1h | 1h |
| 1171 | 2.216.3 | изготовление |  | 10d | 2026-04-18 12:00 A | 2026-05-01 18:00 A | 1170 | 100% |  |  | start no earlier than 2026-04-03 08:00 | Подрядчик | 80h | 80h |
| 1172 | 2.216.4 | контроль | milestone | 0d | 2026-04-30 12:00 A | 2026-04-30 12:00 A | 1171 | 100% |  |  | start no earlier than 2026-04-03 08:00 | Зорькин В |  |  |
| 1173 | 2.216.5 | орг забрать |  | 15min | 2026-05-01 12:00 A | 2026-05-01 12:15 A | 1172FS+1d | 100% |  |  | start no earlier than 2026-04-03 08:00 | Зорькин В | 0.25h | 0.25h |

| ID | WBS | Task | Type | Duration | Start | Finish | Predecessors | Complete | Actual start | Actual finish | Constraint | Resources | Work | Actual work |
| --- | --- | --- | --- | --- | --- | --- | --- | --- | --- | --- | --- | --- | --- | --- |
| 1174 | 2.217 | **вешалка для дамских сумочек в тамбур при надевании бахил** |  | 13.25d | 2026-05-04 09:00 | 2026-05-18 11:00 |  | 100% | 2026-04-17 09:00 | 2026-06-15 10:00 |  |  | 82h | 82h |
| 1175 | 2.217.1 | заявка |  | 1h | 2026-04-17 09:00 A | 2026-04-17 10:00 A |  | 100% |  |  | start no earlier than 2026-04-17 09:00 | Зорькин В | 1h | 1h |
| 1176 | 2.217.2 | доставка |  | 10d | 2026-04-17 10:00 A | 2026-05-01 10:00 A | 1175 | 100% |  |  | start no earlier than 2026-04-02 08:00 | Карабанов | 80h | 80h |
| 1177 | 2.217.3 | монтаж |  | 1h | 2026-06-13 09:00 A | 2026-06-15 10:00 A | 1176 | 100% |  |  | start no earlier than 2026-06-13 09:00 | Бобренок В | 1h | 1h |
| 1178 | 2.218 | Врезка фитинга 1/2х12мм в дверку прекондиционера 2 цех (созвон с Зорькиным) |  | 30min | 2026-04-09 09:00 A | 2026-04-09 09:30 A |  | 100% |  |  | start no earlier than 2026-04-09 09:00 | Тимофеев В | 0.5h | 0.5h |
| 1179 | 2.219 | проверить контур управления насосом ПГ |  | 1h | 2026-04-02 09:00 A | 2026-04-02 10:00 A |  | 100% |  |  | start no earlier than 2026-04-02 09:00 | Тимофеев В | 1h | 1h |
| 1180 | 2.220 | замена электродной группы или чистка до металла электродов |  | 1h | 2026-04-16 09:00 A | 2026-04-16 10:00 A |  | 100% |  |  | start no earlier than 2026-04-16 09:00 | Макаревич А | 1h | 1h |
| 1181 | 2.221 | закрепить шкаф управления приточной вентиляцией |  | 30min | 2026-04-01 08:00 A | 2026-04-01 09:30 A |  | 100% |  |  | start no earlier than 2026-04-01 08:00 | Бобренок В | 0.5h | 0.5h |
| 1182 | 2.222 | установить пневмо пистолеты на охладители с длинным носиком (у мастеров) |  | 1h | 2026-04-01 08:00 A | 2026-04-01 10:00 A |  | 100% |  |  | start no earlier than 2026-04-01 08:00 | Бобренок В | 1h | 1h |
| 1183 | 2.223 | утечка группа безопасности котел склад навесок устранить |  | 30min | 2026-03-31 08:00 A | 2026-03-31 09:30 A |  | 100% |  |  | start no earlier than 2026-03-31 08:00 | Бобренок В | 0.5h | 0.5h |
| 1184 | 2.224 | закрепить две трубы подачи воздуха в охладителе, пневмо шланг подачи в улитку крепим к стене |  | 2h | 2026-03-27 09:00 A | 2026-03-27 11:00 A |  | 100% |  |  | start no earlier than 2026-03-27 08:00 | Труфанов А | 2h | 2h |
| 1185 | 2.225 | изготовить 2 лотка 700х400х50 мм из нерж под транспортерную ленту транспортер №1 и №2 |  | 6h | 2026-04-04 09:00 A | 2026-04-06 16:00 A |  | 100% |  |  | start no earlier than 2026-04-04 09:00 | Макаревич А | 6h | 6h |
| 1186 | 2.226 | открутить вилку-розетку возле насоса подачи жиров в экструдер |  | 1h | 2026-04-01 09:00 A | 2026-04-01 10:00 A |  | 100% |  |  | start no earlier than 2026-04-01 09:00 | Бобренок В | 1h | 1h |
| 1187 | 2.227 | прикруть кусок металлопрофиля ,чтобы заделать отверстие куда проходит труба отопления (зона где привозят навески) фото скину | manual | 1h | 2026-03-29 09:00 A | 2026-03-29 10:00 A |  | 100% |  |  | start no earlier than 2026-03-29 09:00 | Бундин В | 1h | 1h |
| 1188 | 2.228 | **замена ленты нория** |  | 4.5d | 2026-03-27 08:00 A | 2026-04-02 13:00 A |  | 100% |  |  |  |  | 39.5h | 39.5h |
| 1189 | 2.228.1 | получить материал весь | manual | 30min | 2026-03-29 09:00 A | 2026-03-29 09:30 A |  | 100% |  |  | start no earlier than 2026-03-29 09:00 | Тимофеев В | 0.5h | 0.5h |
| 1190 | 2.228.2 | подготовка кондуктора |  | 2h | 2026-03-27 08:00 A | 2026-03-27 11:00 A |  | 100% |  |  | start no earlier than 2026-03-27 08:00 | Некрасов А; Тимофеев В | 4h | 4h |
| 1191 | 2.228.3 | подготовить к установке норийную ленту, ковши, болты |  | 15h | 2026-03-28 09:00 A | 2026-03-31 17:00 A |  | 100% |  |  | start no earlier than 2026-03-28 09:00 | Дедов В | 15h | 15h |
| 1192 | 2.228.4 | подготовка крепления лебедки для затягивания ленты |  | 4h | 2026-03-31 09:00 A | 2026-03-31 13:00 A |  | 100% |  |  | start no earlier than 2026-03-31 09:00 | Труфанов А; Некрасов А | 8h | 8h |
| 1193 | 2.228.5 | замена ленты |  | 4h | 2026-04-02 09:00 A | 2026-04-02 13:00 A |  | 100% |  |  | start no earlier than 2026-04-02 09:00 | Некрасов А; Макаревич А; Тимофеев В | 12h | 12h |
| 1194 | 2.229 | закрепить гофру на трос -рефрежераторы на территории |  | 1h | 2026-03-27 09:00 A | 2026-03-27 10:00 A |  | 100% |  |  | start no earlier than 2026-03-27 09:00 | Некрасов А | 1h | 1h |
| 1195 | 2.230 | монтаж розетки до канистры с жиром для подачи в экструдер (подключение весов) |  | 2h | 2026-03-26 09:00 A | 2026-03-26 11:00 A |  | 100% |  |  | start no earlier than 2026-03-26 09:00 | Дедов В | 2h | 2h |
| 1196 | 2.231 | заделать щели / маршпуты крыс . Зона хранения навесок (закрутить профлист и запенить отверстие под трубу) |  | 1h | 2026-03-26 09:00 A | 2026-03-26 10:00 A |  | 100% |  |  | start no earlier than 2026-03-26 09:00 | Некрасов А | 1h | 1h |
| 1197 | 2.232 | оперативная замена шнеков |  | 6h | 2026-03-23 09:00 A | 2026-03-23 16:00 A |  | 100% |  |  | start no earlier than 2026-03-23 09:00 | Бобренок В; Бундин В | 12h | 12h |
| 1198 | 2.233 | выдать шланг для продувки бестрома |  | 1h | 2026-03-23 09:00 A | 2026-03-23 10:00 A |  | 100% |  |  | start no earlier than 2026-03-23 09:00 | Бундин В | 1h | 1h |
| 1199 | 2.234 | приварить уголок на лотке в охладитель (фото скину) |  | 2h | 2026-03-24 09:00 A | 2026-03-24 11:00 A |  | 100% |  |  | start no earlier than 2026-03-24 09:00 | Бобренок В | 2h | 2h |
| 1200 | 2.235 | на транспортере с охладителя отрезать концы саморезов на оргстекле (зарапают руки) |  | 1h | 2026-03-23 09:00 A | 2026-03-23 10:00 A |  | 100% |  |  | start no earlier than 2026-03-23 08:00 | Бундин В | 1h | 1h |
| 1201 | 2.236 | насосная станция включить и проверить на кз (выбивало автомат) |  | 2h | 2026-03-31 09:00 A | 2026-03-31 11:00 A |  | 100% |  |  | start no earlier than 2026-03-31 09:00 | Тимофеев В | 2h | 2h |
| 1202 | 2.237 | закрепить трубу РР к стене в районе хранения кубов гидролизат |  | 1h | 2026-03-26 09:00 A | 2026-03-26 10:00 A |  | 100% |  |  | start no earlier than 2026-03-26 09:00 | Тимофеев В | 1h | 1h |
| 1203 | 2.238 | настройка продувка ПГ ч/з 30 мин |  | 30min | 2026-04-02 09:00 A | 2026-04-02 09:30 A |  | 100% |  |  | start no earlier than 2026-04-02 09:00 | Шуранов Ю | 0.5h | 0.5h |
| 1204 | 2.239 | на красном смесителе закусывает ручку шибера - разобраться |  | 2h | 2026-03-26 09:00 A | 2026-03-26 11:00 A |  | 100% |  |  | start no earlier than 2026-03-26 09:00 | Тимофеев В | 2h | 2h |
| 1205 | 2.240 | посмотреть эл. магнит на двери вход ц.2 |  | 1h | 2026-03-27 09:00 A | 2026-03-27 10:00 A |  | 100% |  |  | start no earlier than 2026-03-27 09:00 | Тимофеев В | 1h | 1h |
| 1206 | 2.241 | ящик возле нашего кабинета- прибить или прикрутить дно |  | 1h | 2026-03-22 09:00 A | 2026-03-23 10:00 A |  | 100% |  |  | start no earlier than 2026-03-22 09:00 | Бобренок В | 1h | 1h |
| 1207 | 2.242 | слить конденсат, почистить фильтры и продуть радиаторы |  | 1h | 2026-03-21 09:00 A | 2026-03-23 10:00 A |  | 100% |  |  | start no earlier than 2026-03-21 09:00 | Дедов В | 1h | 1h |
| 1208 | 2.243 | забрать кресло Сапелина на ремонт в слесарку с каб. Шелепова |  | 2h | 2026-03-23 09:00 A | 2026-03-23 11:00 A |  | 100% |  |  | start no earlier than 2026-03-23 09:00 | Тимофеев В | 2h | 2h |
| 1209 | 2.244 | закрепить кабель в гофре на клипсы от розетки слева от ворот жировика |  | 1h | 2026-03-26 09:00 A | 2026-03-26 10:00 A |  | 100% |  |  | start no earlier than 2026-03-26 09:00 | Труфанов А | 1h | 1h |
| 1210 | 2.245 | уложить выше подиума и красиво закрепить на клипсы кабель в гофре от ворот справа (фото вышлю) |  | 1h | 2026-04-16 09:00 A | 2026-04-16 10:00 A |  | 100% |  |  | start no earlier than 2026-04-10 09:00 | Тимофеев В | 1h | 1h |
| 1211 | 2.246 | монтаж отбойников по периметру |  | 4h | 2026-03-25 09:00 A | 2026-03-25 13:00 A |  | 100% |  |  | start no earlier than 2026-03-25 09:00 | Бундин В | 4h | 4h |
| 1212 | 2.247 | перенос отбойник ГП с стороны эл щита, что бы не входл палет |  | 2h | 2026-03-19 08:00 A | 2026-03-19 11:00 A |  | 100% |  |  | start no earlier than 2026-03-19 08:00 | Бобренок В | 2h | 2h |
| 1213 | 2.248 | установить лист сендвич панель на стену жир/экструдер с стороны мойки |  | 3h | 2026-04-07 09:00 A | 2026-04-07 12:00 A |  | 100% |  |  | start no earlier than 2026-04-07 09:00 | Некрасов А; Труфанов А | 6h | 6h |
| 1214 | 2.249 | подлючить пневмоулитку к воздуху в охладителе |  | 1h | 2026-03-31 09:00 A | 2026-03-31 10:00 A |  | 100% |  |  | start no earlier than 2026-03-31 09:00 | Бобренок В | 1h | 1h |
| 1215 | 2.250 | выдать уплотнение на крышки прекондиционера |  | 30min | 2026-03-19 08:00 A | 2026-03-19 09:30 A |  | 100% |  |  | start no earlier than 2026-03-19 08:00 | Бобренок В | 0.5h | 0.5h |

| ID | WBS | Task | Type | Duration | Start | Finish | Predecessors | Complete | Actual start | Actual finish | Constraint | Resources | Work | Actual work |
| --- | --- | --- | --- | --- | --- | --- | --- | --- | --- | --- | --- | --- | --- | --- |
| 1216 | 2.251 | **ворота фасовка** |  | 0.12d | 2026-03-26 09:00 A | 2026-03-26 10:00 A |  | 100% |  |  |  |  | 1h | 1h |
| 1217 | 2.251.1 | закрепить гофру до розетки слева от ворот и закрыть монтажную коробку |  | 1h | 2026-03-26 09:00 A | 2026-03-26 10:00 A |  | 100% |  |  | start no earlier than 2026-03-26 09:00 | Некрасов А | 1h | 1h |
| 1218 | 2.252 | **забивает лоток прекондиционер/экструдер, передалать** |  | 1.62d | 2026-08-31 09:00 A | 2026-09-01 15:00 A |  | 100% |  |  |  |  | 5h | 5h |
| 1219 | 2.252.1 | изготовить чертежи лекалы для воронки |  | 1h | 2026-08-31 09:00 A | 2026-08-31 10:00 A |  | 100% |  |  | start no earlier than 2026-08-31 09:00 | Шуранов Ю | 1h | 1h |
| 1220 | 2.252.2 | изготовление воронки |  | 4h | 2026-09-01 10:00 A | 2026-09-01 15:00 A | 1219FS+1d | 100% |  |  | start no earlier than 2026-09-01 09:00 | Макаревич А | 4h | 4h |
| 1221 | 2.253 | уложить в лоток пучек управления заслонками, отвязать от батареи |  | 1h | 2026-03-17 08:00 A | 2026-03-17 10:00 A |  | 100% |  |  | start no earlier than 2026-03-17 08:00 | Бобренок В | 1h | 1h |
| 1222 | 2.254 | распред коробка подкл вентилятора которого уже нет (кондиционер №3 жиры) - облогородить |  | 30min | 2026-03-17 08:00 A | 2026-03-17 09:30 A |  | 100% |  |  | start no earlier than 2026-03-17 08:00 | Бобренок В | 0.5h | 0.5h |
| 1223 | 2.255 | удалить лотаки с барана |  | 2h | 2026-03-19 09:00 A | 2026-03-19 11:00 A |  | 100% |  |  | start no earlier than 2026-03-19 08:00 | Труфанов А; Некрасов А | 4h | 4h |
| 1224 | 2.256 | упорядочить проводку регистратора данных - стянуть в пучек |  | 1h | 2026-03-20 09:00 A | 2026-03-20 10:00 A |  | 100% |  |  | start no earlier than 2026-03-20 09:00 | Дедов В | 1h | 1h |
| 1225 | 2.257 | **открыть люк у бестрома / ревизяия / закрыть на герметик** |  | 0.12d | 2026-03-19 09:00 A | 2026-03-19 10:00 A |  | 100% |  |  |  | Труфанов А | 2h | 2h |
| 1226 | 2.257.1 | хим. Лаборатория устранить течь с оборудования |  | 1h | 2026-03-19 09:00 A | 2026-03-19 10:00 A |  | 100% |  |  | start no earlier than 2026-03-19 08:00 | Труфанов А | 1h | 1h |
| 1227 | 2.258 | **изготовить 2 лотка из нерж. в зоне жиров по аналогии с первым цехом под транспортером тип 1 и тип 2** |  | 0.25d | 2026-03-16 09:00 A | 2026-03-16 11:00 A |  | 100% |  |  |  | Макаревич А | 4h | 4h |
| 1228 | 2.258.1 | установить отбойник в зону ХХХ, брать в 5А |  | 2h | 2026-03-16 09:00 A | 2026-03-16 11:00 A |  | 100% |  |  | start no earlier than 2026-03-16 09:00 | Бобренок В | 2h | 2h |
| 1229 | 2.259 | **сточить острый край лотка загрузки в охладитель** |  | 0.12d | 2026-03-15 09:00 A | 2026-03-16 10:00 A |  | 100% |  |  |  | Некрасов А | 3h | 3h |
| 1230 | 2.259.1 | вывезти люльку, вывезти бойлер, провода на жирах спрятать в коробку |  | 1h | 2026-03-15 09:00 A | 2026-03-16 10:00 A |  | 100% |  |  | start no earlier than 2026-03-15 09:00 | Бобренок В | 1h | 1h |
| 1231 | 2.259.2 | бойлер в душе - установить трубку на клапан сброса и смонтировать её по стене до канализ трубы |  | 1h | 2026-03-16 09:00 A | 2026-03-16 10:00 A |  | 100% |  |  | start no earlier than 2026-03-16 09:00 | Макаревич А | 1h | 1h |
| 1232 | 2.260 | облогородить кабельный пучек, сделать аккуратно/закрыить крышкой. Слева от двери экструдер/тамбур под лестницей |  | 6h | 2026-04-09 09:00 A | 2026-04-09 16:00 A |  | 100% |  |  | start no earlier than 2026-04-11 09:00 | Труфанов А | 6h | 6h |
| 1233 | 2.261 | **изготовить сетку после барабана по аналогии с сущ 10мм** |  | 2.5d | 2026-03-12 09:00 A | 2026-03-16 13:00 A |  | 100% |  |  |  | Макаревич А | 25.5h | 25.5h |
| 1234 | 2.261.1 | на лоток загрузки в охладитель - установить доп борт с левой стороны, такой же как с правой (съемный) |  | 4h | 2026-03-15 09:00 A | 2026-03-16 13:00 A |  | 100% |  |  | start no earlier than 2026-03-15 09:00 | Бобренок В | 4h | 4h |
| 1235 | 2.261.2 | квадропак стол подачи пакетов устновить кайки с барашком/приварить. + зафиксировать от бокового смещения |  | 1h | 2026-03-16 09:00 A | 2026-03-16 10:00 A |  | 100% |  |  | start no earlier than 2026-03-16 09:00 | Тимофеев В | 1h | 1h |
| 1236 | 2.261.3 | изменить время разгон/торожение привод барабана |  | 30min | 2026-03-12 09:00 A | 2026-03-12 09:30 A |  | 100% |  |  | start no earlier than 2026-03-13 09:00 | Дедов В | 0.5h | 0.5h |
| 1237 | 2.262 | изготовить кожух на шестерни прекондиционера |  | 6h | 2026-04-03 09:00 A | 2026-04-03 16:00 A |  | 100% |  |  | start no earlier than 2026-04-03 09:00 | Макаревич А | 6h | 6h |
| 1238 | 2.263 | **ремонт датчик давления линия 3** |  | 30.25d | 2026-03-26 09:00 | 2026-04-30 11:00 |  | 100% | 2026-05-14 09:00 | 2026-06-11 12:00 |  |  | 124.75h | 124.75h |
| 1239 | 2.263.1 | заявка переходник G1/4 /M20*1.5 токарю |  | 15min | 2026-05-14 09:00 A | 2026-05-14 09:15 A |  | 100% |  |  | start no earlier than 2026-05-14 09:00 | Зорькин В | 0.25h | 0.25h |
| 1240 | 2.263.2 | контроль изг/орг доставка | milestone | 0d | 2026-05-14 09:15 A | 2026-05-14 09:15 A | 1239 | 100% |  |  | start no earlier than 2026-03-20 08:00 |  |  |  |
| 1241 | 2.263.3 | заказ замена + в ЗИП |  | 15min | 2026-05-14 09:15 A | 2026-05-14 09:30 A | 1240 | 100% |  |  | start no earlier than 2026-03-13 09:00 | Зорькин В | 0.25h | 0.25h |
| 1242 | 2.263.4 | заявка на РВД удлинитель |  | 15min | 2026-05-14 09:30 A | 2026-05-14 09:45 A | 1241 | 100% |  |  | start no earlier than 2026-03-12 08:00 | Зорькин В | 0.25h | 0.25h |
| 1243 | 2.263.5 | доставка |  | 15d | 2026-05-14 09:45 A | 2026-06-04 09:45 A | 1242 | 100% |  |  | start no earlier than 2026-03-12 08:00 | Карабанов | 120h | 120h |
| 1244 | 2.263.6 | монтаж |  | 1h | 2026-06-04 09:00 A | 2026-06-04 10:00 A |  | 100% |  |  | start no earlier than 2026-06-04 09:00 | Тимофеев В | 1h | 1h |
| 1245 | 2.263.7 | датчик давления экструдера проверка подключения |  | 3h | 2026-06-11 09:00 A | 2026-06-11 12:00 A |  | 100% |  |  | start no earlier than 2026-06-11 09:00 | Дедов В | 3h | 3h |

| ID | WBS | Task | Duration | Start | Finish | Predecessors | Complete | Constraint | Resources | Work | Actual work |
| --- | --- | --- | --- | --- | --- | --- | --- | --- | --- | --- | --- |
| 1246 | 2.264 | **установить сирену при отключении автомата ПГ** | 28.12d | 2026-03-13 09:00 A | 2026-04-22 10:00 A |  | 100% |  |  | 81.5h | 81.5h |
| 1247 | 2.264.1 | заявка на реле / сирена | 30min | 2026-03-13 09:00 A | 2026-03-13 09:30 A |  | 100% | start no earlier than 2026-03-13 09:00 | Шуранов Ю | 0.5h | 0.5h |
| 1248 | 2.264.2 | доставка | 10d | 2026-03-13 09:30 A | 2026-03-27 09:30 A | 1247 | 100% | start no earlier than 2026-03-12 08:00 | Карабанов | 80h | 80h |
| 1249 | 2.264.3 | монтаж в схему (проверить почему не срабатывает) | 1h | 2026-04-22 09:00 A | 2026-04-22 10:00 A | 1248 | 100% | start no earlier than 2026-04-22 09:00 | Дедов В | 1h | 1h |
| 1250 | 2.265 | **установить сирену на отключение автоматов в печи** | 16d | 2026-03-11 09:00 A | 2026-04-01 18:00 A |  | 100% |  |  | 44.25h | 44.25h |
| 1251 | 2.265.1 | заявка сирена | 15min | 2026-03-13 09:30 A | 2026-03-13 09:45 A | 1247 | 100% | start no earlier than 2026-03-12 08:00 | Шуранов Ю | 0.25h | 0.25h |
| 1252 | 2.265.2 | доставка | 5d | 2026-03-13 09:45 A | 2026-03-20 09:45 A | 1251 | 100% | start no earlier than 2026-03-12 08:00 | Карабанов | 40h | 40h |
| 1253 | 2.265.3 | монтаж | 2h | 2026-03-19 09:00 A | 2026-03-19 11:00 A | 1252 | 100% | start no earlier than 2026-03-19 09:00 | Дедов В | 2h | 2h |
| 1254 | 2.265.4 | доставка сирены | 10d | 2026-03-19 09:00 A | 2026-04-01 18:00 A |  | 100% | start no earlier than 2026-03-19 08:00 |  |  |  |
| 1255 | 2.265.5 | монтаж сирены | 1h | 2026-03-31 09:00 A | 2026-03-31 10:00 A | 1254 | 100% | start no earlier than 2026-03-31 09:00 | Дедов В | 1h | 1h |
| 1256 | 2.265.6 | настройка доводчика дверь вход в зону экструдера | 1h | 2026-03-11 09:00 A | 2026-03-11 10:00 A |  | 100% | start no earlier than 2026-03-11 09:00 | Макаревич А | 1h | 1h |
| 1257 | 2.266 | **выпадает фильера с матрицы - делать стпор** | 0.5d | 2026-04-27 09:00 A | 2026-04-27 13:00 A |  | 100% |  |  | 4.5h | 4.5h |
| 1258 | 2.266.1 | подготовка сверла / метчика | 30min | 2026-04-27 09:00 A | 2026-04-27 09:30 A |  | 100% | start no earlier than 2026-04-27 09:00 | Шуранов Ю | 0.5h | 0.5h |
| 1259 | 2.266.2 | сверлить и резать резьбу для фикс болта | 4h | 2026-04-27 09:00 A | 2026-04-27 13:00 A |  | 100% | start no earlier than 2026-04-27 09:00 | Подрядчик | 4h | 4h |
| 1260 | 2.267 | **замена поликарбанат на перегородках металопрофилем** | 68.75d | 2026-03-11 09:00 A | 2026-06-15 16:00 A |  | 100% |  |  | 114h | 114h |
| 1261 | 2.267.1 | расчет материал стена охладитель | 1h | 2026-03-19 09:00 A | 2026-03-19 10:00 A |  | 100% | start no earlier than 2026-03-19 09:00 | Шуранов Ю | 1h | 1h |
| 1262 | 2.267.2 | заявка | 1h | 2026-03-19 10:00 A | 2026-03-19 11:00 A | 1261 | 100% | start no earlier than 2026-03-12 08:00 | Шуранов Ю | 1h | 1h |
| 1263 | 2.267.3 | доставка | 10d | 2026-03-19 11:00 A | 2026-04-02 11:00 A | 1262 | 100% | start no earlier than 2026-03-12 08:00 | Карабанов | 80h | 80h |
| 1264 | 2.267.4 | из металлопрофиля 3м. Обшиваем охладитель внутри и снаружи + утеплитель | 5h | 2026-05-29 09:00 A | 2026-05-29 15:00 A |  | 100% | start no earlier than 2026-05-29 09:00 | Некрасов А; Бобренок В | 10h | 10h |
| 1265 | 2.267.5 | продолжить монтаж (со стороны охладителя и со стороны жиров) | 6h | 2026-06-15 09:00 A | 2026-06-15 16:00 A | 1263 | 100% | start no earlier than 2026-06-15 09:00 | Некрасов А; Бундин В | 12h | 12h |
| 1266 | 2.267.6 | замена шланг реле давление и настройка. фильтр приточная офис | 1h | 2026-03-12 09:00 A | 2026-03-12 10:00 A |  | 100% | start no earlier than 2026-03-13 09:00 | Дедов В | 1h | 1h |
| 1267 | 2.267.7 | замена насос гидролизата | 1h | 2026-03-12 08:00 A | 2026-03-12 10:00 A |  | 100% | start no earlier than 2026-03-12 08:00 | Бундин В; Тимофеев В | 2h | 2h |
| 1268 | 2.267.8 | замена подшипник прекондиционер | 1h | 2026-03-12 09:00 A | 2026-03-12 10:00 A |  | 100% | start no earlier than 2026-03-12 08:00 | Бундин В | 1h | 1h |
| 1269 | 2.267.9 | ремонт вал охладитель | 4h | 2026-03-12 09:00 A | 2026-03-12 13:00 A |  | 100% | start no earlier than 2026-03-19 09:00 | Тимофеев В | 4h | 4h |
| 1270 | 2.267.10 | плохо закр дверь на фасовку. заменить личинку двери / выравнить напильником в коробке. | 1h | 2026-03-11 09:00 A | 2026-03-11 10:00 A |  | 100% | start no earlier than 2026-03-11 09:00 | Макаревич А | 1h | 1h |
| 1271 | 2.267.11 | крепить поликарбанат стена печь/жир длинная часть | 1h | 2026-03-11 09:00 A | 2026-03-11 10:00 A |  | 100% | start no earlier than 2026-03-11 09:00 | Макаревич А | 1h | 1h |
| 1272 | 2.268 | сетку на выходе барабана жир закрепить. Устр вспомогактельные крепжи операторам | 1h | 2026-03-19 09:00 A | 2026-03-19 10:00 A |  | 100% | start no earlier than 2026-03-19 09:00 | Тимофеев В | 1h | 1h |

| ID | WBS | Task | Duration | Start | Finish | Predecessors | Complete | Constraint | Resources | Work | Actual work |
| --- | --- | --- | --- | --- | --- | --- | --- | --- | --- | --- | --- |
| 1273 | 2.269 | **установить / снять трубу от ПГ для чистки сетки** | 0.25d | 2026-03-12 09:00 A | 2026-03-12 11:00 A |  | 100% |  | Тимофеев В | 7h | 7h |
| 1274 | 2.269.1 | чистка циклон снаружи от копоти. Средство для чистки выдаст Шелепов К | 2h | 2026-03-12 09:00 A | 2026-03-12 11:00 A |  | 100% | start no earlier than 2026-03-12 09:00 | Тимофеев В; Бундин В | 4h | 4h |
| 1275 | 2.269.2 | замена датчик расхода пара | 1h | 2026-03-12 09:00 A | 2026-03-12 10:00 A |  | 100% | start no earlier than 2026-03-12 09:00 | Некрасов А | 1h | 1h |
| 1276 | 2.270 | **замениь фитинги на жир** | 0.25d | 2026-03-10 09:00 A | 2026-03-10 11:00 A | 642 | 100% |  | Некрасов А | 4h | 4h |
| 1277 | 2.270.1 | замена бойлер в мойке экструдера на бойлер который весит за экструдером | 2h | 2026-03-10 09:00 A | 2026-03-10 11:00 A |  | 100% | start no earlier than 2026-03-10 09:00 | Дедов В | 2h | 2h |
| 1278 | 2.271 | **переключить освещение на автолномный выключатель, запитанный от системы освещения, а не от оборудования.** | 15.38d | 2026-03-05 09:00 A | 2026-03-26 12:00 A |  | 100% |  |  | 13h | 13h |
| 1279 | 2.271.1 | ножевой узел | 1.5h | 2026-03-26 09:00 A | 2026-03-26 10:30 A |  | 100% | start no earlier than 2026-03-26 09:00 | Дедов В; Некрасов А | 3h | 3h |
| 1280 | 2.271.2 | бестром | 1.5h | 2026-03-26 09:00 A | 2026-03-26 10:30 A |  | 100% | start no earlier than 2026-03-26 09:00 | Некрасов А; Дедов В | 3h | 3h |
| 1281 | 2.271.3 | выход с охладителя | 1.5h | 2026-03-26 10:30 A | 2026-03-26 12:00 A | 1279 | 100% | start no earlier than 2026-03-26 09:00 | Дедов В; Некрасов А | 3h | 3h |
| 1282 | 2.271.4 | переключить норию квадропака стационрно, без розетки | 2h | 2026-03-05 09:00 A | 2026-03-05 11:00 A |  | 100% | start no earlier than 2026-03-05 09:00 | Дедов В | 2h | 2h |
| 1283 | 2.271.5 | перемонтаж провода заземления нории квадропак эстетично и удобно для прохода и уборщицы | 2h | 2026-03-05 09:00 A | 2026-03-05 11:00 A |  | 100% | start no earlier than 2026-03-05 09:00 | Дедов В | 2h | 2h |
| 1284 | 2.272 | **сетки на дно печи в зип изготовить** | 10.5d | 2026-03-10 09:00 A | 2026-03-24 13:00 A |  | 100% |  |  | 85h | 85h |
| 1285 | 2.272.1 | заявка сетка уголки | 1h | 2026-03-10 09:00 A | 2026-03-10 10:00 A |  | 100% | start no earlier than 2026-03-10 09:00 | Шуранов Ю | 1h | 1h |
| 1286 | 2.272.2 | доставка | 10d | 2026-03-10 10:00 A | 2026-03-24 10:00 A | 1285 | 100% | start no earlier than 2026-03-06 08:00 | Карабанов | 80h | 80h |
| 1287 | 2.272.3 | изготовление | 4h | 2026-03-24 09:00 A | 2026-03-24 13:00 A | 1286 | 100% | start no earlier than 2026-03-24 09:00 | Тимофеев В | 4h | 4h |
| 1288 | 2.273 | закрепить лоток для совка с спиртом. Изготовить усилит косынку | 2h | 2026-03-07 09:00 A | 2026-03-09 11:00 A |  | 100% | start no earlier than 2026-03-07 09:00 | Бундин В | 2h | 2h |
| 1289 | 2.274 | **установить монтажную коробку квадропак. Инструктаж Шуранов по тлф** | 0.12d | 2026-03-06 08:00 A | 2026-03-06 10:00 A |  | 100% |  | Бундин В | 2h | 2h |
| 1290 | 2.274.1 | Не уходит вода в душевой кабине, посмотреть, устранить. | 1h | 2026-03-06 08:00 A | 2026-03-06 10:00 A |  | 100% | start no earlier than 2026-03-06 08:00 | Бобренок В | 1h | 1h |
| 1291 | 2.275 | ревизия вентиляторов охладителя, не закрываются крышки | 30min | 2026-03-05 09:00 A | 2026-03-05 09:30 A |  | 100% | start no earlier than 2026-03-05 09:00 | Тимофеев В | 0.5h | 0.5h |
| 1292 | 2.276 | **Квадропак** | 0.38d | 2026-03-05 09:00 A | 2026-03-05 12:00 A |  | 100% |  |  | 3h | 3h |
| 1293 | 2.276.1 | Уложить красиво провода на лестнице квадропака цех 2 (созвон с Шурановым) | 3h | 2026-03-05 09:00 A | 2026-03-05 12:00 A |  | 100% | start no earlier than 2026-03-05 09:00 | Дедов В | 3h | 3h |
| 1294 | 2.277 | **Сброс ошибо Н4 и Е9 на кондиционерах** | 0.08d | 2026-03-04 09:00 A | 2026-03-04 09:40 A |  | 100% |  |  | 0.67h | 0.67h |
| 1295 | 2.277.1 | Договориться с оплотом по решению | 30min | 2026-03-04 09:00 A | 2026-03-04 09:30 A |  | 100% | start no earlier than 2026-03-04 09:00 | Зорькин В | 0.5h | 0.5h |
| 1296 | 2.277.2 | устранить ошибки | 10min | 2026-03-04 09:30 A | 2026-03-04 09:40 A | 1295 | 100% | start no earlier than 2026-03-03 08:00 | Зорькин В | 0.17h | 0.17h |
| 1297 | 2.278 | закреить поликарбанат по периметру | 4h | 2026-03-08 09:00 A | 2026-03-09 13:00 A |  | 100% | start no earlier than 2026-03-08 09:00 | Макаревич А | 4h | 4h |
| 1298 | 2.279 | смазать ручки и шарниры дверей | 1h | 2026-03-08 09:00 A | 2026-03-09 10:00 A |  | 100% | start no earlier than 2026-03-08 09:00 | Макаревич А | 1h | 1h |

| ID | WBS | Task | Duration | Start | Finish | Predecessors | Complete | Constraint | Resources | Work | Actual work |
| --- | --- | --- | --- | --- | --- | --- | --- | --- | --- | --- | --- |
| 1299 | 2.280 | **сделать ровным порог вход в мойку экструдера** | 23.5d | 2026-03-03 09:00 A | 2026-04-03 13:00 A |  | 100% |  |  | 86.25h | 86.25h |
| 1300 | 2.280.1 | Показать Олегу порог | 30min | 2026-03-03 09:00 A | 2026-03-03 09:30 A |  | 100% | start no earlier than 2026-03-03 08:00 | Зорькин В; Олег лукас | 1h | 1h |
| 1301 | 2.280.2 | составить план ремонта | 15min | 2026-03-03 09:00 A | 2026-03-03 09:15 A |  | 100% | start no earlier than 2026-03-03 09:00 | Зорькин В; Некрасов А; Труфанов А | 0.75h | 0.75h |
| 1302 | 2.280.3 | составить заявку на материал | 30min | 2026-03-04 09:00 A | 2026-03-04 09:30 A | 1301 | 100% | start no earlier than 2026-03-04 09:00 | Зорькин В | 0.5h | 0.5h |
| 1303 | 2.280.4 | доставка | 10d | 2026-03-04 09:30 A | 2026-03-18 09:30 A | 1302 | 100% | start no earlier than 2026-03-03 08:00 | Карабанов | 80h | 80h |
| 1304 | 2.280.5 | реализация | 4h | 2026-04-03 09:00 A | 2026-04-03 13:00 A | 1303 | 100% | start no earlier than 2026-04-03 09:00 | Олег | 4h | 4h |
| 1305 | 2.281 | востановить профлист. Проход навески экструдер. Обрезками с 3ц, цвет любой | 5h | 2026-03-08 09:00 A | 2026-03-09 15:00 A |  | 100% | start no earlier than 2026-03-08 09:00 | Макаревич А | 5h | 5h |
| 1306 | 2.282 | установить отбойники в проход и углы проезд навесок. Барть с 5а | 4h | 2026-03-09 09:00 A | 2026-03-09 13:00 A |  | 100% | start no earlier than 2026-03-09 09:00 | Макаревич А | 4h | 4h |
| 1307 | 2.283 | **установить отбойники в углы проезд навесок** | 24.25d | 2026-03-13 09:00 A | 2026-04-16 11:00 A |  | 100% |  |  | 82.17h | 82.17h |
| 1308 | 2.283.1 | заявка 2 отбойника | 10min | 2026-03-13 09:00 A | 2026-03-13 09:10 A |  | 100% | start no earlier than 2026-03-13 09:00 | Зорькин В | 0.17h | 0.17h |
| 1309 | 2.283.2 | доставка | 10d | 2026-03-13 09:10 A | 2026-03-27 09:10 A | 1308 | 100% | start no earlier than 2026-03-12 08:00 | Карабанов | 80h | 80h |
| 1310 | 2.283.3 | монтаж | 2h | 2026-04-16 09:00 A | 2026-04-16 11:00 A | 1309 | 100% | start no earlier than 2026-04-16 09:00 | Бундин В | 2h | 2h |
| 1311 | 2.284 | **наростить ножки на бестроме бункер, вместо деревянной** | 3.38d | 2026-03-05 09:00 A | 2026-03-10 12:00 A |  | 100% |  | Макаревич А | 39h | 39h |
| 1312 | 2.284.1 | **мойка** | 0.38d | 2026-03-05 09:00 A | 2026-03-05 12:00 A |  | 100% |  |  | 6h | 6h |
| 1313 | 2.284.1.1 | ревизия вытяжка принудительная из печи (нерж вентилятор), очистка | 3h | 2026-03-05 09:00 A | 2026-03-05 12:00 A |  | 100% | start no earlier than 2026-03-05 09:00 | Некрасов А; Труфанов А | 6h | 6h |
| 1314 | 2.284.2 | ремонт колесо штабелер/замена подшипник | 3h | 2026-03-10 09:00 A | 2026-03-10 12:00 A |  | 100% | start no earlier than 2026-03-10 09:00 | Тимофеев В; Дедов В | 6h | 6h |
| 1315 | 2.285 | **увеличить освещение в зоне квадропака** | 41.88d | 2026-03-02 09:00 A | 2026-04-28 17:00 A |  | 100% |  |  | 101h | 101h |
| 1316 | 2.285.1 | составить список мматериал для монтажа | 30min | 2026-03-02 09:00 A | 2026-03-02 09:30 A |  | 100% | start no earlier than 2026-03-02 09:00 | Труфанов А; Некрасов А; Зорькин В | 1.5h | 1.5h |
| 1317 | 2.285.2 | заявка светильники | 30min | 2026-03-02 09:30 A | 2026-03-02 10:00 A | 1316 | 100% | start no earlier than 2026-02-27 08:00 | Зорькин В | 0.5h | 0.5h |
| 1318 | 2.285.3 | доставка | 10d | 2026-03-02 10:00 A | 2026-03-16 10:00 A | 1317 | 100% | start no earlier than 2026-02-27 08:00 | Карабанов | 80h | 80h |
| 1319 | 2.285.4 | монтаж светильников зона фасовки 8 светильников, операторы помогут | 15h | 2026-04-25 09:00 A | 2026-04-28 17:00 A |  | 100% | start no earlier than 2026-04-25 09:00 | Бобренок В | 15h | 15h |
| 1320 | 2.285.5 | монтаж светильников зона квадропак 1шт - перевесить светильник | 1h | 2026-04-16 09:00 A | 2026-04-16 10:00 A |  | 100% | start no earlier than 2026-04-16 09:00 | Тимофеев В | 1h | 1h |
| 1321 | 2.285.6 | монтаж | 2h | 2026-03-06 09:00 A | 2026-03-06 11:00 A |  | 100% | start no earlier than 2026-03-06 09:00 | Бобренок В | 2h | 2h |
| 1322 | 2.285.7 | **замена сетка печи на мелкую** | 0.12d | 2026-03-02 09:00 A | 2026-03-02 10:00 A |  | 100% |  |  | 1h | 1h |
| 1323 | 2.285.7.1 | согласовать спецификацию / оплата счет | 1h | 2026-03-02 09:00 A | 2026-03-02 10:00 A |  | 100% | start no earlier than 2026-03-02 09:00 | Домоводов К | 1h | 1h |

| ID | WBS | Task | Duration | Start | Finish | Predecessors | Complete | Remaining | Total slack | Free slack | Constraint | Resources | Work | Actual work |
| --- | --- | --- | --- | --- | --- | --- | --- | --- | --- | --- | --- | --- | --- | --- |
| 1324 | 2.286 | **монтаж дозации жира в экструдер** | 34.25d? | 2026-02-27 09:00 A | 2026-04-16 11:00 |  | 38% | 21.26d? | 240.34d |  |  |  | 25h | 15h |
| 1325 | 2.286.1 | монтаж частотного привода | 2h | 2026-02-27 09:00 A | 2026-02-27 11:00 A |  | 100% |  |  |  | start no earlier than 2026-02-27 09:00 | Тимофеев В | 2h | 2h |
| 1326 | 2.286.2 | монтаж трассы гидравлической | 2h | 2026-03-02 09:00 A | 2026-03-02 11:00 A | 1325 | 100% |  |  |  | start no earlier than 2026-03-02 09:00 | Тимофеев В | 2h | 2h |
| 1327 | 2.286.3 | сборка канистры с фитингом | 1h | 2026-03-02 11:00 A | 2026-03-02 12:00 A | 1326 | 100% |  |  |  | start no earlier than 2026-02-26 08:00 | Тимофеев В | 1h | 1h |
| 1328 | 2.286.4 | калибровка на нужный расход | 1h | 2026-03-03 09:00 A | 2026-03-03 10:00 A |  | 100% |  |  |  | start no earlier than 2026-03-03 09:00 | Зорькин В; Тимофеев В | 2h | 2h |
| 1329 | 2.286.5 | испытание | 1h | 2026-03-04 09:00 A | 2026-03-04 10:00 A |  | 100% |  |  |  | start no earlier than 2026-03-04 09:00 | Зорькин В | 1h | 1h |
| 1330 | 2.286.6 | подключить управление насосом синхронно с запуском ножей экструдера. Проложить кабель, изучить параметары, передать по смене что подключать | 4h | 2026-03-04 09:00 | 2026-03-04 13:00 |  |  |  | 271.09d |  | start no earlier than 2026-03-04 09:00 | Дедов В | 4h |  |
| 1331 | 2.286.7 | подключить кабель/ неастроить параметры, что передаст Дедов | 1h | 2026-03-05 09:00 | 2026-03-05 10:00 |  |  |  | 270.47d |  | start no earlier than 2026-03-05 09:00 | Труфанов А | 1h |  |
| 1332 | 2.286.8 | поставка контрллра | 1d? | 2026-03-11 09:00 | 2026-03-11 18:00 |  |  |  | 265.34d | 25d | start no earlier than 2026-03-11 09:00 |  |  |  |
| 1333 | 2.286.9 | подключить контрллера расходомер | 2h | 2026-04-16 09:00 | 2026-04-16 11:00 | 1332 |  |  | 240.34d |  | start no earlier than 2026-04-16 09:00 | Тимофеев В | 2h |  |
| 1334 | 2.286.10 | Прокинуть интерфейсный кабель от черной коробочки до нового частотника на синем бункере (проложить так чтоб ни где ничего не торчало) | 3h | 2026-03-05 09:00 | 2026-03-05 12:00 |  |  |  | 270.22d |  | start no earlier than 2026-03-05 08:00 | Дедов В | 3h |  |
| 1335 | 2.286.11 | сделать регулировку угла наклона приемная воронка конв в охладитель после жира | 3h | 2026-03-05 09:00 A | 2026-03-05 12:00 A |  | 100% |  |  |  | start no earlier than 2026-03-05 09:00 | Некрасов А; Труфанов А | 6h | 6h |
| 1336 | 2.286.12 | сборка и монтаж полка для дез раствора на охладитель | 1h | 2026-03-02 09:00 A | 2026-03-02 10:00 A |  | 100% |  |  |  | start no earlier than 2026-03-02 09:00 | Тимофеев В | 1h | 1h |
| 1337 | 2.287 | **настройка блокировок отключения котла, если отключена приточка** | 130.25d | 2026-03-03 09:00 A | 2026-09-01 11:00 |  | 7% | 120.93d | 142.34d |  |  |  | 86.17h | 6.17h |
| 1338 | 2.287.1 | внести в схему котла блокировку либо от трм 33 либо от частотника | 4h | 2026-03-03 09:00 A | 2026-03-03 13:00 A |  | 100% |  |  |  | start no earlier than 2026-03-03 09:00 | Дедов В | 4h | 4h |
| 1339 | 2.287.2 | Заявка на реле протока воды | 10min | 2026-03-10 09:00 A | 2026-03-10 09:10 A |  | 100% |  |  |  | start no earlier than 2026-03-10 09:00 | Зорькин В | 0.17h | 0.17h |
| 1340 | 2.287.3 | Доставка | 10d | 2026-03-10 09:10 | 2026-03-24 09:10 | 1339 |  |  | 257.57d |  | start no earlier than 2026-03-02 09:00 | Карабанов | 80h |  |
| 1341 | 2.287.4 | Замена | 2h | 2026-09-01 09:00 A | 2026-09-01 11:00 A | 1340 | 100% |  |  |  | start no earlier than 2026-09-01 09:00 | Дедов В | 2h | 2h |
| 1342 | 2.288 | Запрет работы вентилятора если низкая температура калорифера | 2h | 2026-03-12 09:00 A | 2026-03-12 11:00 A |  | 100% |  |  |  | start no earlier than 2026-03-12 09:00 | Дедов В | 2h | 2h |
| 1343 | 2.289 | **установить на охладитель ролики + скольжение трубы** | 26d? | 2026-09-01 09:00 | 2026-09-28 18:00 |  |  |  | 116.59d |  |  |  | 10h |  |
| 1344 | 2.289.1 | печать кронштейнов | 2h | 2026-09-01 09:00 | 2026-09-01 11:00 |  |  |  | 142.34d |  | start no earlier than 2026-09-01 09:00 | Домоводов К | 2h |  |
| 1345 | 2.289.2 | установить держатели труб | 1d? | 2026-09-28 09:00 | 2026-09-28 18:00 |  |  |  | 116.59d |  | start no earlier than 2026-09-28 09:00 | Тимофеев В | 8h |  |
| 1346 | 2.290 | **установить паровопровод для очистки сетки печи на мойке парогенератором** | 8.75d | 2026-03-02 09:00 A | 2026-03-12 16:00 A |  | 100% |  |  |  |  |  | 18.5h | 18.5h |
| 1347 | 2.290.1 | проверка фитингов | 30min | 2026-03-02 09:00 A | 2026-03-02 09:30 A |  | 100% |  |  |  | start no earlier than 2026-03-02 09:00 | Зорькин В | 0.5h | 0.5h |
| 1348 | 2.290.2 | монтаж | 2h | 2026-03-05 09:00 A | 2026-03-05 11:00 A | 1347 | 100% |  |  |  | start no earlier than 2026-03-05 09:00 | Тимофеев В | 2h | 2h |

| ID | WBS | Task | Type | Duration | Start | Finish | Predecessors | Complete | Total slack | Free slack | Constraint | Resources | Work | Actual work |
| --- | --- | --- | --- | --- | --- | --- | --- | --- | --- | --- | --- | --- | --- | --- |
| 1349 | 2.290.3 | **лоток с транспортера в барабан. Большой** |  | 2.75d | 2026-03-10 09:00 A | 2026-03-12 16:00 A |  | 100% |  |  |  |  | 16h | 16h |
| 1350 | 2.290.3.1 | изготовить из листа лоток. Заготовку 612*965 с пропилами для сгиба по чертежу |  | 4h | 2026-03-10 09:00 A | 2026-03-10 13:00 A |  | 100% |  |  | start no earlier than 2026-03-10 09:00 | Макаревич А | 4h | 4h |
| 1351 | 2.290.3.2 | подготовить раму крепежа |  | 4h | 2026-03-12 09:00 A | 2026-03-12 13:00 A | 1350 | 100% |  |  | start no earlier than 2026-03-12 09:00 | Некрасов А; Труфанов А | 8h | 8h |
| 1352 | 2.290.3.3 | монтаж |  | 2h | 2026-03-12 14:00 A | 2026-03-12 16:00 A | 1351 | 100% |  |  | start no earlier than 2026-02-27 08:00 | Некрасов А; Труфанов А | 4h | 4h |
| 1353 | 2.291 | **установка ворот шлюз в проходе вент камеры** |  | 119d? | 2026-02-24 09:00 A | 2026-08-09 13:00 A |  | 100% |  |  |  |  | 163.5h | 163.5h |
| 1354 | 2.291.1 | изготовить и установить шпингалеты |  | 4h | 2026-02-27 09:00 A | 2026-02-27 13:00 A |  | 100% |  |  | start no earlier than 2026-02-27 09:00 | Некрасов А; Бобренок В | 8h | 8h |
| 1355 | 2.291.2 | установка петель, транспортировка, монтаж |  | 1d? | 2026-02-24 09:00 A | 2026-02-24 18:00 A |  | 100% |  |  | start no earlier than 2026-02-24 09:00 | Труфанов А; Некрасов А | 16h | 16h |
| 1356 | 2.291.3 | установить полосу притвора |  | 3h | 2026-02-27 09:00 A | 2026-02-27 12:00 A |  | 100% |  |  | start no earlier than 2026-02-28 09:00 | Бобренок В | 3h | 3h |
| 1357 | 2.291.4 | установить силиконовые уплотнители на пол |  | 2h | 2026-02-26 09:00 A | 2026-02-26 11:00 A |  | 100% |  |  | start no earlier than 2026-02-26 08:00 | Некрасов А | 2h | 2h |
| 1358 | 2.291.5 | заявка доводчики, шпингалеты |  | 30min | 2026-03-02 09:00 A | 2026-03-02 09:30 A |  | 100% |  |  | start no earlier than 2026-03-02 09:00 | Зорькин В | 0.5h | 0.5h |
| 1359 | 2.291.6 | доставка |  | 10d | 2026-03-02 09:30 A | 2026-03-16 09:30 A | 1358 | 100% |  |  | start no earlier than 2026-02-27 08:00 | Карабанов | 80h | 80h |
| 1360 | 2.291.7 | монтаж шпингалетов |  | 2h | 2026-03-25 09:00 A | 2026-03-25 11:00 A | 1359 | 100% |  |  | start no earlier than 2026-03-25 09:00 | Бобренок В | 2h | 2h |
| 1361 | 2.291.8 | **установить концевики блокировки открывания роль ворот, если не закрыты шлюз** |  | 109d | 2026-03-10 09:00 A | 2026-08-09 13:00 A |  | 100% |  |  |  |  | 52h | 52h |
| 1362 | 2.291.8.1 | **установить доводчики на ворота в зоне навесок** |  | 0.25d | 2026-06-14 09:00 A | 2026-06-15 11:00 A |  | 100% |  |  |  |  | 2h | 2h |
| 1363 | 2.291.8.1.1 | пробурить для задвижек ворот в полу отверстия -фиксация для проезда штабелера |  | 2h | 2026-06-14 09:00 A | 2026-06-15 11:00 A |  | 100% |  |  | start no earlier than 2026-06-14 09:00 | Бобренок В | 2h | 2h |
| 1364 | 2.291.8.2 | составить список материалов |  | 30min | 2026-03-10 09:00 A | 2026-03-10 09:30 A |  | 100% |  |  | start no earlier than 2026-03-10 09:00 | Дедов В | 0.5h | 0.5h |
| 1365 | 2.291.8.3 | заявка |  | 30min | 2026-03-10 09:30 A | 2026-03-10 10:00 A | 1364 | 100% |  |  | start no earlier than 2026-03-03 09:00 | Зорькин В | 0.5h | 0.5h |
| 1366 | 2.291.8.4 | доставка |  | 5d | 2026-03-10 10:00 A | 2026-03-17 10:00 A | 1365 | 100% |  |  | start no earlier than 2026-02-27 08:00 | Карабанов | 40h | 40h |
| 1367 | 2.291.8.5 | монтаж датчиков на двери / доводчиков. | manual | 4h | 2026-08-09 09:00 A | 2026-08-09 13:00 A | 1366 | 100% |  |  | start no earlier than 2026-08-09 09:00 | Бундин В | 4h | 4h |
| 1368 | 2.291.8.6 | монтаж кабеля от датчиков до блока рольворот, не подключать | manual | 4h | 2026-08-09 09:00 A | 2026-08-09 13:00 A | 1367 | 100% |  |  | start no earlier than 2026-08-09 09:00 | Бундин В | 4h | 4h |
| 1369 | 2.291.8.7 | установить концевики на ворота - установить закладные под них | manual | 1h | 2026-08-08 09:00 A | 2026-08-08 10:00 A |  | 100% |  |  | start no earlier than 2026-08-08 09:00 | Бундин В | 1h | 1h |
| 1370 | 2.292 | **схема блокировки роль ворот при открытым шлюзе + авт закрытие + датчик препятствия** |  | 18.5d | 2026-09-09 09:00 | 2026-09-28 13:00 |  |  | 117.09d |  |  |  | 8h |  |
| 1371 | 2.292.1 | разработка схемы |  | 4h | 2026-09-09 09:00 | 2026-09-09 13:00 |  |  | 133.59d | 16.5d | start no earlier than 2026-09-09 09:00 | Домоводов К | 4h |  |
| 1372 | 2.292.2 | монтаж |  | 4h | 2026-09-28 09:00 | 2026-09-28 13:00 | 1371FS+1d |  | 117.09d |  | start no earlier than 2026-09-28 09:00 | Труфанов А | 4h |  |
| 1373 | 2.293 | ремонт нижних сеток печи просева гранулы |  | 4h | 2025-01-23 09:00 A | 2025-01-23 13:00 A |  | 100% |  |  | start no earlier than 2025-01-23 09:00 | Черепанов И | 4h | 4h |

| ID | WBS | Task | Type | Duration | Start | Finish | Predecessors | Complete | Remaining | Total slack | Free slack | Constraint | Resources | Work | Actual work |
| --- | --- | --- | --- | --- | --- | --- | --- | --- | --- | --- | --- | --- | --- | --- | --- |
| 1374 | 2.294 | **замена реле безопасности бойлер ж** |  | 91.12d | 2024-10-16 09:00 A | 2025-02-20 10:00 A |  | 100% |  |  |  |  |  | 82h | 82h |
| 1375 | 2.294.1 | заЯВка |  | 1h | 2024-10-16 09:00 A | 2024-10-16 10:00 A |  | 100% |  |  |  | start no earlier than 2024-10-16 09:00 | Зорькин В | 1h | 1h |
| 1376 | 2.294.2 | доставка |  | 10d | 2024-10-16 10:00 A | 2024-10-30 10:00 A | 1375 | 100% |  |  |  | start no earlier than 2024-10-16 09:00 | Мультан | 80h | 80h |
| 1377 | 2.294.3 | замена |  | 1h | 2025-02-20 09:00 A | 2025-02-20 10:00 A | 1376 | 100% |  |  |  | start no earlier than 2025-02-20 09:00 | Некрасов А | 1h | 1h |
| 1378 | 2.295 | **установить пульты на регулировку шибиров вентиляции** |  | 25d? | 2026-08-31 09:00 | 2026-09-25 18:00 |  |  |  | 118.59d |  |  |  | 90h |  |
| 1379 | 2.295.1 | заявка на блок питания, шкаф управления, кабель |  | 2h | 2026-08-31 09:00 | 2026-08-31 11:00 |  |  |  | 132.34d | 0d | start no earlier than 2026-08-31 09:00 | Домоводов К | 2h |  |
| 1380 | 2.295.2 | доставка |  | 10d | 2026-08-31 11:00 | 2026-09-11 11:00 | 1379 |  |  | 132.34d | 13.75d | start no earlier than 2024-05-08 08:00 | Мультан | 80h |  |
| 1381 | 2.295.3 | монтаж |  | 1d? | 2026-09-25 09:00 | 2026-09-25 18:00 | 1380 |  |  | 118.59d |  | start no earlier than 2026-09-25 09:00 | Некрасов А | 8h |  |
| 1382 | 2.296 | заменить местами 2 зеркала маленький и большой бункер |  | 4h | 2024-10-03 09:00 | 2024-10-03 13:00 |  |  |  | 640.09d |  | start no earlier than 2024-10-03 09:00 | Черепанов И | 4h |  |
| 1383 | 2.297 | установить провод заземления на дверь шкафа упр сушки |  | 1h | 2024-01-08 09:00 | 2024-01-08 10:00 |  |  |  | 833.47d |  | start no earlier than 2024-01-06 09:00 | Тимофеев В | 1h |  |
| 1384 | 2.298 | **Палетообмотчик** |  | 50.06d | 2026-05-19 09:00 A | 2026-07-28 09:30 A |  | 100% |  |  |  |  |  | 80.67h | 80.67h |
| 1385 | 2.298.1 | заказать цепь |  | 10min | 2026-05-19 09:00 A | 2026-05-19 09:10 A |  | 100% |  |  |  | start no earlier than 2026-05-19 08:00 | Зорькин В | 0.17h | 0.17h |
| 1386 | 2.298.2 | доставка |  | 10d | 2026-05-29 09:00 A | 2026-06-11 18:00 A |  | 100% |  |  |  | start no earlier than 2026-05-29 09:00 | Карабанов | 80h | 80h |
| 1387 | 2.298.3 | замена цепи на вход в зону палетирования на складе взять 10М оцинкованная 3мм | manual | 30min | 2026-07-28 09:00 A | 2026-07-28 09:30 A |  | 100% |  |  |  | start no earlier than 2026-07-28 09:00 | Макаревич А | 0.5h | 0.5h |
| 1388 | 2.299 | Изготовить полочки из нержавейки по образцу на 18 баночек еще 2 шт |  | 3h | 2026-07-24 09:00 A | 2026-07-24 12:00 A |  | 100% |  |  |  | start no earlier than 2026-07-24 09:00 | Бундин В | 3h | 3h |
| 1389 | 2.300 | **разделить воду на ПГ и экструдер** |  | 0.25d | 2026-09-28 09:00 | 2026-09-28 11:00 |  |  |  | 0d |  |  |  | 2h |  |
| 1390 | 2.300.1 | изготовить промежуточную емкость для прекондера, подача воды, сделать по аналогу 3 цеха | manual | 2h | 2026-09-28 09:00 | 2026-09-28 11:00 |  |  |  |  |  | start no earlier than 2026-09-28 09:00 | Тимофеев В | 2h |  |
| 1391 | 2.301 | **отмена** |  | 83.31d? | 2026-08-11 09:00 A | 2026-11-26 11:30 |  | 2% | 81.42d? | 74.28d |  |  |  | 11h | 0.25h |
| 1392 | 2.301.1 | **найти места утечки тепла под потолком- перемерзает труба подачи воды в 3 цех** |  | 83.31d? | 2026-08-11 09:00 A | 2026-11-26 11:30 |  | 2% | 81.42d? | 74.28d |  |  |  | 11h | 0.25h |
| 1393 | 2.301.1.1 | вспомнить из-за чего холод под потолком? Какие нужны мероприятия?- никто не помнит |  | 15min | 2026-08-11 09:00 A | 2026-08-11 09:15 A |  | 100% |  |  |  | start no earlier than 2026-08-11 09:00 | Некрасов А | 0.25h | 0.25h |
| 1394 | 2.301.1.2 | подать олегу заявку |  | 15min | 2026-08-31 09:00 | 2026-08-31 09:15 |  |  |  | 143.56d |  | start no earlier than 2026-08-31 09:00 | Зорькин В | 0.25h |  |
| 1395 | 2.301.1.3 | проверка пирометром / тепловизором |  | 2h | 2026-11-11 09:00 | 2026-11-11 11:00 |  |  |  | 74.28d | 0d | start no earlier than 2026-11-11 09:00 | Некрасов А | 2h |  |
| 1396 | 2.301.1.4 | заявка (подумать материал) |  | 15min | 2026-11-11 11:00 | 2026-11-11 11:15 | 1395 |  |  | 74.28d | 0d | start no earlier than 2026-08-13 09:00 | Зорькин В | 0.25h |  |
| 1397 | 2.301.1.5 | доставка- контроль |  | 15min | 2026-11-25 11:15 | 2026-11-25 11:30 | 1396FS+10d |  |  | 74.28d | 0d | start no earlier than 2026-08-12 09:00 | Зорькин В | 0.25h |  |
| 1398 | 2.301.1.6 | монтаж |  | 1d? | 2026-11-25 11:30 | 2026-11-26 11:30 | 1397 |  |  | 74.28d |  | start no earlier than 2026-08-11 09:00 | Тимофеев В | 8h |  |

| ID | WBS | Task | Type | Duration | Start | Finish | Predecessors | Complete | Remaining | Total slack | Constraint | Resources | Work | Actual work |
| --- | --- | --- | --- | --- | --- | --- | --- | --- | --- | --- | --- | --- | --- | --- |
| 1399 | 2.302 | **вентиляция** |  | 11.25d | 2026-08-13 09:00 A | 2026-08-28 11:00 A |  | 100% |  |  |  |  | 4h | 4h |
| 1400 | 2.302.1 | Монтаж частотников на ШУ | manual | 2h | 2026-08-13 09:00 A | 2026-08-13 11:00 A |  | 100% |  |  | start no earlier than 2026-08-13 09:00 | Труфанов А | 2h | 2h |
| 1401 | 2.302.2 | В ШУ вырезать окна для частотников в двери, закрыть оргстеклом. Желательно на шарниры. |  | 2h | 2026-08-28 09:00 A | 2026-08-28 11:00 A |  | 100% |  |  | start no earlier than 2026-08-31 09:00 | Бундин В | 2h | 2h |
| 1402 | 2.303 | **Синий бункер** |  | 0.25d | 2026-07-30 09:00 A | 2026-07-30 11:00 A |  | 100% |  |  |  |  | 4h | 4h |
| 1403 | 2.303.1 | Ремонт синего бункера в зоне вибратора |  | 2h | 2026-07-30 09:00 A | 2026-07-30 11:00 A |  | 100% |  |  | start no earlier than 2026-07-30 09:00 | Труфанов А; Бундин В | 4h | 4h |
| 1404 | 2.304 | **Охладитель** |  | 0.38d | 2026-07-30 09:00 A | 2026-07-30 12:00 A |  | 100% |  |  |  |  | 3h | 3h |
| 1405 | 2.304.1 | Установка защиты сетки на полозья/направляющие, спросить Зорькина |  | 3h | 2026-07-30 09:00 A | 2026-07-30 12:00 A |  | 100% |  |  | start no earlier than 2026-07-30 09:00 | Тимофеев В | 3h | 3h |
| 1406 | 2.305 | Осмотреть/устранить течь раковины возле туалета |  | 1h | 2026-07-29 08:00 A | 2026-07-29 10:00 A |  | 100% |  |  | start no earlier than 2026-07-29 08:00 | Дедов В | 1h | 1h |
| 1407 | 3 | **3 цех** |  | 288d? | 2025-09-01 09:00 A | 2026-09-29 18:00 |  | 78% | 62.23d? | 115.59d |  |  | 1171.58h | 929.08h |
| 1408 | 3.1 | **обеспечить быстрое переключение продукта из барабана годен/брак - охладитель/тазик** |  | 3.06d | 2026-09-19 09:00 A | 2026-09-22 09:30 A |  | 100% |  |  |  |  | 21h | 21h |
| 1409 | 3.1.1 | Модернизация лотка для удаления брака из барабанов, а именно: | milestone | 0h | 2026-09-19 09:00 A | 2026-09-19 09:00 A |  | 100% |  |  | start no earlier than 2026-09-19 09:00 | Макаревич А |  |  |
| 1410 | 3.1.2 | демонтировать отбойник, направляющий продукт в центр |  | 2h | 2026-09-19 09:00 A | 2026-09-19 11:00 A |  | 100% |  |  | start no earlier than 2026-09-19 09:00 | Макаревич А | 2h | 2h |
| 1411 | 3.1.3 | сделать торцевую стенку на шарнире с наклоном под барабан. Шарнир на высоте кронштейнов сетки. Шарнир дверной / как от печей |  | 4h | 2026-09-19 11:00 A | 2026-09-19 16:00 A | 1410 | 100% |  |  | start no earlier than 2026-09-18 08:00 | Макаревич А | 4h | 4h |
| 1412 | 3.1.4 | сделать фиксатор стенки в положении закрыто в виде щеколды. Безопасный быстрый |  | 2h | 2026-09-20 09:00 A | 2026-09-20 11:00 A | 1411 | 100% |  |  | start no earlier than 2026-09-20 09:00 | Макаревич А | 2h | 2h |
| 1413 | 3.1.5 | сделать "притвор", закрывающий щель после разрезания стенки. Все края защита от пореза либо зачистить либо лента |  | 4h | 2026-09-20 11:00 A | 2026-09-20 16:00 A | 1412 | 100% |  |  | start no earlier than 2026-09-18 08:00 | Макаревич А | 4h | 4h |
| 1414 | 3.1.6 | изготовить новый отбойник, направляющий продукт в центр, ниже опущенной стенки на сброс, не широкий, что бы удобно былоо менять сетку |  | 2h | 2026-09-20 16:00 A | 2026-09-20 18:00 A | 1413 | 100% |  |  | start no earlier than 2026-09-18 08:00 | Макаревич А | 2h | 2h |
| 1415 | 3.1.7 | Доработка короба после барабанов для ссыпки в емкость, установка ограничителей, язычка. Подробности у Труфанова |  | 6h | 2026-09-21 09:00 A | 2026-09-21 16:00 A |  | 100% |  |  | start no earlier than 2026-09-21 08:00 | Макаревич А | 6h | 6h |
| 1416 | 3.1.8 | установить на место, испытание |  | 30min | 2026-09-22 09:00 A | 2026-09-22 09:30 A |  | 100% |  |  | start no earlier than 2026-09-22 09:00 | Некрасов А; Труфанов А | 1h | 1h |
| 1417 | 3.2 | **Дражжировка** |  | 7.25d | 2026-09-17 09:00 A | 2026-09-24 11:00 |  | 86% | 1.04d | 120.34d |  |  | 14h | 12h |
| 1418 | 3.2.1 | Повесить мощную цепь, за которую можно опускать и поднимать защиту |  | 1h | 2026-09-18 09:00 A | 2026-09-18 10:00 A |  | 100% |  |  | start no earlier than 2026-09-18 09:00 | Бундин В | 1h | 1h |
| 1419 | 3.2.2 | Сделать ограничитель, когда опускаешь защиту на себя, на уровне перил |  | 1h | 2026-09-17 09:00 A | 2026-09-17 10:00 A |  | 100% |  |  | start no earlier than 2026-09-17 08:00 | Бундин В | 1h | 1h |
| 1420 | 3.2.3 | Сделать из отбойников рессор уаз отбойники на защите паллет, чтоб не било когда падает (позвони, обьясню) |  | 2h | 2026-09-17 09:00 A | 2026-09-17 11:00 A |  | 100% |  |  | start no earlier than 2026-09-17 08:00 | Бундин В | 2h | 2h |
| 1421 | 3.2.4 | Перенести частотник со стены ближе к барабанам, смонтировать на раму барабанов |  | 2h | 2026-09-24 09:00 | 2026-09-24 11:00 |  |  |  | 120.34d | start no earlier than 2026-09-24 09:00 | Дедов В | 2h |  |
| 1422 | 3.2.5 | на коневейер циклон-барабан установить полосу сбоку ленты не дающую грануле скатываться обратно, примеры посмотреть в 1 цеху |  | 1h | 2026-09-22 09:00 A | 2026-09-22 10:00 A |  | 100% |  |  | start no earlier than 2026-09-22 09:00 | Тимофеев В | 1h | 1h |
| 1423 | 3.2.6 | Изготовить и установить уши на конце конвейера в барабан (чтоб гранула не попадала внутрь ленты) |  | 2h | 2026-09-21 09:00 A | 2026-09-21 11:00 A |  | 100% |  |  | start no earlier than 2026-09-21 09:00 | Тимофеев В | 2h | 2h |
| 1424 | 3.2.7 | Доделать и установить язык между барабанами |  | 1h | 2026-09-21 09:00 A | 2026-09-21 10:00 A |  | 100% |  |  | start no earlier than 2026-09-21 09:00 | Тимофеев В | 1h | 1h |
| 1425 | 3.2.8 | Увеличить «язычек» между барабанами на жирах (просыпается много гранулы |  | 4h | 2026-09-17 09:00 A | 2026-09-17 13:00 A |  | 100% |  |  | start no earlier than 2026-09-17 09:00 | Тимофеев В | 4h | 4h |

| ID | WBS | Task | Duration | Start | Finish | Predecessors | Complete | Remaining | Total slack | Free slack | Constraint | Resources | Work | Actual work |
| --- | --- | --- | --- | --- | --- | --- | --- | --- | --- | --- | --- | --- | --- | --- |
| 1426 | 3.3 | **Разобрать регулировку ножевого узла, достать вал на котором установлен штурвал** | 7.12d | 2026-09-18 09:00 A | 2026-09-25 10:00 |  | 80% | 1.43d | 119.47d |  |  |  | 2.5h | 2h |
| 1427 | 3.3.1 | Снять вал, передать Зорькину | 1h | 2026-09-22 09:00 A | 2026-09-22 10:00 A |  | 100% |  |  |  | start no earlier than 2026-09-22 09:00 | Тимофеев В | 1h | 1h |
| 1428 | 3.3.2 | Заявка по образцу | 20min | 2026-09-18 09:00 | 2026-09-18 09:20 |  |  |  | 119.59d | 0d | start no earlier than 2026-09-18 09:00 | Зорькин В | 0.33h |  |
| 1429 | 3.3.3 | контроль | 10min | 2026-09-24 17:50 | 2026-09-24 18:00 | 1428SF+7d |  |  | 119.59d |  |  | Зорькин В | 0.17h |  |
| 1430 | 3.3.4 | установка | 1h | 2026-09-25 09:00 A | 2026-09-25 10:00 A | 1429 | 100% |  |  |  |  | Тимофеев В | 1h | 1h |
| 1431 | 3.4 | Между шлюзовым питателем и конвейером на жирах сделать ограничение, чтоб не разлеталась гранула и не мешало двигать конвейер | 3h | 2026-09-15 09:00 A | 2026-09-15 12:00 A |  | 100% |  |  |  | start no earlier than 2026-09-15 09:00 | Тимофеев В | 3h | 3h |
| 1432 | 3.5 | **Найти и установить жироуловитель с синего склада на жирах мойка** | 11.12d | 2026-09-16 09:00 A | 2026-09-28 10:00 |  | 54% | 5.17d | 117.47d |  |  |  | 3.33h | 2.25h |
| 1433 | 3.5.1 | Составить список необходимых материлов для подключения (передать зорькину) | 1h | 2026-09-16 09:00 A | 2026-09-16 10:00 A |  | 100% |  |  |  | start no earlier than 2026-09-16 08:00 | Тимофеев В; Зорькин В | 2h | 2h |
| 1434 | 3.5.2 | Заявка | 15min | 2026-09-16 10:00 A | 2026-09-16 10:15 A | 1433 | 100% |  |  |  | start no earlier than 2026-09-16 08:00 | Зорькин В | 0.25h | 0.25h |
| 1435 | 3.5.3 | Контроль | 5min | 2026-09-24 09:00 | 2026-09-24 09:05 | 1434FS+7d |  |  | 120.46d | 2.99d | start no earlier than 2026-09-24 09:00 | Зорькин В | 0.08h |  |
| 1436 | 3.5.4 | Монтаж | 1h | 2026-09-28 09:00 | 2026-09-28 10:00 | 1435 |  |  | 117.47d |  | start no earlier than 2026-09-28 09:00 | Тимофеев В | 1h |  |
| 1437 | 3.6 | монтаж оконечные кожухи на конвейер после охладителя, что бы гранула не разлеталась при перевороте ленты | 4h | 2026-09-21 09:00 A | 2026-09-21 13:00 A |  | 100% |  |  |  | start no earlier than 2026-09-22 09:00 | Тимофеев В | 4h | 4h |
| 1438 | 3.7 | Перенести регулировку подачи жира, ближе к барабанам. Перенос частотник на раму барабанов | 4h | 2026-09-25 09:00 | 2026-09-25 13:00 |  |  |  | 119.09d |  | start no earlier than 2026-09-25 09:00 | Тимофеев В | 4h |  |
| 1439 | 3.8 | Проблема с закрыванием дверцы привода ножей (шарнир с мотором ножей при закрывании теряет соосность, сделать упор) | 1h | 2026-09-15 09:00 A | 2026-09-15 10:00 A |  | 100% |  |  |  | start no earlier than 2026-09-15 09:00 | Тимофеев В | 1h | 1h |
| 1440 | 3.9 | Разобраться почему закусывает резьбу прижима ножей к фильере (испытывать после установки штурвала) | 1h | 2026-09-15 09:00 A | 2026-09-15 10:00 A |  | 100% |  |  |  | start no earlier than 2026-09-15 09:00 | Тимофеев В | 1h | 1h |
| 1441 | 3.10 | Регулировка ножей на экструдере — сделать «штурвал»; | 2h | 2026-09-15 09:00 A | 2026-09-15 11:00 A |  | 100% |  |  |  | start no earlier than 2026-09-15 09:00 | Тимофеев В | 2h | 2h |
| 1442 | 3.11 | **Гранулы выходили из печи со следами смазки** | 0.5d | 2026-09-25 09:00 | 2026-09-25 13:00 |  |  |  | 119.09d |  |  |  | 4h |  |
| 1443 | 3.11.1 | (сделать направляющие в печи); | 4h | 2026-09-25 09:00 | 2026-09-25 13:00 |  |  |  | 119.09d |  | start no earlier than 2026-09-25 09:00 | Тимофеев В | 4h |  |
| 1444 | 3.12 | **С двигателя экструдера выдавило много масла;** | 10.41d | 2026-09-18 09:00 A | 2026-09-29 12:15 |  | 36% | 6.71d | 116.19d |  |  |  | 11.25h | 4h |
| 1445 | 3.12.1 | установить поплавок на верхний уровень для блокировки насоса- осмотр | 4h | 2026-09-18 09:00 A | 2026-09-18 13:00 A |  | 100% |  |  |  | start no earlier than 2026-09-18 09:00 | Бобренок В | 4h | 4h |
| 1446 | 3.12.2 | заявка на датчики | 1h | 2026-09-18 14:00 | 2026-09-18 15:00 | 1445 |  |  | 116.19d | 0d | start no earlier than 2026-09-18 08:00 | Зорькин В | 1h |  |
| 1447 | 3.12.3 | контроль достачки | 15min | 2026-09-25 15:00 | 2026-09-25 15:15 | 1446FS+7d |  |  | 116.19d | 0d | start no earlier than 2026-09-18 08:00 | Зорькин В | 0.25h |  |
| 1448 | 3.12.4 | монтаж датчик в редуктор | 2h | 2026-09-26 15:15 | 2026-09-26 17:15 | 1447FS+1d |  |  | 116.19d | 0d | start no earlier than 2026-09-18 08:00 | Бобренок В | 2h |  |
| 1449 | 3.12.5 | подключение датчика в схему - блокировка по уровню | 4h | 2026-09-28 17:15 | 2026-09-29 12:15 | 1448FS+1d |  |  | 116.19d |  | start no earlier than 2026-09-18 08:00 | Дедов В | 4h |  |
| 1450 | 3.13 | Заменить кран подачи воды (второй слева) на втором предкондиционере — | 1h | 2026-09-14 09:00 A | 2026-09-14 10:00 A |  | 100% |  |  |  | start no earlier than 2026-09-14 09:00 | Тимофеев В | 1h | 1h |

| ID | WBS | Task | Type | Duration | Start | Finish | Predecessors | Complete | Total slack | Free slack | Constraint | Resources | Work | Actual work |
| --- | --- | --- | --- | --- | --- | --- | --- | --- | --- | --- | --- | --- | --- | --- |
| 1451 | 3.14 | **По схемам Труфанова разобраться с автоматикой шкафа и подключить 3 датчика уровня и подписать, где и что находится +кнопки и переключатели на шкафу тоже подписать** |  | 1.06d | 2026-09-07 09:00 A | 2026-09-08 09:30 A |  | 100% |  |  |  |  | 8.5h | 8.5h |
| 1452 | 3.14.1 | изучение схему |  | 8h | 2026-09-07 09:00 A | 2026-09-07 18:00 A |  | 100% |  |  | start no earlier than 2026-09-07 09:00 | Дедов В | 8h | 8h |
| 1453 | 3.14.2 | подкл 2я нория по датчику уровня |  | 30min | 2026-09-08 09:00 A | 2026-09-08 09:30 A |  | 100% |  |  | start no earlier than 2026-09-08 08:00 | Дедов В | 0.5h | 0.5h |
| 1454 | 3.15 | **установить ограничитель на дверь что бы попадала под движение рольворот** |  | 11.12d | 2026-09-15 09:00 | 2026-09-26 10:00 |  |  | 118.47d |  |  |  | 1.5h |  |
| 1455 | 3.15.1 | заявка |  | 15min | 2026-09-15 09:00 | 2026-09-15 09:15 |  |  | 123.41d | 0d | start no earlier than 2026-09-15 09:00 | Зорькин В | 0.25h |  |
| 1456 | 3.15.2 | контроль доставки |  | 15min | 2026-09-20 09:15 | 2026-09-20 09:30 | 1455FS+5d |  | 123.41d | 4.94d | start no earlier than 2026-09-03 08:00 | Зорькин В | 0.25h |  |
| 1457 | 3.15.3 | монтаж |  | 1h | 2026-09-26 09:00 | 2026-09-26 10:00 | 1456FS+1d |  | 118.47d |  | start no earlier than 2026-09-26 09:00 | Бундин В | 1h |  |
| 1458 | 3.16 | приварить к люку сливной ямы вспомогательную ручку (ручка весит на стеллаже в слесарке) | manual | 2h | 2026-08-30 09:00 | 2026-08-30 11:00 |  |  |  |  | start no earlier than 2026-08-30 09:00 | Бундин В | 2h |  |
| 1459 | 3.17 | **монтаж унитаз, получить на складе** |  | 0d | 2026-08-17 09:00 A | 2026-08-17 09:00 A |  | 100% |  |  |  |  |  |  |
| 1460 | 3.17.1 | крышка бачка лопнувшая- поменять по гарантии | milestone | 0d | 2026-08-17 09:00 A | 2026-08-17 09:00 A |  | 100% |  |  | start no earlier than 2026-08-17 09:00 | Зорькин В |  |  |
| 1461 | 3.18 | закрыить металлом 1.5мм щель стена / площадка загрузки муки. Между рольворотой и стеной с окнами |  | 2h | 2026-08-15 09:00 A | 2026-08-17 11:00 A |  | 100% |  |  | start no earlier than 2026-08-15 09:00 | Бундин В | 2h | 2h |
| 1462 | 3.19 | закрыть щель битумной лентой стык площадка-профлист стенка. Полоску клеить из нутри, обезжирить. |  | 2h | 2026-08-16 09:00 A | 2026-08-17 11:00 A |  | 100% |  |  | start no earlier than 2026-08-16 09:00 | Бундин В | 2h | 2h |
| 1463 | 3.20 | монтаж светильник в корридор / лестница на площадку жиров |  | 3h | 2026-08-16 09:00 A | 2026-08-17 12:00 A |  | 100% |  |  | start no earlier than 2026-08-16 09:00 | Бундин В | 3h | 3h |
| 1464 | 3.21 | **ломает гранулу после печи** |  | 17.12d? | 2026-08-18 09:00 A | 2026-09-09 10:00 A |  | 100% |  |  |  |  | 18.5h | 18.5h |
| 1465 | 3.21.1 | тест на ручной загрузке |  | 2h | 2026-08-18 09:00 A | 2026-08-18 11:00 A |  | 100% |  |  | start no earlier than 2026-08-18 09:00 | Шуранов Ю | 2h | 2h |
| 1466 | 3.21.2 | полная раборка трассы на ревизию острых граней? |  | 2h | 2026-08-19 09:00 A | 2026-08-19 11:00 A |  | 100% |  |  | start no earlier than 2026-08-19 09:00 | Тимофеев В | 2h | 2h |
| 1467 | 3.21.3 | определить параметры нории для запроса цены |  | 2h | 2026-08-18 09:00 A | 2026-08-18 11:00 A |  | 100% |  |  | start no earlier than 2026-08-18 09:00 | Шуранов Ю | 2h | 2h |
| 1468 | 3.21.4 | контроль отвта |  | 15min | 2026-09-03 09:00 A | 2026-09-03 09:15 A | 1467FS+5d | 100% |  |  | start no earlier than 2026-09-03 09:00 | Зорькин В | 0.25h | 0.25h |
| 1469 | 3.21.5 | изготовить новый отвод 90 с фланцем, учесть степеньку |  | 1h | 2026-09-02 09:00 A | 2026-09-02 10:00 A |  | 100% |  |  | start no earlier than 2026-09-09 09:00 | Макаревич А | 1h | 1h |
| 1470 | 3.21.6 | тест |  | 1h | 2026-08-19 09:00 A | 2026-08-19 10:00 A |  | 100% |  |  | start no earlier than 2026-08-19 09:00 | Тимофеев В; Шуранов Ю | 2h | 2h |
| 1471 | 3.21.7 | переварить фланец на угловом соединении (объясню по телефону). То же самое | milestone | 0h | 2026-09-04 09:00 A | 2026-09-04 09:00 A |  | 100% |  |  | start no earlier than 2026-09-04 09:00 | Макаревич А |  |  |
| 1472 | 3.21.8 | печать переходника на 3д принтере |  | 1d? | 2026-08-31 09:00 A | 2026-08-31 18:00 A |  | 100% |  |  | start no earlier than 2026-08-31 09:00 | Домоводов К | 8h | 8h |
| 1473 | 3.21.9 | проверка размещения нории от квадропака |  | 15min | 2026-08-18 09:00 A | 2026-08-18 09:15 A |  | 100% |  |  | start no earlier than 2026-08-18 09:00 | Шуранов Ю | 0.25h | 0.25h |
| 1474 | 3.21.10 | установить угловой фланец на пневмотрассу |  | 1h | 2026-09-09 09:00 A | 2026-09-09 10:00 A |  | 100% |  |  | start no earlier than 2026-09-09 09:00 | Тимофеев В | 1h | 1h |

| ID | WBS | Task | Type | Duration | Start | Finish | Predecessors | Complete | Remaining | Total slack | Free slack | Constraint | Resources | Work | Actual work |
| --- | --- | --- | --- | --- | --- | --- | --- | --- | --- | --- | --- | --- | --- | --- | --- |
| 1475 | 3.22 | **доп мощности для приточной вентиляции** |  | 34d? | 2026-08-21 09:00 A | 2026-09-29 18:00 |  | 16% | 28.63d? | 115.59d |  |  |  | 152h | 24h |
| 1476 | 3.22.1 | проект автоматика ограничения мощности в автомате |  | 1d? | 2026-08-31 09:00 | 2026-08-31 18:00 |  |  |  | 115.59d | 0d | start no earlier than 2026-08-31 09:00 | Домоводов К | 8h |  |
| 1477 | 3.22.2 | составить ТЗ на монтаж кабеля |  | 3d | 2026-08-21 09:00 A | 2026-08-25 18:00 A |  | 100% |  |  |  | start no earlier than 2026-08-21 09:00 | Домоводов К | 24h | 24h |
| 1478 | 3.22.3 | получить КП / счет договор | milestone | 0d | 2026-09-01 18:00 | 2026-09-01 18:00 | 1476FS+1d, 1477FS+2d |  |  | 115.59d | 0d | start no earlier than 2026-08-27 09:00 | Домоводов К |  |  |
| 1479 | 3.22.4 | предоплата | milestone | 0d | 2026-09-02 18:00 | 2026-09-02 18:00 | 1478FS+1d |  |  | 115.59d | 0d | start no earlier than 2026-08-10 08:00 | Домоводов К |  |  |
| 1480 | 3.22.5 | монтаж |  | 15d | 2026-09-14 09:00 | 2026-09-29 18:00 | 1479FS+10d |  |  | 115.59d |  | start no earlier than 2026-08-10 08:00 | Подрядчик | 120h |  |
| 1481 | 3.23 | сделать перемычку на нижней части системы загрузки палет подачи жиров и гидрализата | manual | 3h | 2026-08-15 09:00 | 2026-08-15 12:00 |  |  |  |  |  | start no earlier than 2026-08-15 09:00 | Бундин В | 3h |  |
| 1482 | 3.24 | **сборка квадропака 3 цех** |  | 35.5d | 2026-08-14 09:00 A | 2026-09-25 13:00 |  | 70% | 10.52d | 119.09d |  |  |  | 37h | 25h |
| 1483 | 3.24.1 | Монтаж/позиционирование квадропака |  | 5h | 2026-09-02 09:00 A | 2026-09-02 15:00 A |  | 100% |  |  |  | start no earlier than 2026-09-02 09:00 | Труфанов А | 5h | 5h |
| 1484 | 3.24.2 | перестановка норий, задействовать бункер |  | 2h | 2026-08-17 09:00 A | 2026-08-17 11:00 A |  | 100% |  |  |  | start no earlier than 2026-08-17 09:00 | Тимофеев В; Некрасов А | 4h | 4h |
| 1485 | 3.24.3 | сборка накопительный стол |  | 2h | 2026-08-19 09:00 A | 2026-08-19 11:00 A | 1484 | 100% |  |  |  | start no earlier than 2026-08-19 09:00 | Тимофеев В | 2h | 2h |
| 1486 | 3.24.4 | подключение дозатор |  | 1h | 2026-08-14 09:00 A | 2026-08-14 10:00 A |  | 100% |  |  |  | start no earlier than 2026-08-14 09:00 | Труфанов А | 1h | 1h |
| 1487 | 3.24.5 | зарисовка схема ШУ нория - понять управление бункером |  | 4h | 2026-08-14 09:00 | 2026-08-14 13:00 |  |  |  | 154.09d |  | start no earlier than 2026-08-14 09:00 | Труфанов А | 4h |  |
| 1488 | 3.24.6 | подключение нория к упаковке |  | 2h | 2026-08-14 14:00 A | 2026-08-14 16:00 A | 1487 | 100% |  |  |  | start no earlier than 2026-08-14 09:00 | Труфанов А | 2h | 2h |
| 1489 | 3.24.7 | подключение вводный кабель (питание) информация у Труфанова |  | 2h | 2026-09-04 09:00 A | 2026-09-04 11:00 A | 1488 | 100% |  |  |  | start no earlier than 2026-09-04 09:00 | Бундин В; Труфанов А | 4h | 4h |
| 1490 | 3.24.8 | тест на пакетах |  | 4h | 2026-09-25 09:00 | 2026-09-25 13:00 |  |  |  | 119.09d |  | start no earlier than 2026-09-25 09:00 | Труфанов А; Зорькин В | 8h |  |
| 1491 | 3.24.9 | подключениекомпрессор |  | 1h | 2026-09-03 09:00 A | 2026-09-03 10:00 A | 1489 | 100% |  |  |  | start no earlier than 2026-09-03 09:00 | Бобренок В | 1h | 1h |
| 1492 | 3.24.10 | Установка квадропака (позиционирование нижней машины) информация у Труфанова |  | 2h | 2026-09-02 09:00 A | 2026-09-02 11:00 A |  | 100% |  |  |  | start no earlier than 2026-09-02 09:00 | Труфанов А; Бундин В | 4h | 4h |
| 1493 | 3.24.11 | Выставить опоры верхней рамы и лестницы по уровню |  | 1h | 2026-09-02 09:00 A | 2026-09-02 10:00 A |  | 100% |  |  |  | start no earlier than 2026-09-02 08:00 | Бундин В | 1h | 1h |
| 1494 | 3.24.12 | Редуктор стола повернуть кабелем к электрощиту (на столе) |  | 30min | 2026-09-02 09:00 A | 2026-09-02 09:30 A |  | 100% |  |  |  | start no earlier than 2026-09-02 08:00 | Бундин В | 0.5h | 0.5h |
| 1495 | 3.24.13 | Провод от редуктора и кнопки в гофре закрепить по раме стола завести в шкаф |  | 30min | 2026-09-02 09:00 A | 2026-09-02 09:30 A |  | 100% |  |  |  | start no earlier than 2026-09-02 08:00 | Бундин В | 0.5h | 0.5h |
| 1496 | 3.25 | сделать ручку и зацепной крюк для открытия люка сливной ямы | manual | 2h | 2026-08-08 09:00 A | 2026-08-08 11:00 A |  | 100% |  |  |  | start no earlier than 2026-08-08 09:00 | Бобренок В | 2h | 2h |
| 1497 | 3.26 | **карусель добавить перемычку снизу, чтобы не выпал мешок** |  | 30.25d | 2026-08-18 09:00 A | 2026-09-22 11:00 |  | 93% | 2.16d | 122.34d |  |  |  | 2.33h | 2.17h |
| 1498 | 3.26.1 | заказать краску |  | 10min | 2026-08-18 09:00 A | 2026-08-18 09:10 A |  | 100% |  |  |  | start no earlier than 2026-08-18 09:00 | Шуранов Ю | 0.17h | 0.17h |
| 1499 | 3.26.2 | контроль доставки |  | 10min | 2026-08-31 09:00 | 2026-08-31 09:10 | 1498FS+5d |  |  | 143.57d |  | start no earlier than 2026-08-31 09:00 | Зорькин В | 0.17h |  |
| 1500 | 3.26.3 | покрасить перемычки система безопасности) |  | 2h | 2026-09-22 09:00 A | 2026-09-22 11:00 A | 1499FS+1d | 100% |  |  |  | start no earlier than 2026-09-22 09:00 | Тимофеев В | 2h | 2h |
| 1501 | 3.27 | убрать битумную ленту снаружи мезонина |  | 1h | 2026-08-04 08:00 A | 2026-08-04 10:00 A |  | 100% |  |  |  | start no earlier than 2026-08-04 08:00 | Макаревич А | 1h | 1h |
| 1502 | 3.28 | хорошо закрепить шланг подачи воды в прекондеционер |  | 2h | 2026-08-04 08:00 A | 2026-08-04 11:00 A |  | 100% |  |  |  | start no earlier than 2026-08-04 08:00 | Макаревич А | 2h | 2h |
| 1503 | 3.29 | на выходе ротаметра поменять шланг большего диаметра |  | 1h | 2026-07-31 08:00 A | 2026-07-31 10:00 A |  | 100% |  |  |  | start no earlier than 2026-07-31 08:00 | Тимофеев В | 1h | 1h |
| 1504 | 3.30 | покрасить кронштейн крепления ротаметра |  | 1h | 2026-07-31 09:00 A | 2026-07-31 10:00 A |  | 100% |  |  |  | start no earlier than 2026-07-31 09:00 | Бундин В | 1h | 1h |
| 1505 | 3.31 | не набирает заданную температуру 4 зона экструдера- разобраться |  | 2h | 2026-07-30 08:00 A | 2026-07-30 11:00 A |  | 100% |  |  |  | start no earlier than 2026-07-30 08:00 | Дедов В | 2h | 2h |
| 1506 | 3.32 | сборка кожухи на печи |  | 2h | 2026-07-15 09:00 A | 2026-07-15 11:00 A |  | 100% |  |  |  | start no earlier than 2026-07-15 09:00 | Бундин В | 2h | 2h |

| ID | WBS | Task | Type | Duration | Start | Finish | Predecessors | Complete | Actual start | Actual finish | Constraint | Resources | Work | Actual work |
| --- | --- | --- | --- | --- | --- | --- | --- | --- | --- | --- | --- | --- | --- | --- |
| 1507 | 3.33 | **установить зеркало сферическое на бункер** |  | 15.5d | 2026-07-07 09:00 A | 2026-07-28 13:00 A |  | 100% |  |  |  |  | 5h | 5h |
| 1508 | 3.33.1 | заявка |  | 1h | 2026-07-07 09:00 A | 2026-07-07 10:00 A |  | 100% |  |  | start no earlier than 2026-07-07 09:00 | Зорькин В | 1h | 1h |
| 1509 | 3.33.2 | контроль доставки | milestone | 0d | 2026-07-17 10:00 A | 2026-07-17 10:00 A | 1508FS+10d | 100% |  |  | start no earlier than 2026-07-14 08:00 | Зорькин В |  |  |
| 1510 | 3.33.3 | монтаж |  | 4h | 2026-07-28 09:00 A | 2026-07-28 13:00 A | 1509FS+1d | 100% |  |  | start no earlier than 2026-07-28 09:00 | Макаревич А | 4h | 4h |
| 1511 | 3.34 | поиск след от смазки на охладителе |  | 1h | 2026-07-10 09:00 A | 2026-07-10 10:00 A |  | 100% |  |  | start no earlier than 2026-07-10 09:00 | Тимофеев В; Зорькин В | 2h | 2h |
| 1512 | 3.35 | **установить наосос центробежный на бочку слив с парогенератора, врезать штуцер в бочку** |  | 0.25d | 2026-07-15 09:00 A | 2026-07-15 11:00 A |  | 100% |  |  |  |  | 4h | 4h |
| 1513 | 3.35.1 | орг закуп с курьером |  | 2h | 2026-07-15 09:00 A | 2026-07-15 11:00 A |  | 100% |  |  | start no earlier than 2026-07-15 09:00 | Зорькин В | 2h | 2h |
| 1514 | 3.35.2 | монтаж штуцер |  | 2h | 2026-07-15 09:00 A | 2026-07-15 11:00 A |  | 100% |  |  | start no earlier than 2026-07-15 09:00 | Бобренок В | 2h | 2h |
| 1515 | 3.36 | **вода идет не стабильно** |  | 4.38d | 2026-07-09 09:00 A | 2026-07-15 12:00 A |  | 100% |  |  |  |  | 8h | 8h |
| 1516 | 3.36.1 | Поставить гидроаккумулятор на насос между выходом насосной станции и 3-х ходомым краном подачи воды в экструдер и заменить трубки на шланги |  | 3h | 2026-07-09 09:00 A | 2026-07-09 12:00 A |  | 100% |  |  | start no earlier than 2026-07-09 09:00 | Тимофеев В | 3h | 3h |
| 1517 | 3.36.2 | тест работы воды с ПГ на давлении питательного насоса 3+ |  | 1h | 2026-07-10 09:00 A | 2026-07-10 10:00 A |  | 100% |  |  | start no earlier than 2026-07-10 09:00 | Зорькин В; Тимофеев В | 2h | 2h |
| 1518 | 3.36.3 | орг закуп с курьером |  | 2h | 2026-07-15 09:00 A | 2026-07-15 11:00 A | 1513SS | 100% |  |  | start no earlier than 2026-07-13 09:00 | Зорькин В | 2h | 2h |
| 1519 | 3.36.4 | замена шланг напорный с насоса до ротаметра |  | 1h | 2026-07-15 11:00 A | 2026-07-15 12:00 A | 1518 | 100% |  |  | start no earlier than 2026-07-13 09:00 | Бобренок В | 1h | 1h |
| 1520 | 3.37 | Доработать крутилку ссыпа гранулы, прихватить на сварку |  | 1h | 2026-07-09 09:00 A | 2026-07-09 10:00 A |  | 100% |  |  | start no earlier than 2026-07-09 09:00 | Макаревич А | 1h | 1h |
| 1521 | 3.38 | удлинить лоток ножевого узла, до кромки загрузки применик пневмотранспорта |  | 3h | 2026-07-09 09:00 A | 2026-07-09 12:00 A |  | 100% |  |  | start no earlier than 2026-07-09 09:00 | Макаревич А | 3h | 3h |
| 1522 | 3.39 | Снять торцевые дверцы на печи для доступа к сетке |  | 1h | 2026-07-08 09:00 A | 2026-07-08 10:00 A |  | 100% |  |  | start no earlier than 2026-07-08 08:00 | Бундин В | 1h | 1h |
| 1523 | 3.40 | Снять кожухи на редукторах на цепях |  | 1h | 2026-07-08 09:00 A | 2026-07-08 10:00 A |  | 100% |  |  | start no earlier than 2026-07-08 08:00 | Бундин В | 1h | 1h |
| 1524 | 3.41 | Установка раковины,унитаза в 3 цеху 2 этаж |  | 4h | 2026-07-07 09:00 A | 2026-07-07 13:00 A |  | 100% |  |  | start no earlier than 2026-07-07 09:00 | Бундин В | 4h | 4h |
| 1525 | 3.42 | Установить тройник на компрессор маленький, на входе. (тройни пришел сегодня на склад) |  | 1h | 2026-07-08 09:00 A | 2026-07-08 10:00 A |  | 100% |  |  | start no earlier than 2026-07-08 08:00 | Бундин В | 1h | 1h |
| 1526 | 3.43 | Вернуть упакованный унитаз на склад |  | 30min | 2026-07-08 09:00 A | 2026-07-08 09:30 A |  | 100% |  |  | start no earlier than 2026-07-08 08:00 | Бундин В | 0.5h | 0.5h |
| 1527 | 3.44 | **на тепловых реле 1 и 2 смесителя добавить порог выключения** |  | 1h? | 2026-07-11 09:00 | 2026-07-11 10:00 |  | 100% | 2026-07-14 09:00 | 2026-09-03 10:00 |  |  | 1.5h | 1.5h |
| 1528 | 3.44.1 | заявка на тепловые реле с большим номинолом |  | 15min | 2026-07-14 09:00 A | 2026-07-14 09:15 A |  | 100% |  |  | start no earlier than 2026-07-14 08:00 | Зорькин В | 0.25h | 0.25h |
| 1529 | 3.44.2 | доставка контроль |  | 15min | 2026-08-28 09:00 A | 2026-08-28 09:15 A | 1528FS+5d | 100% |  |  | start no earlier than 2026-08-28 09:00 | Зорькин В | 0.25h | 0.25h |
| 1530 | 3.44.3 | замена тепловых реле, получить на складе |  | 1h | 2026-09-03 09:00 A | 2026-09-03 10:00 A | 1529FS+1d | 100% |  |  | start no earlier than 2026-09-03 09:00 | Бобренок В | 1h | 1h |
| 1531 | 3.45 | сделать ручки с резьбой для снятия матрицы экструдера |  | 2h | 2026-07-04 09:00 A | 2026-07-06 11:00 A |  | 100% |  |  | start no earlier than 2026-07-04 09:00 | Макаревич А | 2h | 2h |
| 1532 | 3.46 | сделать противоудары головы на циклоне в зоне жиров | manual | 1h | 2026-07-26 09:00 A | 2026-07-26 10:00 A |  | 100% |  |  | start no earlier than 2026-07-26 09:00 | Макаревич А | 1h | 1h |
| 1533 | 3.47 | сделать откидную крышку на ножевом узле (расскажу как) |  | 8h | 2026-07-04 09:00 A | 2026-07-06 18:00 A |  | 100% |  |  | start no earlier than 2026-07-04 09:00 | Макаревич А | 8h | 8h |
| 1534 | 3.48 | подклинивает охладитель (все ярусы)- разобраться почему |  | 2h | 2026-07-11 09:00 A | 2026-07-13 11:00 A |  | 100% |  |  | start no earlier than 2026-07-11 09:00 | Макаревич А | 2h | 2h |

| ID | WBS | Task | Type | Duration | Start | Finish | Complete | Actual finish | Total slack | Constraint | Resources | Work | Actual work |
| --- | --- | --- | --- | --- | --- | --- | --- | --- | --- | --- | --- | --- | --- |
| 1535 | 3.49 | **откалибровать весы красных смесителей, муку с контрольным весом обеспечит 5ц** |  | 2h? | 2026-07-29 09:00 A | 2026-07-29 11:00 | 100% | 2026-08-03 18:00 |  |  | Дедов В | 10h | 10h |
| 1536 | 3.49.1 | вызвать специалистов |  | 1d? | 2026-08-03 09:00 A | 2026-08-03 18:00 A | 100% |  |  | start no earlier than 2026-08-03 09:00 | Шуранов Ю | 8h | 8h |
| 1537 | 3.50 | **установка частотника на шнек подачи со смесителей на ногу опоры шнека в разрыв питания шнека** |  | 0.12d | 2026-07-04 09:00 A | 2026-07-06 10:00 A | 100% |  |  |  |  | 1h | 1h |
| 1538 | 3.50.1 | демонтировать частотник шнека (в слесарку) |  | 1h | 2026-07-04 09:00 A | 2026-07-06 10:00 A | 100% |  |  | start no earlier than 2026-07-04 09:00 | Дедов В | 1h | 1h |
| 1539 | 3.51 | щель запенить выход из цеха |  | 1d? | 2026-07-02 09:00 A | 2026-07-02 18:00 A | 100% |  |  | start no earlier than 2026-07-02 09:00 | Олег | 8h | 8h |
| 1540 | 3.52 | силиконим двери прекондиционера (одну эксперимент) |  | 2h | 2026-07-02 09:00 A | 2026-07-02 11:00 A | 100% |  |  | start no earlier than 2026-07-03 09:00 | Дедов В | 2h | 2h |
| 1541 | 3.53 | наростить лопатку датчика переполнения на приемном лотке прекондиционера |  | 1h | 2026-06-30 09:00 A | 2026-06-30 10:00 A | 100% |  |  | start no earlier than 2026-06-30 09:00 | Бундин В | 1h | 1h |
| 1542 | 3.54 | установка бака стабилизации на подачу воды в прекондеционер (подключение) |  | 2h | 2026-07-02 09:00 A | 2026-07-02 11:00 A | 100% |  |  | start no earlier than 2026-07-02 09:00 | Тимофеев В | 2h | 2h |
| 1543 | 3.55 | изготовить фильтры на установки охлаждения |  | 1d? | 2026-07-06 09:00 | 2026-07-06 18:00 |  |  | 182.59d | start no earlier than 2026-07-06 09:00 | Тимофеев В | 8h |  |
| 1544 | 3.56 | удлинить горловину для второго красного смесителя |  | 2h | 2026-06-29 09:00 A | 2026-06-29 11:00 A | 100% |  |  | start no earlier than 2026-06-29 09:00 | Бундин В | 2h | 2h |
| 1545 | 3.57 | закрепить датчик сырья лопаткой в горке, под магнитом. Бункер экструдера |  | 4h | 2026-06-27 09:00 A | 2026-06-29 13:00 A | 100% |  |  | start no earlier than 2026-06-27 09:00 | Бундин В | 4h | 4h |
| 1546 | 3.58 | над магнитом сделать приемную воронку, борта, чтобы не пересыпалось сырье |  | 4h | 2026-06-27 09:00 A | 2026-06-29 13:00 A | 100% |  |  | start no earlier than 2026-06-27 09:00 | Бундин В | 4h | 4h |
| 1547 | 3.59 | удлинить воронку смесителя до горловины шнека. Приготовить сварщику, обяснить что нужно сделать. Вместо вибратора |  | 4h | 2026-06-27 09:00 A | 2026-06-29 13:00 A | 100% |  |  | start no earlier than 2026-06-27 09:00 | Дедов В; Бундин В | 8h | 8h |
| 1548 | 3.60 | байпас для масленной станции |  | 2h | 2026-07-01 09:00 A | 2026-07-01 11:00 A | 100% |  |  | start no earlier than 2026-07-01 09:00 | Тимофеев В | 2h | 2h |
| 1549 | 3.61 | **площадка для операторов для доступа к бункеру, что бы не наступали на краны** |  | 0.12d | 2026-07-02 09:00 A | 2026-07-02 10:00 A | 100% |  |  |  | Макаревич А; Некрасов А | 4h | 4h |
| 1550 | 3.61.1 | убрать заусенцы болгаркой |  | 1h | 2026-07-02 09:00 A | 2026-07-02 10:00 A | 100% |  |  | start no earlier than 2026-07-02 09:00 | Макаревич А; Тимофеев В | 2h | 2h |
| 1551 | 3.62 | **монтаж второй площадки с другой стороны (лестницу берем у 5 цеха -белую)** |  | 0.12d | 2026-07-03 09:00 A | 2026-07-03 10:00 A | 100% |  |  |  | Макаревич А; Некрасов А | 3h | 3h |
| 1552 | 3.62.1 | покрасить лестницу (мастер ц.1 даст людей- контроль) |  | 1h | 2026-07-03 09:00 A | 2026-07-03 10:00 A | 100% |  |  | start no earlier than 2026-07-03 09:00 | Макаревич А | 1h | 1h |
| 1553 | 3.63 | закрутить крышку двигателя улитки на циклоне жиров |  | 1h | 2026-06-25 09:00 A | 2026-06-25 10:00 A | 100% |  |  | start no earlier than 2026-06-25 09:00 | Дедов В | 1h | 1h |
| 1554 | 3.64 | укоротить шланг подачи масла | manual | 1h | 2026-06-25 08:00 A | 2026-06-25 09:00 A | 100% |  |  | start no earlier than 2026-06-25 08:00 | Макаревич А | 1h | 1h |
| 1555 | 3.65 | проверка подачи воды на парогенератор и прекондиционер, почему клапан подачи в бак заблокирован. |  | 2h | 2026-06-25 09:00 A | 2026-06-25 11:00 A | 100% |  |  | start no earlier than 2026-06-25 09:00 | Дедов В | 2h | 2h |
| 1556 | 3.66 | проверить парогенератор |  | 0.5h | 2026-06-25 09:00 A | 2026-06-25 09:30 A | 100% |  |  | start no earlier than 2026-06-25 09:00 | Дедов В | 0.5h | 0.5h |
| 1557 | 3.67 | вскрыть парогенератор, чистка электродов- фото |  | 3h | 2026-06-25 08:00 A | 2026-06-25 12:00 A | 100% |  |  | start no earlier than 2026-06-25 08:00 | Макаревич А | 3h | 3h |
| 1558 | 3.68 | подключить ролеты на охладителе |  | 1h | 2026-06-25 09:00 A | 2026-06-25 10:00 A | 100% |  |  | start no earlier than 2026-06-25 09:00 | Дедов В | 1h | 1h |
| 1559 | 3.69 | изготовление и установка шибера в лоток |  | 2h | 2026-06-25 09:00 A | 2026-06-25 11:00 A | 100% |  |  | start no earlier than 2026-06-25 09:00 | Дедов В | 2h | 2h |
| 1560 | 3.70 | контроль печи, будет включена пока не перестанет дымить |  | 1h | 2026-06-24 09:00 A | 2026-06-24 10:00 A | 100% |  |  | start no earlier than 2026-06-24 09:00 | Труфанов А; Макаревич А | 2h | 2h |

| ID | WBS | Task | Type | Duration | Start | Finish | Predecessors | Complete | Constraint | Resources | Work | Actual work |
| --- | --- | --- | --- | --- | --- | --- | --- | --- | --- | --- | --- | --- |
| 1561 | 3.71 | **взять на складе у Веры кронштейн под щетку, закрепить на него саму щетку и прикрутить на мезонине навесок в сторону ворот** |  | 28.38d | 2026-07-07 09:00 A | 2026-08-14 12:00 A |  | 100% |  |  | 3.5h | 3.5h |
| 1562 | 3.71.1 | заказать профиль 5мм |  | 15min | 2026-07-07 09:00 A | 2026-07-07 09:15 A |  | 100% | start no earlier than 2026-07-07 09:00 | Зорькин В | 0.25h | 0.25h |
| 1563 | 3.71.2 | контроль досставки |  | 15min | 2026-07-17 09:15 A | 2026-07-17 09:30 A | 1562FS+10d | 100% | start no earlier than 2026-07-07 09:00 | Зорькин В | 0.25h | 0.25h |
| 1564 | 3.71.3 | прикрепить на клепки/ саморезу щетку и установить на мезонине где ворота (все это находиться в 3 ц. справа на входе) Еще одна щетка есть у веры на складе, висела на кабинке | manual | 3h | 2026-08-14 09:00 A | 2026-08-14 12:00 A | 1563 | 100% |  | Макаревич А | 3h | 3h |
| 1565 | 3.72 | кабель трется о дверь, уложить в лоток, приподнять -закрепить к воздуховоду |  | 3h | 2026-06-24 09:00 A | 2026-06-24 12:00 A |  | 100% | start no earlier than 2026-06-24 09:00 | Труфанов А | 3h | 3h |
| 1566 | 3.73 | на частотнике пневмоулитки на жирах- увеличить время разгона и торможения |  | 1h | 2026-06-23 09:00 A | 2026-06-23 10:00 A |  | 100% | start no earlier than 2026-06-23 09:00 | Труфанов А | 1h | 1h |
| 1567 | 3.74 | проверить редукторы на печи (утечка есть или нет) |  | 1h | 2026-06-23 09:00 A | 2026-06-23 10:00 A |  | 100% | start no earlier than 2026-06-23 09:00 | Труфанов А | 1h | 1h |
| 1568 | 3.75 | убрать трубу нерж в коридоре возле охладителя в комнату на выходе из цеха | manual | 1h | 2026-06-20 09:00 A | 2026-06-20 10:00 A |  | 100% | start no earlier than 2026-06-20 09:00 | Бундин В | 1h | 1h |
| 1569 | 3.76 | капает с улитки вытяжки печи- просверлить сверло 6мм |  | 1h | 2026-06-20 09:00 A | 2026-06-22 10:00 A |  | 100% | start no earlier than 2026-06-20 09:00 | Дедов В | 1h | 1h |
| 1570 | 3.77 | герметизация всех стыков вневмотрубы аллюминевым скотчем (улитка с печи на жиры) | manual | 1h | 2026-06-21 09:00 A | 2026-06-21 10:00 A |  | 100% | start no earlier than 2026-06-21 09:00 | Труфанов А | 1h | 1h |
| 1571 | 3.78 | отпилить одну перекладину опоры вентиляции, чтобы открывалась дверь печи | manual | 3h | 2026-06-21 09:00 A | 2026-06-21 12:00 A |  | 100% | start no earlier than 2026-06-21 09:00 | Бундин В | 3h | 3h |
| 1572 | 3.79 | проверка подачи воды в прекондиционер | manual | 1h | 2026-06-21 09:00 A | 2026-06-21 10:00 A |  | 100% | start no earlier than 2026-06-21 09:00 | Труфанов А | 1h | 1h |
| 1573 | 3.80 | включаем печь, прожигаем масло- чтобы вагорело и не дымило… контроль |  | 1h | 2026-06-23 09:00 A | 2026-06-23 10:00 A |  | 100% | start no earlier than 2026-06-23 09:00 | Шуранов Ю | 1h | 1h |
| 1574 | 3.81 | прикрутить горловину прекондиционера (находиться в комнате на выходе из цеха) | manual | 1h | 2026-06-20 09:00 A | 2026-06-20 10:00 A |  | 100% | start no earlier than 2026-06-20 09:00 | Бундин В | 1h | 1h |
| 1575 | 3.82 | на 1 и 2 зоне температура растет больше факта- проверить |  | 1h | 2026-06-23 09:00 A | 2026-06-23 10:00 A |  | 100% | start no earlier than 2026-06-23 09:00 | Труфанов А | 1h | 1h |
| 1576 | 3.83 | собрать парогенератор (насос+ вход вода в парик) |  | 1h | 2026-06-19 09:00 A | 2026-06-19 10:00 A |  | 100% | start no earlier than 2026-06-19 09:00 | Дедов В | 1h | 1h |
| 1577 | 3.84 | увеличить частоту на пневмоулитку с печи в жиры |  | 1h | 2026-06-19 09:00 A | 2026-06-19 10:00 A |  | 100% | start no earlier than 2026-06-19 09:00 | Дедов В | 1h | 1h |
| 1578 | 3.85 | трубу жиротопки утеплить |  | 2h | 2026-06-18 09:00 A | 2026-06-18 11:00 A |  | 100% | start no earlier than 2026-06-18 08:00 | Труфанов А | 2h | 2h |
| 1579 | 3.86 | установка смесителя душа 2 этаж продолжить |  | 4h | 2026-07-07 09:00 A | 2026-07-07 13:00 A |  | 100% | start no earlier than 2026-07-07 09:00 | Бундин В | 4h | 4h |
| 1580 | 3.87 | на прекондеционере настроить премыкание на всех дверцах | manual | 3h | 2026-06-21 09:00 A | 2026-06-21 12:00 A |  | 100% | start no earlier than 2026-06-21 09:00 | Труфанов А | 3h | 3h |
| 1581 | 3.88 | обрезить шпильки, которые торчат, на воздуховодах вентиляции (зона навесок и жиров) |  | 2h | 2026-06-18 09:00 A | 2026-06-18 11:00 A |  | 100% | start no earlier than 2026-06-18 08:00 | Труфанов А | 2h | 2h |
| 1582 | 3.89 | **модернизация схема ШУ жиротопки - отключается циркуляц насос при достжении температуры** |  | 5.5d | 2026-06-07 09:00 A | 2026-06-15 13:00 A |  | 100% |  |  | 5h | 5h |
| 1583 | 3.89.1 | изучить схему, согласовать предложения модернизации |  | 1h | 2026-06-07 09:00 A | 2026-06-08 10:00 A |  | 100% | start no earlier than 2026-06-07 09:00 | Дедов В | 1h | 1h |
| 1584 | 3.89.2 | реализации модернизации |  | 4h | 2026-06-15 09:00 A | 2026-06-15 13:00 A | 1583 | 100% | start no earlier than 2026-06-15 09:00 | Дедов В | 4h | 4h |

| ID | WBS | Task | Type | Duration | Start | Finish | Predecessors | Complete | Remaining | Actual start | Actual finish | Total slack | Constraint | Resources | Work | Actual work |
| --- | --- | --- | --- | --- | --- | --- | --- | --- | --- | --- | --- | --- | --- | --- | --- | --- |
| 1585 | 3.90 | **сборка квадропак с системой дозации** |  | 56.5d | 2026-06-18 09:00 A | 2026-09-04 13:00 |  | 86% | 7.79d |  |  | 139.09d |  |  | 67h | 59h |
| 1586 | 3.90.1 | сборка нория |  | 8h | 2026-07-17 09:00 A | 2026-07-17 18:00 A |  | 100% |  |  |  |  | start no earlier than 2026-07-17 09:00 | Некрасов А; Тимофеев В | 15h | 15h |
| 1587 | 3.90.2 | сборка площадка |  | 4h | 2026-07-20 09:00 A | 2026-07-20 13:00 A | 1586 | 100% |  |  |  |  | start no earlier than 2026-07-09 08:00 | Некрасов А; Тимофеев В | 8h | 8h |
| 1588 | 3.90.3 | монтаж весы |  | 4h | 2026-07-20 14:00 | 2026-07-20 18:00 | 1587 |  |  |  |  | 172.59d | start no earlier than 2026-07-09 08:00 | Некрасов А; Тимофеев В | 8h |  |
| 1589 | 3.90.4 | подключить квадропак / пусконаладка |  | 4h | 2026-09-04 09:00 A | 2026-09-04 13:00 A |  | 100% |  |  |  |  | start no earlier than 2026-09-04 09:00 | Зорькин В; Труфанов А | 8h | 8h |
| 1590 | 3.90.5 | разгрузка / распаковка |  | 1h | 2026-06-18 09:00 A | 2026-06-18 10:00 A |  | 100% |  |  |  |  | start no earlier than 2026-06-18 09:00 | Некрасов А; Тимофеев В | 1h | 1h |
| 1591 | 3.90.6 | сборка рама в 1ц над столом выгрузки пакетов. Примерка/доработка рамы по месту |  | 4h | 2026-07-09 09:00 A | 2026-07-09 13:00 A |  | 100% |  |  |  |  | start no earlier than 2026-07-09 09:00 | Некрасов А; Макаревич А; Тимофеев В | 11h | 11h |
| 1592 | 3.90.7 | сборка дозатор |  | 4h | 2026-07-09 09:00 A | 2026-07-09 13:00 A |  | 100% |  |  |  |  | start no earlier than 2026-07-09 09:00 | Зорькин В; Макаревич А; Некрасов А; Тимофеев В | 16h | 16h |
| 1593 | 3.91 | устранить заусенцы пол площадки жиротопки. Рвет тряпку уборщица. |  | 4h | 2026-05-31 09:00 A | 2026-06-01 13:00 A |  | 100% |  |  |  |  | start no earlier than 2026-05-31 09:00 | Макаревич А | 4h | 4h |
| 1594 | 3.92 | **востановить насос циркуляция воды на жиротопке** |  | 8.32d | 2026-06-06 09:00 A | 2026-06-18 11:35 A |  | 100% |  |  |  |  |  |  | 3.58h | 3.58h |
| 1595 | 3.92.1 | разборка насос / выяснить причину заклинивания |  | 1h | 2026-06-06 09:00 A | 2026-06-08 10:00 A |  | 100% |  |  |  |  | start no earlier than 2026-06-06 09:00 | Бундин В | 1h | 1h |
| 1596 | 3.92.2 | заявка аналог |  | 20min | 2026-06-08 09:00 A | 2026-06-08 09:20 A | 1595 | 100% |  |  |  |  | start no earlier than 2026-06-08 09:00 | Шуранов Ю | 0.33h | 0.33h |
| 1597 | 3.92.3 | контроль доставка |  | 15min | 2026-06-17 09:20 A | 2026-06-17 09:35 A | 1596FS+7d | 100% |  |  |  |  | start no earlier than 2026-06-05 08:00 | Шуранов Ю | 0.25h | 0.25h |
| 1598 | 3.92.4 | замена |  | 2h | 2026-06-18 09:35 A | 2026-06-18 11:35 A | 1597FS+1d | 100% |  |  |  |  | start no earlier than 2026-06-05 08:00 | Тимофеев В | 2h | 2h |
| 1599 | 3.93 | **жиротопка** |  | 9.5d | 2026-06-09 09:00 A | 2026-06-22 13:00 A |  | 100% |  |  |  |  |  |  | 9h | 9h |
| 1600 | 3.93.1 | (проверить двигатель и сам насос) |  | 1h | 2026-06-09 09:00 A | 2026-06-09 10:00 A |  | 100% |  |  |  |  | start no earlier than 2026-06-09 09:00 | Тимофеев В | 1h | 1h |
| 1601 | 3.93.2 | ремонт заклинившего насоса жиров (сняли сегодя голову ) |  | 1h | 2026-06-18 09:00 A | 2026-06-18 10:00 A | 1600 | 100% |  |  |  |  | start no earlier than 2026-06-18 09:00 | Труфанов А | 1h | 1h |
| 1602 | 3.93.3 | установить насос, который перебрал Труфанов поставить на штатное место / если не заработает ставим новый | manual | 1h | 2026-06-21 09:00 A | 2026-06-21 10:00 A | 1601 | 100% |  |  |  |  | start no earlier than 2026-06-21 09:00 | Бундин В | 1h | 1h |
| 1603 | 3.93.4 | восстановить работу пускателя на насос перекачки с бака в бак |  | 4h | 2026-06-20 09:00 A | 2026-06-22 13:00 A |  | 100% |  |  |  |  | start no earlier than 2026-06-20 09:00 | Дедов В | 4h | 4h |
| 1604 | 3.93.5 | подключить все шланги подачи жира в баки | manual | 2h | 2026-06-22 09:00 A | 2026-06-22 11:00 A |  | 100% |  |  |  |  | start no earlier than 2026-06-22 09:00 | Труфанов А | 2h | 2h |
| 1605 | 3.94 | **трасса нерж жиротопка- баки, найти утечки устранить** |  | 0.75d | 2026-05-23 09:00 A | 2026-05-25 16:00 A |  | 100% |  |  |  |  |  |  | 6h | 6h |
| 1606 | 3.94.1 | заварить места утечки и восстановить утеплитель + греющий кабель |  | 6h | 2026-05-23 09:00 A | 2026-05-25 16:00 A |  | 100% |  |  |  |  | start no earlier than 2026-05-23 09:00 | Макаревич А | 6h | 6h |
| 1607 | 3.95 | **защита ворот на мезонине загрузки** |  | 8h? | 2026-05-22 09:00 | 2026-05-22 18:00 |  | 100% |  | 2026-05-29 09:00 | 2026-08-13 13:00 |  |  |  | 27h | 27h |
| 1608 | 3.95.1 | покрасить конструкцию |  | 2h | 2026-05-31 09:00 A | 2026-06-01 11:00 A |  | 100% |  |  |  |  | start no earlier than 2026-05-31 09:00 | Макаревич А | 2h | 2h |
| 1609 | 3.95.2 | приварить дополнительную перекладину на защиту воротины |  | 2h | 2026-07-07 09:00 A | 2026-07-07 11:00 A |  | 100% |  |  |  |  | start no earlier than 2026-07-07 09:00 | Труфанов А; Тимофеев В | 4h | 4h |
| 1610 | 3.95.3 | заказать щетку и битумную ленту |  | 1h | 2026-05-31 11:00 A | 2026-06-01 10:00 A | 1608 | 100% |  |  |  |  | start no earlier than 2026-05-22 09:00 | Шуранов Ю | 1h | 1h |
| 1611 | 3.95.4 | контроль доставки |  | 1d? | 2026-05-31 12:00 A | 2026-06-01 18:00 A | 1610 | 100% |  |  |  |  | start no earlier than 2026-05-29 09:00 | Шуранов Ю | 8h | 8h |
| 1612 | 3.95.5 | установка щетки |  | 4h | 2026-08-13 09:00 A | 2026-08-13 13:00 A |  | 100% |  |  |  |  | start no earlier than 2026-08-13 09:00 | Макаревич А | 4h | 4h |
| 1613 | 3.95.6 | монтаж |  | 1d? | 2026-05-29 09:00 A | 2026-05-29 18:00 A |  | 100% |  |  |  |  | start no earlier than 2026-05-29 09:00 | Некрасов А | 8h | 8h |
| 1614 | 3.96 | установить щетку на поломоечную машину (щетка на складе) |  | 2h | 2026-05-21 09:00 A | 2026-05-21 11:00 A |  | 100% |  |  |  |  | start no earlier than 2026-05-21 08:00 | Бундин В | 2h | 2h |
| 1615 | 3.97 | площадка мезонина зона фасовки- убрать щели профиля битумной лентой |  | 2h | 2026-05-21 09:00 A | 2026-05-21 11:00 A |  | 100% |  |  |  |  | start no earlier than 2026-05-21 09:00 | Бундин В | 2h | 2h |
| 1616 | 3.98 | прикрутить дюзы форсунок подачи воды в прекондиционер, взять у меня на столе. |  | 1h | 2026-05-22 09:00 A | 2026-05-22 10:00 A |  | 100% |  |  |  |  | start no earlier than 2026-05-22 09:00 | Тимофеев В | 1h | 1h |
| 1617 | 3.99 | проверить насос подачи жира со 2 бака на барабаны, Викторович его разобрал |  | 2h | 2026-05-19 08:00 A | 2026-05-19 11:00 A |  | 100% |  |  |  |  | start no earlier than 2026-05-19 08:00 | Дедов В | 2h | 2h |
| 1618 | 3.100 | проверить рабочий или нет циркуляционный насос для змеевика на жиротопке |  | 1h | 2026-05-19 08:00 A | 2026-05-19 10:00 A |  | 100% |  |  |  |  | start no earlier than 2026-05-19 08:00 | Дедов В | 1h | 1h |
| 1619 | 3.101 | проверка оборудования на жирах водой |  | 3h | 2026-05-19 09:00 A | 2026-05-19 12:00 A |  | 100% |  |  |  |  | start no earlier than 2026-05-20 09:00 | Тимофеев В | 3h | 3h |
| 1620 | 3.102 | покраска пол под лотком барабан-охладитель |  | 1h | 2026-05-15 09:00 A | 2026-05-15 10:00 A |  | 100% |  |  |  |  | start no earlier than 2026-05-15 09:00 | Бобренок В | 1h | 1h |

| ID | WBS | Task | Type | Duration | Start | Finish | Complete | Remaining | Total slack | Constraint | Resources | Work | Actual work |
| --- | --- | --- | --- | --- | --- | --- | --- | --- | --- | --- | --- | --- | --- |
| 1621 | 3.103 | **ремонт ворот рольставня** |  | 4.12d | 2026-05-14 09:00 A | 2026-05-20 10:00 A | 100% |  |  |  |  | 2h | 2h |
| 1622 | 3.103.1 | вызывать сервис |  | 1h | 2026-05-14 09:00 A | 2026-05-14 10:00 A | 100% |  |  | start no earlier than 2026-05-14 09:00 | Зорькин В | 1h | 1h |
| 1623 | 3.103.2 | контроль работ |  | 1h | 2026-05-20 09:00 A | 2026-05-20 10:00 A | 100% |  |  | start no earlier than 2026-05-20 09:00 | Зорькин В | 1h | 1h |
| 1624 | 3.104 | вырезать косая пластина в воронку пневмотранспорта на подачу жиров |  | 2h | 2026-05-14 09:00 A | 2026-05-14 11:00 A | 100% |  |  | start no earlier than 2026-05-14 09:00 | Макаревич А | 2h | 2h |
| 1625 | 3.105 | убрать бороду от вентиляторов |  | 4h | 2026-05-12 09:00 A | 2026-05-12 13:00 A | 100% |  |  | start no earlier than 2026-05-12 09:00 | Некрасов А; Труфанов А | 8h | 8h |
| 1626 | 3.106 | монтаж кабель управления заслонками вентиляторы окно |  | 4h | 2026-05-20 09:00 A | 2026-05-20 13:00 A | 100% |  |  | start no earlier than 2026-05-22 09:00 | Некрасов А; Бундин В | 8h | 8h |
| 1627 | 3.107 | **автоматика управления смесителями** |  | 80.38d | 2026-05-04 09:00 A | 2026-08-24 12:00 | 91% | 6.89d | 148.22d |  |  | 35h | 32h |
| 1628 | 3.107.1 | поменять местами переключатели управления смесителями левый что бы включал поперечный смеситель |  | 2h | 2026-07-12 09:00 A | 2026-07-13 11:00 A | 100% |  |  | start no earlier than 2026-07-12 09:00 | Дедов В | 2h | 2h |
| 1629 | 3.107.2 | сделать подключение красных смесителей по схеме Домоводова |  | 22h | 2026-05-18 09:00 A | 2026-05-20 16:00 A | 100% |  |  | start no earlier than 2026-05-19 09:00 | Дедов В | 22h | 22h |
| 1630 | 3.107.3 | доработка схемы управления смесителями по логике ТЗ, упорядочить монтаж, промаркировать соденения |  | 8h | 2026-05-04 09:00 A | 2026-05-04 18:00 A | 100% |  |  | start no earlier than 2026-05-04 09:00 | Дедов В | 8h | 8h |
| 1631 | 3.107.4 | уложить красиво все провода в шкафу управления смесителями |  | 3h | 2026-08-24 09:00 | 2026-08-24 12:00 |  |  | 148.22d | start no earlier than 2026-08-24 09:00 | Дедов В | 3h |  |
| 1632 | 3.108 | **установить воздуховод на 300мм на красные смесители** |  | 6.25d | 2026-05-08 08:00 A | 2026-05-18 11:00 A | 100% |  |  |  |  | 4h | 4h |
| 1633 | 3.108.1 | заказать другой диаметр | milestone | 0d | 2026-05-08 08:00 A | 2026-05-08 08:00 A | 100% |  |  | start no earlier than 2026-05-08 08:00 | Зорькин В |  |  |
| 1634 | 3.108.2 | установить ф300 | milestone | 0h | 2026-05-13 09:00 A | 2026-05-13 09:00 A | 100% |  |  | start no earlier than 2026-05-13 09:00 | Тимофеев В; Зорькин В |  |  |
| 1635 | 3.108.3 | красные смесители вернуть воздуховоды (доработать рукав пересыпки воронка-смеситель) |  | 2h | 2026-05-13 09:00 A | 2026-05-13 11:00 A | 100% |  |  | start no earlier than 2026-05-13 09:00 | Тимофеев В | 2h | 2h |
| 1636 | 3.108.4 | сборка рукав на второй смеситель. Сшить по образцу |  | 2h | 2026-05-18 09:00 A | 2026-05-18 11:00 A | 100% |  |  | start no earlier than 2026-05-18 09:00 | Тимофеев В | 2h | 2h |
| 1637 | 3.109 | проверить почему не запускается приточная вентиляция в вент. Камере 7,5кВт |  | 1h | 2026-04-29 08:00 A | 2026-04-29 10:00 A | 100% |  |  | start no earlier than 2026-04-29 08:00 | Дедов В | 1h | 1h |
| 1638 | 3.110 | прозвонить кнопку индикации водителя под сиденьем (позвони объясню) |  | 2h | 2026-04-15 09:00 A | 2026-04-15 11:00 A | 100% |  |  | start no earlier than 2026-04-15 08:00 | Бундин В | 2h | 2h |
| 1639 | 3.111 | проверить приход с Китая по шнекам и гильзам |  | 1h | 2026-04-09 09:00 A | 2026-04-09 10:00 A | 100% |  |  | start no earlier than 2026-04-09 08:00 | Шуранов Ю | 1h | 1h |
| 1640 | 3.112 | собрать и установить мойку (со старой прикрутить смеситель) мойка у Веры на складе на 2 верхнем ярусе стеллажей | manual | 2h | 2026-04-05 09:00 A | 2026-04-05 11:00 A | 100% |  |  | start no earlier than 2026-04-05 09:00 | Труфанов А | 2h | 2h |
| 1641 | 3.113 | вывоз 3 поддона с мусором |  | 30min | 2026-03-24 09:00 A | 2026-03-24 09:30 A | 100% |  |  | start no earlier than 2026-03-24 09:00 | Некрасов А; Труфанов А | 1h | 1h |
| 1642 | 3.114 | установить отбойники на стеллажи | manual | 8h | 2026-03-29 09:00 A | 2026-03-29 18:00 A | 100% |  |  | start no earlier than 2026-03-29 09:00 | Бундин В | 8h | 8h |
| 1643 | 3.115 | установить отбойники на стеллажи | manual | 6h | 2026-04-18 09:00 A | 2026-04-18 16:00 A | 100% |  |  | start no earlier than 2026-04-18 09:00 | Бобренок В | 6h | 6h |
| 1644 | 3.116 | уборка зона курилка / венткамера |  | 4h | 2026-03-17 09:00 A | 2026-03-17 13:00 A | 100% |  |  | start no earlier than 2026-03-17 09:00 | Тимофеев В; Некрасов А; Макаревич А; Труфанов А | 16h | 16h |

| ID | WBS | Task | Duration | Start | Finish | Predecessors | Complete | Actual start | Actual finish | Total slack | Constraint | Resources | Work | Actual work |
| --- | --- | --- | --- | --- | --- | --- | --- | --- | --- | --- | --- | --- | --- | --- |
| 1645 | 3.117 | **сборка квадропак** | 13.25d | 2026-05-06 09:00 A | 2026-05-25 11:00 A |  | 100% |  |  |  |  |  | 14h | 14h |
| 1646 | 3.117.1 | подвести воздух к квадропаку | 4h | 2026-05-22 09:00 A | 2026-05-22 13:00 A |  | 100% |  |  |  | start no earlier than 2026-05-22 09:00 | Тимофеев В | 4h | 4h |
| 1647 | 3.117.2 | установить перед пневмораспределителями влагоотделитель | 2h | 2026-05-24 09:00 A | 2026-05-25 11:00 A |  | 100% |  |  |  | start no earlier than 2026-05-24 09:00 | Дедов В | 2h | 2h |
| 1648 | 3.117.3 | подключить квадропак к щитку кабель 5х2,5 | 4h | 2026-05-06 09:00 A | 2026-05-06 13:00 A |  | 100% |  |  |  | start no earlier than 2026-05-06 09:00 | Труфанов А; Тимофеев В | 8h | 8h |
| 1649 | 3.118 | крепление магистрали компрессора. Зона дрожировки | 1h | 2026-03-08 09:00 A | 2026-03-09 10:00 A |  | 100% |  |  |  | start no earlier than 2026-03-08 09:00 | Бундин В | 1h | 1h |
| 1650 | 3.119 | Собрать транспортер тип2 (уточнить у Шуранова)/ доделать | 3h | 2026-03-08 09:00 A | 2026-03-09 12:00 A |  | 100% |  |  |  | start no earlier than 2026-03-08 09:00 | Бобренок В | 3h | 3h |
| 1651 | 3.120 | **Покраска лестницы** | 43d | 2026-03-04 09:00 A | 2026-05-01 18:00 A |  | 100% |  |  |  |  |  | 116.33h | 116.33h |
| 1652 | 3.120.1 | Заявка на краску | 20min | 2026-03-04 09:00 A | 2026-03-04 09:20 A |  | 100% |  |  |  | start no earlier than 2026-03-04 09:00 | Зорькин В | 0.33h | 0.33h |
| 1653 | 3.120.2 | Доставка | 10d | 2026-03-04 09:20 A | 2026-03-18 09:20 A | 1652 | 100% |  |  |  | start no earlier than 2026-03-03 08:00 | Карабанов | 80h | 80h |
| 1654 | 3.120.3 | Работа по покраске | 6h | 2026-04-28 09:00 A | 2026-04-28 16:00 A | 1653 | 100% |  |  |  | start no earlier than 2026-04-28 09:00 | оперторы2; Олег | 12h | 12h |
| 1655 | 3.120.4 | покраска колонны в коридоре | 4h | 2026-04-28 09:00 A | 2026-04-28 13:00 A |  | 100% |  |  |  | start no earlier than 2026-04-28 08:00 | оперторы2; Олег | 8h | 8h |
| 1656 | 3.120.5 | покарска потолок в корридоре | 2d | 2026-04-30 09:00 A | 2026-05-01 18:00 A |  | 100% |  |  |  | start no earlier than 2026-04-30 09:00 | оператор2 | 16h | 16h |
| 1657 | 3.121 | **доработка лотка барабан-охладитель - снизить скорость падения, установить сетку** | 1.5d? | 2026-04-14 09:00 | 2026-04-15 13:00 |  | 100% | 2026-05-13 09:00 | 2026-06-17 18:00 |  |  |  | 46.75h | 46.75h |
| 1658 | 3.121.1 | сборка кронштейны + стека | 5h | 2026-05-13 09:00 A | 2026-05-13 15:00 A |  | 100% |  |  |  | start no earlier than 2026-05-13 09:00 | Труфанов А; Некрасов А | 10h | 10h |
| 1659 | 3.121.2 | сборка ручки, установка. Фотоотчет | 2h | 2026-05-15 09:00 A | 2026-05-15 11:00 A |  | 100% |  |  |  | start no earlier than 2026-05-15 09:00 | Некрасов А; Труфанов А | 4h | 4h |
| 1660 | 3.121.3 | сборка вращающаяся заслонка | 4h | 2026-05-15 11:00 A | 2026-05-15 16:00 A | 1659 | 100% |  |  |  | start no earlier than 2026-05-15 09:00 | Некрасов А; Труфанов А | 8h | 8h |
| 1661 | 3.121.4 | доработка пластины, что бы не клинила | 1h | 2026-05-21 09:00 A | 2026-05-21 10:00 A |  | 100% |  |  |  | start no earlier than 2026-05-22 09:00 | Некрасов А; Бундин В | 2h | 2h |
| 1662 | 3.121.5 | заказ на лазере пластину для регулировки шибера | 1d? | 2026-05-25 09:00 A | 2026-05-25 18:00 A |  | 100% |  |  |  | start no earlier than 2026-05-25 09:00 | Зорькин В | 8h | 8h |
| 1663 | 3.121.6 | чертеж пластина фиксации рычага | 2h | 2026-05-19 09:00 A | 2026-05-19 11:00 A | 1660 | 100% |  |  |  | start no earlier than 2026-05-19 09:00 | Зорькин В | 2h | 2h |
| 1664 | 3.121.7 | заявка на изготвление на лазер | 15min | 2026-05-20 11:00 A | 2026-05-20 11:15 A | 1663FS+1d | 100% |  |  |  | start no earlier than 2026-05-15 08:00 | Зорькин В | 0.25h | 0.25h |
| 1665 | 3.121.8 | контроль изг | 15min | 2026-06-01 09:00 A | 2026-06-01 09:15 A | 1664FS+5d | 100% |  |  |  | start no earlier than 2026-06-01 09:00 | Зорькин В | 0.25h | 0.25h |
| 1666 | 3.121.9 | доставка орг | 15min | 2026-06-05 09:00 A | 2026-06-05 09:15 A | 1665FS+1d | 100% |  |  |  | start no earlier than 2026-06-05 09:00 | Зорькин В | 0.25h | 0.25h |
| 1667 | 3.121.10 | сборка рычага | 4h | 2026-06-08 09:15 A | 2026-06-08 14:15 A | 1666FS+1d | 100% |  |  |  | start no earlier than 2026-06-06 09:00 | Бундин В | 4h | 4h |
| 1668 | 3.121.11 | сделать напраляшку на шибере регулируемую- сыпит в одну сторону | 1d? | 2026-06-17 09:00 A | 2026-06-17 18:00 A |  | 100% |  |  |  | start no earlier than 2026-06-23 09:00 | Тимофеев В | 8h | 8h |
| 1669 | 3.122 | сборка система отопления 2 этаж | 1d? | 2026-06-15 09:00 | 2026-06-15 18:00 |  |  |  |  | 197.59d | start no earlier than 2026-06-15 09:00 | Труфанов А; Некрасов А; Олег | 24h |  |

| ID | WBS | Task | Duration | Start | Finish | Predecessors | Complete | Remaining | Total slack | Constraint | Resources | Work | Actual work |
| --- | --- | --- | --- | --- | --- | --- | --- | --- | --- | --- | --- | --- | --- |
| 1670 | 3.123 | **заменить сопряжение смесителей на гибк вставку** | 29.25d | 2026-03-19 09:00 A | 2026-04-29 11:00 A |  | 100% |  |  |  |  | 122.5h | 122.5h |
| 1671 | 3.123.1 | заявка | 30min | 2026-03-19 09:00 A | 2026-03-19 09:30 A |  | 100% |  |  | start no earlier than 2026-03-19 09:00 | Зорькин В | 0.5h | 0.5h |
| 1672 | 3.123.2 | доставка | 15d | 2026-03-19 09:30 A | 2026-04-09 09:30 A | 1671 | 100% |  |  | start no earlier than 2026-02-27 08:00 | Карабанов | 120h | 120h |
| 1673 | 3.123.3 | замена | 2h | 2026-04-29 09:00 A | 2026-04-29 11:00 A | 1672 | 100% |  |  | start no earlier than 2026-04-29 09:00 | Тимофеев В | 2h | 2h |
| 1674 | 3.124 | **приточная вентиляция** | 149.25d | 2026-03-06 09:00 A | 2026-09-24 11:00 |  | 48% | 77.87d | 120.34d |  |  | 11.5h | 5.5h |
| 1675 | 3.124.1 | визит Евгения. Контроль монтажа | 30min | 2026-03-06 09:00 A | 2026-03-06 09:30 A |  | 100% |  |  | start no earlier than 2026-03-06 09:00 | Домоводов К | 0.5h | 0.5h |
| 1676 | 3.124.2 | подключить силовой кабель в ШУ (лежит в лотке) | 3h | 2026-03-13 09:00 A | 2026-03-13 12:00 A |  | 100% |  |  | start no earlier than 2026-03-13 09:00 | Подрядчик | 3h | 3h |
| 1677 | 3.124.3 | монтаж изоляционных прокладок вводный автомат между фазами | 2h | 2026-09-24 09:00 | 2026-09-24 11:00 |  |  |  | 120.34d | start no earlier than 2026-09-24 09:00 | Дедов В | 2h |  |
| 1678 | 3.124.4 | подключить нулевой провод шкаф управления | 2h | 2026-09-24 09:00 | 2026-09-24 11:00 |  |  |  | 120.34d | start no earlier than 2026-09-24 09:00 | Дедов В | 2h |  |
| 1679 | 3.124.5 | монтаж перемычек от автомата на ТВ реле . Звонить Дедову | 2h | 2026-09-24 09:00 | 2026-09-24 11:00 |  |  |  | 120.34d | start no earlier than 2026-09-24 09:00 | Дедов В | 2h |  |
| 1680 | 3.124.6 | замена схемы включения вентилятор вытяжка / приточка | 2h | 2026-05-04 09:00 A | 2026-05-04 11:00 A |  | 100% |  |  | start no earlier than 2026-05-04 09:00 | Дедов В | 2h | 2h |
| 1681 | 3.125 | установить гидроаккумулятор | 2h | 2026-03-03 09:00 A | 2026-03-03 11:00 A |  | 100% |  |  | start no earlier than 2026-03-03 09:00 | Тимофеев В | 2h | 2h |
| 1682 | 3.126 | тест герметичности. жиропровод нерж оборудовать греющим кабелем + утеплитель. | 2h | 2026-06-01 09:00 | 2026-06-01 11:00 |  |  |  | 208.34d | start no earlier than 2026-05-31 09:00 | Макаревич А | 2h |  |
| 1683 | 3.127 | **установить перила площадка загрузки навески** | 0.25d | 2026-05-27 09:00 A | 2026-05-27 11:00 A |  | 100% |  |  |  |  | 2h | 2h |
| 1684 | 3.127.1 | покрасить перила | 2h | 2026-05-27 09:00 A | 2026-05-27 11:00 A |  | 100% |  |  | start no earlier than 2026-05-27 09:00 | оператор2 | 2h | 2h |
| 1685 | 3.128 | дорабать качелю безопасности на площадке загрузки навески что бы не задевала за вентиляцию | 2h | 2026-05-12 09:00 A | 2026-05-12 11:00 A |  | 100% |  |  | start no earlier than 2026-05-12 09:00 | Некрасов А | 2h | 2h |
| 1686 | 3.129 | подготовить отражатели тепла на подшипники печи линия 4 | 8h | 2025-09-01 09:00 | 2025-09-01 18:00 |  |  |  | 402.59d | start no earlier than 2025-08-30 09:00 | Тимофеев В | 8h |  |
| 1687 | 3.130 | усилить раму прекондиционера | 1d? | 2026-04-28 08:00 A | 2026-04-28 18:00 A |  | 100% |  |  | start no earlier than 2026-04-28 08:00 | Тимофеев В | 8h | 8h |
| 1688 | 3.131 | переместить магнит загрузки сырья | 2h | 2026-05-07 09:00 A | 2026-05-07 11:00 A |  | 100% |  |  | start no earlier than 2026-05-07 09:00 | Тимофеев В | 2h | 2h |
| 1689 | 3.132 | труба выход пара греет шнек - переместить | 1d? | 2026-06-19 09:00 | 2026-06-19 18:00 |  |  |  | 193.59d | start no earlier than 2026-06-19 09:00 | Тимофеев В | 8h |  |
| 1690 | 3.133 | герметизация примыкание на выходе из печи | 2d | 2026-05-18 09:00 A | 2026-05-19 18:00 A |  | 100% |  |  | start no earlier than 2026-05-18 09:00 | Олег | 16h | 16h |
| 1691 | 3.134 | обшить стены курилки | 2d | 2026-04-30 09:00 A | 2026-05-01 18:00 A |  | 100% |  |  | start no earlier than 2026-04-30 09:00 | Олег; Некрасов А | 32h | 32h |
| 1692 | 3.135 | покраска рамы воздуховодов уличные | 4h | 2026-05-27 09:00 | 2026-05-27 13:00 |  |  |  | 211.09d | start no earlier than 2026-05-27 09:00 | оператор2 | 4h |  |
| 1693 | 3.136 | Выяснить количество теплопотерь с печи на входе | 1h | 2026-08-28 09:00 | 2026-08-28 10:00 |  |  |  | 144.47d | start no earlier than 2026-08-28 09:00 | Зорькин В; Бобренок В | 2h |  |
| 1694 | 3.137 | Переделка входа пневмотрассы с печи на жиры, сделать плавный переход из двух углов по 45 | 4h | 2026-07-24 09:00 | 2026-07-24 13:00 |  |  |  | 169.09d | start no earlier than 2026-07-24 09:00 | Бундин В | 4h |  |

| ID | WBS | Task | Type | Duration | Start | Finish | Predecessors | Complete | Remaining | Actual finish | Total slack | Constraint | Resources | Work | Actual work |
| --- | --- | --- | --- | --- | --- | --- | --- | --- | --- | --- | --- | --- | --- | --- | --- |
| 1695 | 3.138 | **Печь** |  | 0d | 2026-07-25 09:00 A | 2026-07-26 11:00 A |  | 100% |  |  |  |  |  | 6h | 6h |
| 1696 | 3.138.1 | Переделка входа пневмотрассы с печи на жиры, сделать плавный переход из двух углов по 45, закончить если Валентин не доделал или взять в работу если Валентин не начал. Уточнить у него как он хотел сделать. | manual | 4h | 2026-07-25 09:00 A | 2026-07-25 13:00 A |  | 100% |  |  |  | start no earlier than 2026-07-25 09:00 | Макаревич А | 4h | 4h |
| 1697 | 3.138.2 | 4 зона шкаф управления не набирает заданную температуру, выяснить причину/устранить | manual | 2h | 2026-07-26 09:00 A | 2026-07-26 11:00 A |  | 100% |  |  |  | start no earlier than 2026-07-26 09:00 | Бобренок В | 2h | 2h |
| 1698 | 3.139 | **розетки** |  | 0.25d | 2026-07-25 09:00 A | 2026-07-27 11:00 A |  | 100% |  |  |  |  |  | 6h | 6h |
| 1699 | 3.139.1 | Монтаж розетки для болера, где мойка экструдера, подключиться к резерву ШУ на экструдере | manual | 2h | 2026-07-25 09:00 A | 2026-07-25 11:00 A |  | 100% |  |  |  | start no earlier than 2026-07-25 09:00 | Бобренок В | 2h | 2h |
| 1700 | 3.139.2 | Монтаж розетки, где ворота выхода готовой продукции | manual | 2h | 2026-07-27 09:00 A | 2026-07-27 11:00 A |  | 100% |  |  |  |  | Некрасов А; Труфанов А | 4h | 4h |
| 1701 | 3.140 | **Дражжировка** |  | 0d | 2026-07-26 09:00 A | 2026-07-26 11:00 A |  | 100% |  |  |  |  |  | 2h | 2h |
| 1702 | 3.140.1 | Устранить течь за раковиной. Вода перекрывается на потолке возле главной вентилляции | manual | 2h | 2026-07-26 09:00 A | 2026-07-26 11:00 A |  | 100% |  |  |  | start no earlier than 2026-07-26 09:00 | Бобренок В | 2h | 2h |
| 1703 | 3.141 | обшить стены вент камеры |  | 2d | 2026-05-06 09:00 A | 2026-05-07 18:00 A |  | 100% |  |  |  | start no earlier than 2026-05-06 09:00 | Олег; Некрасов А | 32h | 32h |
| 1704 | 3.142 | убрать металл 100*100 в зону охладителя или корридор |  | 1h | 2026-03-02 09:00 A | 2026-03-02 10:00 A |  | 100% |  |  |  | start no earlier than 2026-03-02 09:00 | Некрасов А; Труфанов А | 2h | 2h |
| 1705 | 4 | **4 склад** |  | 109.75d | 2026-03-13 09:00 A | 2026-07-15 16:00 |  | 100% |  | 2026-07-29 11:00 |  |  |  | 93.25h | 93.25h |
| 1706 | 4.1 | реверс направления кнопок движения вперед-назад ричтрака |  | 2h | 2026-07-14 08:00 A | 2026-07-14 11:00 A |  | 100% |  |  |  | start no earlier than 2026-07-14 08:00 | Дедов В | 2h | 2h |
| 1707 | 4.2 | 2 ветки не работают светильники -разобраться |  | 1h | 2026-07-02 09:00 A | 2026-07-02 10:00 A |  | 100% |  |  |  | start no earlier than 2026-07-02 09:00 | Тимофеев В | 1h | 1h |
| 1708 | 4.3 | Выяснить почему перегорают светильники |  | 2h | 2026-07-29 08:00 A | 2026-07-29 11:00 A |  | 100% |  |  |  | start no earlier than 2026-07-29 08:00 | Дедов В | 2h | 2h |
| 1709 | 4.4 | замена светильников |  | 8h | 2026-04-17 09:00 A | 2026-04-17 18:00 A |  | 100% |  |  |  | start no earlier than 2026-04-17 08:00 | Некрасов А; Труфанов А | 16h | 16h |
| 1710 | 4.5 | сборка рохли 1шт |  | 1h | 2026-03-13 09:00 A | 2026-03-13 10:00 A |  | 100% |  |  |  | start no earlier than 2026-03-13 09:00 | Тимофеев В | 1h | 1h |
| 1711 | 4.6 | ремонт обрамление погрузочной рампы |  | 4h | 2026-05-28 09:00 A | 2026-05-28 13:00 A |  | 100% |  |  |  | start no earlier than 2026-05-28 09:00 | Олег | 4h | 4h |
| 1712 | 4.7 | замена неисправных светильников |  | 1d | 2026-03-14 09:00 A | 2026-03-16 18:00 A |  | 100% |  |  |  | start no earlier than 2026-03-14 09:00 | Некрасов А; Бобренок В | 15h | 15h |
| 1713 | 4.8 | **замена неисправных светильников** |  | 87.75d | 2026-03-16 09:00 A | 2026-07-15 16:00 A |  | 100% |  |  |  |  |  | 52.25h | 52.25h |
| 1714 | 4.8.1 | заявка светильники |  | 15min | 2026-03-16 09:00 A | 2026-03-16 09:15 A |  | 100% |  |  |  | start no earlier than 2026-03-16 09:00 | Шуранов Ю | 0.25h | 0.25h |
| 1715 | 4.8.2 | доставка |  | 5d | 2026-03-16 09:15 A | 2026-03-23 09:15 A | 1714 | 100% |  |  |  | start no earlier than 2026-03-12 08:00 | Карабанов | 40h | 40h |
| 1716 | 4.8.3 | замена |  | 6h | 2026-07-15 09:00 A | 2026-07-15 16:00 A | 1715 | 100% |  |  |  | start no earlier than 2026-07-15 09:00 | Некрасов А; Труфанов А | 12h | 12h |
| 1717 | 5 | **5 цех** |  | 967.25d? | 2023-05-29 09:00 A | 2027-02-02 11:00 |  | 62% | 365.91d? |  | 26.34d |  |  | 1852.75h | 1143.25h |
| 1718 | 5.1 | на 2 этаж раковина Установка смесителей (краны) с гибкой подводкой, получить на складе |  | 1h | 2026-09-21 09:00 A | 2026-09-21 10:00 A |  | 100% |  |  |  | start no earlier than 2026-09-21 09:00 | Некрасов А | 1h | 1h |
| 1719 | 5.2 | ремонт дека от вибросито |  | 3h | 2026-09-12 09:00 A | 2026-09-12 12:00 A |  | 100% |  |  |  | start no earlier than 2026-09-12 09:00 | Макаревич А | 3h | 3h |

| ID | WBS | Task | Type | Duration | Start | Finish | Predecessors | Complete | Remaining | Total slack | Free slack | Constraint | Resources | Work | Actual work |
| --- | --- | --- | --- | --- | --- | --- | --- | --- | --- | --- | --- | --- | --- | --- | --- |
| 1720 | 5.3 | **установить зажим троса на тельфер** |  | 27d? | 2026-09-03 09:00 A | 2026-10-01 18:00 |  | 3% | 26.21d? | 113.59d |  |  |  | 8.5h | 0.25h |
| 1721 | 5.3.1 | заявка |  | 15min | 2026-09-03 09:00 A | 2026-09-03 09:15 A |  | 100% |  |  |  | start no earlier than 2026-09-03 09:00 | Зорькин В | 0.25h | 0.25h |
| 1722 | 5.3.2 | контроль доставки |  | 15min | 2026-09-24 11:00 | 2026-09-24 11:15 | 1011FS+5d |  |  | 119.31d | 5.72d | start no earlier than 2026-09-11 09:00 | Зорькин В | 0.25h |  |
| 1723 | 5.3.3 | монтаж |  | 1d? | 2026-10-01 09:00 | 2026-10-01 18:00 | 1012FS+1d, 1722 |  |  | 113.59d |  | start no earlier than 2026-10-01 09:00 | Тимофеев В | 8h |  |
| 1724 | 5.4 | **ремонт насос водоснабжения** |  | 66.25d | 2026-09-03 09:00 A | 2026-11-26 11:00 A |  | 100% |  |  |  |  |  | 4.5h | 4.5h |
| 1725 | 5.4.1 | перекрутить американку для удобного обслуживания |  | 2h | 2026-11-26 09:00 A | 2026-11-26 11:00 A |  | 100% |  |  |  | start no earlier than 2026-11-26 09:00 | Макаревич А | 2h | 2h |
| 1726 | 5.4.2 | Сказать параметры, шильдик насосной станции передать зорькину |  | 15min | 2026-09-03 09:00 A | 2026-09-03 09:15 A |  | 100% |  |  |  | start no earlier than 2026-09-03 09:00 | Тимофеев В | 0.25h | 0.25h |
| 1727 | 5.4.3 | конртроль поставки |  | 15min | 2026-09-10 09:00 A | 2026-09-10 09:15 A | 1726 | 100% |  |  |  | start no earlier than 2026-09-10 09:00 | Зорькин В | 0.25h | 0.25h |
| 1728 | 5.4.4 | замена |  | 1h | 2026-09-11 09:15 A | 2026-09-11 10:15 A | 1727FS+1d | 100% |  |  |  | start no earlier than 2026-09-11 09:00 | Некрасов А; Макаревич А | 2h | 2h |
| 1729 | 5.5 | воставноить заземление на обоих ситах |  | 2h | 2026-09-04 09:00 A | 2026-09-04 11:00 A |  | 100% |  |  |  | start no earlier than 2026-09-04 09:00 | Бобренок В | 2h | 2h |
| 1730 | 5.6 | востановить контакт пульт тельфера у стены (переменный контакт при движении кабеля у пульта) |  | 1h | 2026-09-03 09:00 A | 2026-09-03 10:00 A |  | 100% |  |  |  | start no earlier than 2026-09-03 08:00 | Бобренок В | 1h | 1h |
| 1731 | 5.7 | подключить Олегу сварочный автомат |  | 1h | 2026-08-31 09:00 A | 2026-08-31 10:00 A |  | 100% |  |  |  | start no earlier than 2026-08-31 09:00 | Тимофеев В | 1h | 1h |
| 1732 | 5.8 | **подготовить сетку на мал дробилку 3 и 4мм** |  | 13.12d | 2026-09-12 09:00 A | 2026-09-25 10:00 |  | 33% | 8.75d | 119.47d |  |  |  | 1.5h | 0.5h |
| 1733 | 5.8.1 | проверка отстатков сетки на складах |  | 30min | 2026-09-12 09:00 A | 2026-09-12 09:30 A |  | 100% |  |  |  | start no earlier than 2026-09-12 09:00 | Макаревич А | 0.5h | 0.5h |
| 1734 | 5.8.2 | вырезатиь сетку в размер |  | 1h | 2026-09-25 09:00 | 2026-09-25 10:00 | 1733FS+1d |  |  | 119.47d |  | start no earlier than 2026-09-25 09:00 | Тимофеев В | 1h |  |
| 1735 | 5.9 | ревизия шнека |  | 3h | 2026-08-17 09:00 A | 2026-08-17 12:00 A |  | 100% |  |  |  | start no earlier than 2026-08-17 09:00 | Бобренок В; Некрасов А | 6h | 6h |
| 1736 | 5.10 | **свет в туалет передать крепление светильника** |  | 1.12d | 2026-08-14 09:00 A | 2026-08-17 10:00 A |  | 100% |  |  |  |  |  | 2.25h | 2.25h |
| 1737 | 5.10.1 | проверить наличие светильника с боковым монтажем |  | 15min | 2026-08-14 09:00 A | 2026-08-14 09:15 A |  | 100% |  |  |  | start no earlier than 2026-08-14 09:00 | Домоводов К | 0.25h | 0.25h |
| 1738 | 5.10.2 | замена светильника / или закрепить |  | 1h | 2026-08-17 09:00 A | 2026-08-17 10:00 A | 1737 | 100% |  |  |  | start no earlier than 2026-08-15 09:00 | Бундин В | 1h | 1h |
| 1739 | 5.10.3 | закрепить светильник в коридоре -вход в туалет |  | 1h | 2026-08-17 09:00 A | 2026-08-17 10:00 A |  | 100% |  |  |  | start no earlier than 2026-08-17 09:00 | Бундин В | 1h | 1h |
| 1740 | 5.11 | трещина вибросито №2 1см ремонт |  | 6h | 2026-08-27 09:00 A | 2026-08-27 16:00 A |  | 100% |  |  |  | start no earlier than 2026-08-27 09:00 | Макаревич А | 6h | 6h |
| 1741 | 5.12 | трещина вибросито №1 кольцо. ремонт |  | 4h | 2026-08-28 09:00 A | 2026-08-28 13:00 A |  | 100% |  |  |  | start no earlier than 2026-08-28 09:00 | Макаревич А | 4h | 4h |
| 1742 | 5.13 | **проект новая дробилка** |  | 40.03d | 2026-08-21 09:00 A | 2026-10-08 09:15 |  | 17% | 33.37d | 109.56d |  |  |  | 144.25h | 24h |
| 1743 | 5.13.1 | **кабель для доп мощности** |  | 40.03d | 2026-08-21 09:00 A | 2026-10-08 09:15 |  | 17% | 33.37d | 109.56d |  |  |  | 144.25h | 24h |
| 1744 | 5.13.1.1 | составить ТЗ на монтаж кабеля |  | 3d | 2026-08-21 09:00 A | 2026-08-25 18:00 A |  | 100% |  |  |  | start no earlier than 2026-08-21 09:00 | Домоводов К | 24h | 24h |
| 1745 | 5.13.1.2 | получить КП / счет договор | milestone | 0d | 2026-09-09 09:00 | 2026-09-09 09:00 | 1744FS+2d |  |  | 109.56d | 0d | start no earlier than 2026-09-09 09:00 | Домоводов К |  |  |
| 1746 | 5.13.1.3 | предоплата |  | 15min | 2026-09-10 09:00 | 2026-09-10 09:15 | 1745FS+1d |  |  | 109.56d | 0d | start no earlier than 2026-08-10 08:00 | Домоводов К | 0.25h |  |
| 1747 | 5.13.1.4 | монтаж |  | 15d | 2026-09-20 09:15 | 2026-10-08 09:15 | 1746FS+10d |  |  | 109.56d |  | start no earlier than 2026-08-10 08:00 | Подрядчик | 120h |  |

| ID | WBS | Task | Type | Duration | Start | Finish | Predecessors | Complete | Remaining | Total slack | Free slack | Constraint | Resources | Work | Actual work |
| --- | --- | --- | --- | --- | --- | --- | --- | --- | --- | --- | --- | --- | --- | --- | --- |
| 1748 | 5.14 | **монтаж вода в 5ц** |  | 36.75d | 2026-08-10 08:00 A | 2026-09-22 16:00 |  | 80% | 7.18d | 121.84d |  |  |  | 128.08h | 106h |
| 1749 | 5.14.1 | Подключение греющего кабеля |  | 3h | 2026-09-16 09:00 A | 2026-09-16 12:00 A |  | 100% |  |  |  | start no earlier than 2026-09-16 09:00 | Некрасов А; Труфанов А | 6h | 6h |
| 1750 | 5.14.2 | подклюючить воду на прямую |  | 2h | 2026-09-14 09:00 A | 2026-09-14 11:00 A |  | 100% |  |  |  | start no earlier than 2026-09-15 09:00 | Тимофеев В | 2h | 2h |
| 1751 | 5.14.3 | Все доделать/подключить |  | 6h | 2026-09-18 09:00 A | 2026-09-18 16:00 A |  | 100% |  |  |  | start no earlier than 2026-09-18 09:00 | Труфанов А; Некрасов А | 12h | 12h |
| 1752 | 5.14.4 | установить в конце линии расширительный бак / защита от гидроудара |  | 2h | 2026-09-21 09:00 A | 2026-09-21 11:00 A |  | 100% |  |  |  | start no earlier than 2026-09-21 09:00 | Труфанов А; Некрасов А | 4h | 4h |
| 1753 | 5.14.5 | Установка точек воды для пожврного гидранта и набора воды для поломоечной машинки цех 3,4,5а и 5 |  | 6h | 2026-09-22 09:00 A | 2026-09-22 16:00 A |  | 100% |  |  |  | start no earlier than 2026-09-22 09:00 | Труфанов А; Некрасов А | 12h | 12h |
| 1754 | 5.14.6 | переключение линии "без бачка" |  | 2h | 2026-09-22 09:00 A | 2026-09-22 11:00 A | 1752 | 100% |  |  |  | start no earlier than 2026-09-22 09:00 | Труфанов А; Некрасов А | 4h | 4h |
| 1755 | 5.14.7 | тестирование системы |  | 2h | 2026-09-21 09:00 A | 2026-09-21 11:00 A | 1754 | 100% |  |  |  | start no earlier than 2026-09-18 08:00 | Труфанов А; Некрасов А | 4h | 4h |
| 1756 | 5.14.8 | выяснить возможность обмена тройников 1+1/4-1/2 на 3/4-1/2 |  | 15min | 2026-09-21 09:00 A | 2026-09-21 09:15 A |  | 100% |  |  |  | start no earlier than 2026-09-21 09:00 | Зорькин В | 0.25h | 0.25h |
| 1757 | 5.14.9 | Прокнуть греющий кабель | manual | 3h | 2026-09-16 09:00 A | 2026-09-16 12:00 A |  | 100% |  |  |  |  | Некрасов А; Труфанов А | 6h | 6h |
| 1758 | 5.14.10 | **монтаж трассы по 3ц** |  | 4.5d | 2026-08-11 09:00 A | 2026-08-17 13:00 A |  | 100% |  |  |  |  |  | 16.5h | 16.5h |
| 1759 | 5.14.10.1 | заявка хомуты сантех - получить дату поставки |  | 15min | 2026-08-11 09:00 A | 2026-08-11 09:15 A |  | 100% |  |  |  | start no earlier than 2026-08-11 09:00 | Домоводов К | 0.25h | 0.25h |
| 1760 | 5.14.10.2 | контроль доставки |  | 15min | 2026-08-14 09:15 A | 2026-08-14 09:30 A | 1759FS+3d | 100% |  |  |  | start no earlier than 2026-08-10 08:00 | Зорькин В | 0.25h | 0.25h |
| 1761 | 5.14.10.3 | монтаж продложть |  | 4h | 2026-08-14 09:30 A | 2026-08-14 14:30 A | 1760 | 100% |  |  |  | start no earlier than 2026-08-10 08:00 | Некрасов А; Бундин В | 8h | 8h |
| 1762 | 5.14.10.4 | монтаж продложть |  | 4h | 2026-08-17 09:00 A | 2026-08-17 13:00 A | 1760 | 100% |  |  |  | start no earlier than 2026-08-17 09:00 | Некрасов А; Бобренок В | 8h | 8h |
| 1763 | 5.14.11 | **монтаж труба в земле между 3 и 4ц** |  | 30.75d | 2026-08-10 08:00 A | 2026-09-16 16:00 |  | 66% | 10.39d | 127.84d |  |  |  | 19.08h | 15h |
| 1764 | 5.14.11.1 | монтаж ф32 в ф40 |  | 4h | 2026-08-10 08:00 A | 2026-08-10 13:00 A |  | 100% |  |  |  | start no earlier than 2026-08-10 08:00 | Некрасов А; Макаревич А | 8h | 8h |
| 1765 | 5.14.11.2 | заявка греющий кабель внтуреннего монтажа + |  | 1h | 2026-08-11 09:00 A | 2026-08-11 10:00 A | 1764 | 100% |  |  |  | start no earlier than 2026-08-11 09:00 | Домоводов К | 1h | 1h |
| 1766 | 5.14.11.3 | заявка защита УЗО |  | 1h | 2026-08-24 09:00 | 2026-08-24 10:00 |  |  |  | 148.46d | 4.88d | start no earlier than 2026-08-24 09:00 | Зорькин В | 1h |  |
| 1767 | 5.14.11.4 | контоль доставка |  | 5min | 2026-08-31 09:00 | 2026-08-31 09:05 | 1765FS+5d, 1766 |  |  | 143.58d |  | start no earlier than 2026-08-31 09:00 | Зорькин В | 0.08h |  |
| 1768 | 5.14.11.5 | монтаж кабеля |  | 3h | 2026-09-16 12:00 A | 2026-09-16 16:00 A | 1767FS+1d, 1749 | 100% |  |  |  | start no earlier than 2026-09-16 09:00 | Некрасов А; Макаревич А | 6h | 6h |
| 1769 | 5.14.11.6 | монтаж щиток кабеля с УЗО |  | 3h | 2026-09-14 09:00 | 2026-09-14 12:00 |  |  |  | 130.22d |  | start no earlier than 2026-09-14 09:00 | Дедов В | 3h |  |
| 1770 | 5.14.12 | **монтаж трассы по воздуху м/д 4 и 5А** |  | 9.5d | 2026-08-11 09:00 A | 2026-08-24 13:00 |  | 24% | 7.24d | 148.09d |  |  |  | 9.25h | 1.25h |
| 1771 | 5.14.12.1 | подготовка материал |  | 1h | 2026-08-11 09:00 A | 2026-08-11 10:00 A |  | 100% |  |  |  | start no earlier than 2026-08-11 09:00 | Некрасов А; Макаревич А | 1h | 1h |
| 1772 | 5.14.12.2 | контроль поставки рым 10 |  | 15min | 2026-08-21 09:00 A | 2026-08-21 09:15 A |  | 100% |  |  |  | start no earlier than 2026-08-21 09:00 | Зорькин В | 0.25h | 0.25h |
| 1773 | 5.14.12.3 | монтаж |  | 4h | 2026-08-24 09:00 | 2026-08-24 13:00 | 1772 |  |  | 148.09d |  | start no earlier than 2026-08-24 09:00 | Некрасов А; Тимофеев В | 8h |  |
| 1774 | 5.14.13 | монтаж щиток греющего кабеля по воздуху |  | 4h | 2026-09-16 09:00 A | 2026-09-16 13:00 A |  | 100% |  |  |  | start no earlier than 2026-09-16 09:00 | Труфанов А | 4h | 4h |
| 1775 | 5.14.14 | монтаж трассы по 4ц |  | 6h | 2026-08-18 09:00 A | 2026-08-18 16:00 A | 1760 | 100% |  |  |  | start no earlier than 2026-08-18 09:00 | Некрасов А; Макаревич А | 11h | 11h |
| 1776 | 5.14.15 | монтаж трассы по 5ц |  | 4h | 2026-08-19 09:00 A | 2026-08-19 13:00 A | 1775 | 100% |  |  |  | start no earlier than 2026-08-19 09:00 | Некрасов А; Макаревич А | 8h | 8h |
| 1777 | 5.14.16 | монтаж трассы по 5ц |  | 6h | 2026-08-24 09:00 | 2026-08-24 16:00 | 1775 |  |  | 147.84d |  | start no earlier than 2026-08-24 09:00 | Некрасов А; Макаревич А | 10h |  |

| ID | WBS | Task | Type | Duration | Start | Finish | Predecessors | Complete | Remaining | Actual finish | Total slack | Constraint | Resources | Work | Actual work |
| --- | --- | --- | --- | --- | --- | --- | --- | --- | --- | --- | --- | --- | --- | --- | --- |
| 1778 | 5.15 | **монтаж тепловые пушки подвесные 5 цех** |  | 34d | 2026-08-21 09:00 A | 2026-09-29 18:00 |  | 36% | 21.76d |  | 115.59d |  |  | 41h | 9h |
| 1779 | 5.15.1 | составить схему монтажа |  | 4h | 2026-08-26 09:00 A | 2026-08-26 13:00 A |  | 100% |  |  |  | start no earlier than 2026-08-26 09:00 | Зорькин В | 4h | 4h |
| 1780 | 5.15.2 | заявка на тепловые пушки вулкан |  | 2h | 2026-08-21 09:00 A | 2026-08-21 11:00 A |  | 100% |  |  |  | start no earlier than 2026-08-21 09:00 | Зорькин В | 2h | 2h |
| 1781 | 5.15.3 | контроль остатки нерж труба, фтинги |  | 2h | 2026-09-07 09:00 A | 2026-09-07 11:00 A | 1780 | 100% |  |  |  | start no earlier than 2026-09-07 09:00 | Зорькин В | 2h | 2h |
| 1782 | 5.15.4 | контроль доставки |  | 1h | 2026-09-21 09:00 A | 2026-09-21 10:00 A | 1781FS+7d | 100% |  |  |  | start no earlier than 2026-09-21 09:00 | Зорькин В | 1h | 1h |
| 1783 | 5.15.5 | монтаж |  | 2d | 2026-09-28 09:00 | 2026-09-29 18:00 | 1782FS+1d |  |  |  | 115.59d | start no earlier than 2026-09-28 09:00 | Некрасов А; Труфанов А | 32h |  |
| 1784 | 5.16 | замена светильника перегоревшего у Большакова в кабинете |  | 2h | 2026-08-06 09:00 A | 2026-08-06 11:00 A |  | 100% |  |  |  | start no earlier than 2026-08-07 09:00 | Труфанов А | 2h | 2h |
| 1785 | 5.17 | устранить утечку воды в душе |  | 1h | 2026-08-06 09:00 A | 2026-08-06 10:00 A |  | 100% |  |  |  | start no earlier than 2026-08-06 08:00 | Бундин В | 1h | 1h |
| 1786 | 5.18 | **установить унитаз на 3 этаже** |  | 3.38d? | 2026-08-04 09:00 A | 2026-08-07 12:00 A |  | 100% |  |  |  |  | Бобренок В | 38h | 38h |
| 1787 | 5.18.1 | заказать гофру и гибкую вставку |  | 1d? | 2026-08-04 09:00 A | 2026-08-04 18:00 A |  | 100% |  |  |  | start no earlier than 2026-08-04 08:00 | Шуранов Ю | 8h | 8h |
| 1788 | 5.18.2 | установка унитаза (гофротруба и гибкая подводка и коронка у Большакова) коронку вернуть Большакову |  | 3h | 2026-08-07 09:00 A | 2026-08-07 12:00 A |  | 100% |  |  |  | start no earlier than 2026-08-07 09:00 | Труфанов А | 3h | 3h |
| 1789 | 5.19 | монтаж свет в туалете 3 этаж (оператора дадут в помощь) | manual | 6h | 2026-08-09 09:00 A | 2026-08-09 16:00 A |  | 100% |  |  |  | start no earlier than 2026-08-09 09:00 | Бобренок В | 6h | 6h |
| 1790 | 5.20 | прикрутить смотровые окна на дробилке, не хватает саморезов- просыпается сырье |  | 1h | 2026-08-02 09:00 A | 2026-08-03 10:00 A |  | 100% |  |  |  | start no earlier than 2026-08-02 09:00 | Макаревич А | 1h | 1h |
| 1791 | 5.21 | сборка ограничиетелей на сетку №2 для сито из лазера |  | 4h | 2026-07-17 09:00 A | 2026-07-17 13:00 A |  | 100% |  |  |  | start no earlier than 2026-07-17 09:00 | Макаревич А | 4h | 4h |
| 1792 | 5.22 | ремонт сетки, хомуты с 5ц |  | 2h | 2026-07-15 09:00 A | 2026-07-15 11:00 A |  | 100% |  |  |  | start no earlier than 2026-07-15 09:00 | Бундин В | 2h | 2h |
| 1793 | 5.23 | вырезать сетку 2мм на большую дробилку |  | 2h | 2026-07-15 09:00 A | 2026-07-15 11:00 A |  | 100% |  |  |  | start no earlier than 2026-07-15 09:00 | Бобренок В | 2h | 2h |
| 1794 | 5.24 | заменаить ножи на мал дробилке |  | 6h | 2026-07-06 08:00 A | 2026-07-06 16:00 A |  | 100% |  |  |  | start no earlier than 2026-07-06 08:00 | Дедов В | 6h | 6h |
| 1795 | 5.25 | заварить хомут от деко 5 ц. в слесарке |  | 2h | 2026-07-11 09:00 A | 2026-07-13 11:00 A |  | 100% |  |  |  | start no earlier than 2026-07-11 09:00 | Макаревич А | 2h | 2h |
| 1796 | 5.26 | Дефектовка кнопок растаривателя, ремонт, клинит кнопку |  | 30min | 2026-07-06 08:00 A | 2026-07-06 09:30 A |  | 100% |  |  |  | start no earlier than 2026-07-06 08:00 | Дедов В | 0.5h | 0.5h |
| 1797 | 5.27 | сито просечка с лазера - доплнить 4шт до 6-8 уголоков ограничителей. |  | 2h | 2026-06-26 08:00 A | 2026-06-26 11:00 A |  | 100% |  |  |  | start no earlier than 2026-06-26 08:00 | Макаревич А | 2h | 2h |
| 1798 | 5.28 | просечки нерж. наварить уголки, чтобы не падало внутрь |  | 2h | 2026-06-25 08:00 A | 2026-06-25 11:00 A |  | 100% |  |  |  | start no earlier than 2026-06-25 08:00 | Макаревич А | 2h | 2h |
| 1799 | 5.29 | на поворотную кнопку реверса шнека №1 установить бокс (взять на складе) |  | 1h | 2026-06-24 09:00 A | 2026-06-24 10:00 A |  | 100% |  |  |  | start no earlier than 2026-06-24 09:00 | Труфанов А | 1h | 1h |
| 1800 | 5.30 | развернуть ножи на большой дробилке, если не успеваем передаем по смене |  | 3h | 2026-06-23 08:00 A | 2026-06-23 12:00 A |  | 100% |  |  |  | start no earlier than 2026-06-23 08:00 | Труфанов А; Макаревич А | 6h | 6h |
| 1801 | 5.31 | **протянуть все болтовые соединения: шиберы растаривателей, металлоконструкции под бункера и т.д. если нет болта - прикручиваем** |  | 3h? | 2026-06-23 09:00 A | 2026-06-23 12:00 |  | 100% |  | 2026-06-23 18:00 |  |  | Труфанов А | 11h | 11h |
| 1802 | 5.31.1 | заказать краску |  | 1d? | 2026-06-23 09:00 A | 2026-06-23 18:00 A |  | 100% |  |  |  | start no earlier than 2026-06-23 08:00 | Шуранов Ю | 8h | 8h |
| 1803 | 5.32 | проверить откуда гайку нашли на магните, растариватель-дробилка -шнеки -крепление магнитов |  | 1h | 2026-06-22 09:00 A | 2026-06-22 10:00 A |  | 100% |  |  |  | start no earlier than 2026-06-22 08:00 | Бундин В | 1h | 1h |

| ID | WBS | Task | Duration | Start | Finish | Predecessors | Complete | Remaining | Total slack | Free slack | Constraint | Resources | Work | Actual work |
| --- | --- | --- | --- | --- | --- | --- | --- | --- | --- | --- | --- | --- | --- | --- |
| 1804 | 5.33 | **закрепить штурвал на растаривателе 1** | 1d? | 2026-06-23 09:00 A | 2026-06-23 18:00 A |  | 100% |  |  |  |  | Бундин В | 16h | 16h |
| 1805 | 5.33.1 | заказываем растариватель | 1d? | 2026-06-23 09:00 A | 2026-06-23 18:00 A |  | 100% |  |  |  | start no earlier than 2026-06-23 09:00 | Шуранов Ю | 8h | 8h |
| 1806 | 5.34 | заварить просеиватель ближе к стеллажам и на правом (расскажу как) | 3h | 2026-06-11 09:00 A | 2026-06-11 12:00 A |  | 100% |  |  |  | start no earlier than 2026-06-11 09:00 | Бундин В | 3h | 3h |
| 1807 | 5.35 | ремонт просечку с вибросито, передать в 5ц | 2h | 2026-06-12 09:00 A | 2026-06-12 11:00 A |  | 100% |  |  |  | start no earlier than 2026-06-12 09:00 | Бундин В | 2h | 2h |
| 1808 | 5.36 | ремонт хомут с вибросито | 2h | 2026-06-05 09:00 A | 2026-06-05 11:00 A |  | 100% |  |  |  | start no earlier than 2026-06-05 08:00 | Бундин В | 2h | 2h |
| 1809 | 5.37 | заварить хомут от деко 5 ц. в слесарке | 2h | 2026-07-14 09:00 A | 2026-07-14 11:00 A |  | 100% |  |  |  | start no earlier than 2026-07-14 09:00 | Бундин В | 2h | 2h |
| 1810 | 5.38 | **востановить коробку тельфера** | 179.25d | 2026-06-04 09:00 A | 2027-02-02 11:00 |  | 59% | 73.46d | 26.34d |  |  |  | 5.08h | 3h |
| 1811 | 5.38.1 | найти производителя тельфера и выяснить марку коробку / найти в продаже подходящий артикул | 2h | 2026-06-04 09:00 A | 2026-06-04 11:00 A |  | 100% |  |  |  | start no earlier than 2026-06-04 09:00 | Шуранов Ю | 2h | 2h |
| 1812 | 5.38.2 | заявка | 1h | 2026-06-05 09:00 A | 2026-06-05 10:00 A |  | 100% |  |  |  | start no earlier than 2026-06-05 09:00 | Шуранов Ю | 1h | 1h |
| 1813 | 5.38.3 | доставка контроль | 5min | 2026-09-18 09:00 | 2026-09-18 09:05 |  |  |  | 126.33d | 99.99d | start no earlier than 2026-09-18 09:00 | Домоводов К | 0.08h |  |
| 1814 | 5.38.4 | замена | 2h | 2027-02-02 09:00 | 2027-02-02 11:00 | 1813 |  |  | 26.34d |  | start no earlier than 2027-02-02 09:00 | Некрасов А | 2h |  |
| 1815 | 5.39 | замена пускатель тельфер 24дц / найти/изготовить + установить крышку контакторов / доработать крепеж кабеля к тросу | 1h | 2026-05-27 09:00 A | 2026-05-27 10:00 A |  | 100% |  |  |  | start no earlier than 2026-05-27 09:00 | Некрасов А; Бундин В | 2h | 2h |
| 1816 | 5.40 | проверка всех банок АКБ штабелера / замена неисправных | 2h | 2026-05-30 09:00 A | 2026-06-01 11:00 A |  | 100% |  |  |  | start no earlier than 2026-05-30 09:00 | Бобренок В | 2h | 2h |
| 1817 | 5.41 | посмотреть что с тельфером на дробилке | 1h | 2026-05-26 09:00 A | 2026-05-26 10:00 A |  | 100% |  |  |  | start no earlier than 2026-05-26 09:00 | Некрасов А | 1h | 1h |
| 1818 | 5.42 | приварить магниты на сито | 0.5h | 2026-05-26 09:00 A | 2026-05-26 09:30 A |  | 100% |  |  |  | start no earlier than 2026-05-26 09:00 | Некрасов А | 0.5h | 0.5h |
| 1819 | 5.43 | заварить растариватель №2 | 4h | 2026-05-25 08:00 A | 2026-05-25 13:00 A |  | 100% |  |  |  | start no earlier than 2026-05-25 08:00 | Тимофеев В; Некрасов А | 7h | 7h |
| 1820 | 5.44 | уложить красиво кабель в гофре зона дробилки | 1h | 2026-05-19 09:00 A | 2026-05-19 10:00 A |  | 100% |  |  |  | start no earlier than 2026-05-19 09:00 | Бундин В; Некрасов А | 2h | 2h |
| 1821 | 5.45 | заварить 2 просечки от сито и отправить все на 5 цех | 1h | 2026-05-19 09:00 A | 2026-05-19 10:00 A |  | 100% |  |  |  | start no earlier than 2026-05-19 09:00 | Бундин В | 1h | 1h |
| 1822 | 5.46 | сделать дублирующий пост (вкл. И выкл. Смесителя) на мезонине дробилки | 4h | 2026-05-18 08:00 A | 2026-05-18 13:00 A |  | 100% |  |  |  | start no earlier than 2026-05-18 08:00 | Дедов В | 4h | 4h |
| 1823 | 5.47 | прошприцевать сам двигатель дробилки | 1h | 2026-05-19 09:00 A | 2026-05-19 10:00 A |  | 100% |  |  |  | start no earlier than 2026-05-19 09:00 | Некрасов А; Бундин В | 2h | 2h |
| 1824 | 5.48 | **сборка схемы блокировки дробилки при открытом люке** | 7.25d? | 2026-05-17 09:00 A | 2026-05-27 11:00 A |  | 100% |  |  |  |  |  | 17h | 17h |
| 1825 | 5.48.1 | монтаж кабель | 4h | 2026-05-17 09:00 A | 2026-05-18 13:00 A |  | 100% |  |  |  | start no earlier than 2026-05-17 09:00 | Макаревич А | 4h | 4h |
| 1826 | 5.48.2 | сборка схема | 2h | 2026-05-27 09:00 A | 2026-05-27 11:00 A | 1825 | 100% |  |  |  | start no earlier than 2026-05-27 09:00 | Дедов В | 2h | 2h |
| 1827 | 5.48.3 | заказать концевики | 1d? | 2026-05-25 09:00 A | 2026-05-25 18:00 A |  | 100% |  |  |  | start no earlier than 2026-05-25 08:00 | Шуранов Ю | 8h | 8h |
| 1828 | 5.48.4 | доделать схему блокировки- концевики LA167-Z8/122 на складе | 3h | 2026-05-26 09:00 A | 2026-05-26 12:00 A |  | 100% |  |  |  | start no earlier than 2026-05-26 09:00 | Дедов В | 3h | 3h |
| 1829 | 5.49 | проверка центровки мотора после замены подшипнка + замена подшипник задний | 4h | 2026-05-12 08:00 A | 2026-05-12 13:00 A |  | 100% |  |  |  | start no earlier than 2026-05-12 08:00 | Тимофеев В; Бобренок В | 8h | 8h |
| 1830 | 5.50 | заварить сито | 2h | 2026-05-08 08:00 A | 2026-05-08 11:00 A |  | 100% |  |  |  | start no earlier than 2026-05-08 08:00 | Макаревич А | 2h | 2h |
| 1831 | 5.51 | закрепить штурвал, чтобы не болтался на растаривателе 1 | 1h | 2026-05-08 08:00 A | 2026-05-08 10:00 A |  | 100% |  |  |  | start no earlier than 2026-05-08 08:00 | Макаревич А | 1h | 1h |
| 1832 | 5.52 | посмотреть компрессор (если проблема в предохранителе- то взять у меня на столе)пароль8989 | 1h | 2026-05-08 08:00 A | 2026-05-08 10:00 A |  | 100% |  |  |  | start no earlier than 2026-05-08 08:00 | Дедов В | 1h | 1h |
| 1833 | 5.53 | проверить на 2х котлах давление в системе отопления- где нужно долить воды. И слить воду система отопления 5а цех | 2h | 2026-05-06 08:00 A | 2026-05-06 11:00 A |  | 100% |  |  |  | start no earlier than 2026-05-06 08:00 | Бобренок В | 2h | 2h |

| ID | WBS | Task | Type | Duration | Start | Finish | Predecessors | Complete | Actual start | Actual finish | Total slack | Constraint | Resources | Work | Actual work |
| --- | --- | --- | --- | --- | --- | --- | --- | --- | --- | --- | --- | --- | --- | --- | --- |
| 1834 | 5.54 | **ремонт сито (попробовать заклеить эпоксидкой) / ремонт у производсителя** |  | 13d | 2026-05-13 09:00 A | 2026-05-29 18:00 A |  | 100% |  |  |  |  |  | 0.75h | 0.75h |
| 1835 | 5.54.1 | отправить сито на ремонт производителю |  | 30min | 2026-05-13 09:00 A | 2026-05-13 09:30 A |  | 100% |  |  |  | start no earlier than 2026-05-13 09:00 | Шуранов Ю | 0.5h | 0.5h |
| 1836 | 5.54.2 | контроль доставки |  | 15min | 2026-05-29 17:45 A | 2026-05-29 18:00 A | 1835SF+15d | 100% |  |  |  | start no earlier than 2026-05-12 08:00 | Шуранов Ю | 0.25h | 0.25h |
| 1837 | 5.55 | зачистить приемный бункер после дробилке болгаркой |  | 1h | 2026-04-30 08:00 A | 2026-04-30 10:00 A |  | 100% |  |  |  | start no earlier than 2026-04-30 08:00 | Дедов В | 1h | 1h |
| 1838 | 5.56 | **ремонт стиральной машинки / шум подшипника** |  | 1d? | 2026-04-27 09:00 | 2026-04-27 18:00 |  |  |  |  | 232.59d |  |  | 8h |  |
| 1839 | 5.56.1 | договор |  | 1d? | 2026-04-27 09:00 | 2026-04-27 18:00 |  |  |  |  | 232.59d | start no earlier than 2026-04-27 08:00 | Шуранов Ю | 8h |  |
| 1840 | 5.57 | **ремонт утечки с системы отопления** |  | 1.12d | 2026-05-04 09:00 | 2026-05-05 10:00 |  | 100% | 2026-05-07 09:00 | 2026-05-08 10:00 |  |  |  | 10h | 10h |
| 1841 | 5.57.1 | слив воды |  | 4h | 2026-05-07 09:00 A | 2026-05-07 13:00 A |  | 100% |  |  |  | start no earlier than 2026-05-07 09:00 | Макаревич А | 4h | 4h |
| 1842 | 5.57.2 | ремонт утечки |  | 2h | 2026-05-07 13:00 A | 2026-05-07 16:00 A | 1841 | 100% |  |  |  | start no earlier than 2026-04-27 08:00 | Макаревич А | 2h | 2h |
| 1843 | 5.57.3 | заправить воду / опресовать |  | 4h | 2026-05-07 15:00 A | 2026-05-08 10:00 A | 1842 | 100% |  |  |  | start no earlier than 2026-04-27 08:00 | Макаревич А | 4h | 4h |
| 1844 | 5.58 | долить в систему отопления воды цех 5а, электрокотел не включаем. Работаем на газ котле |  | 1h | 2026-04-24 09:00 A | 2026-04-24 10:00 A |  | 100% |  |  |  | start no earlier than 2026-04-24 08:00 | Бундин В | 1h | 1h |
| 1845 | 5.59 | вывезти шнек на синий склад |  | 1h | 2026-04-23 09:00 A | 2026-04-23 10:00 A |  | 100% |  |  |  | start no earlier than 2026-04-24 09:00 | Бобренок В; Тимофеев В | 2h | 2h |
| 1846 | 5.60 | взять на зажима для троса на складе и натянуть трос на воротах 5а |  | 2h | 2026-04-25 09:00 A | 2026-04-27 11:00 A |  | 100% |  |  |  | start no earlier than 2026-04-25 09:00 | Макаревич А | 2h | 2h |
| 1847 | 5.61 | убавить температуры на газ котлах |  | 1h | 2026-04-24 09:00 A | 2026-04-24 10:00 A |  | 100% |  |  |  | start no earlier than 2026-04-24 09:00 | Шуранов Ю | 1h | 1h |
| 1848 | 5.62 | заварить сито и хомуты |  | 1h | 2026-04-24 09:00 A | 2026-04-24 10:00 A |  | 100% |  |  |  | start no earlier than 2026-04-24 09:00 | Тимофеев В | 1h | 1h |
| 1849 | 5.63 | проверка вибросит детальный осмотр с полной разборкой / ремонт трещин |  | 4h | 2026-04-21 09:00 A | 2026-04-21 13:00 A |  | 100% |  |  |  | start no earlier than 2026-04-21 09:00 | Бундин В | 4h | 4h |
| 1850 | 5.64 | протяжка анкеров стеллажей, болтается |  | 2h | 2026-04-20 09:00 A | 2026-04-20 11:00 A |  | 100% |  |  |  | start no earlier than 2026-04-20 09:00 | Макаревич А | 2h | 2h |
| 1851 | 5.65 | замена потускневших ламп в инсекютере. Мастеру сообщить кол-во. б/у складывать в коробку |  | 2h | 2026-05-06 09:00 A | 2026-05-06 11:00 A |  | 100% |  |  |  | start no earlier than 2026-05-06 09:00 | Бобренок В | 2h | 2h |
| 1852 | 5.66 | переворачиваем молотки дробилка |  | 4h | 2026-04-15 09:00 A | 2026-04-15 13:00 A |  | 100% |  |  |  | start no earlier than 2026-04-17 08:00 | Макаревич А; Тимофеев В | 8h | 8h |
| 1853 | 5.67 | завершить работы по примыканию к кровли 5А (излишки изоспан) |  | 1d? | 2026-06-19 09:00 | 2026-06-19 18:00 |  |  |  |  | 193.59d | start no earlier than 2026-06-19 09:00 | Олег | 8h |  |
| 1854 | 5.68 | монтаж тамбур для завоза навесок |  | 10d | 2026-04-16 09:00 | 2026-04-29 18:00 |  |  |  |  | 230.59d | start no earlier than 2026-04-16 08:00 | Некрасов А; Олег | 160h |  |
| 1855 | 5.69 | вырезать верхушку еврокуба возле мусорки, будет туда засыпать отсев для дворника | manual | 1h | 2026-04-18 09:00 A | 2026-04-18 10:00 A |  | 100% |  |  |  | start no earlier than 2026-04-18 09:00 | Макаревич А | 1h | 1h |
| 1856 | 5.70 | заварить хомуты и сетки от сито |  | 1h | 2026-04-14 09:00 A | 2026-04-14 10:00 A |  | 100% |  |  |  | start no earlier than 2026-04-14 08:00 | Труфанов А | 1h | 1h |
| 1857 | 5.71 | проверить дист. Воду на штабелере, если нужно долить (фото модели акб) |  | 1h | 2026-04-13 09:00 A | 2026-04-13 10:00 A |  | 100% |  |  |  | start no earlier than 2026-04-13 08:00 | Бундин В | 1h | 1h |
| 1858 | 5.72 | установка шнека отремонтированного обратно на дробилку |  | 6h | 2026-04-21 09:00 A | 2026-04-21 16:00 A |  | 100% |  |  |  | start no earlier than 2026-04-21 09:00 | Некрасов А; Труфанов А | 12h | 12h |
| 1859 | 5.73 | установка бойлера отремонтированного в туалет, а с туалета на 2 этаж, мастер выделит человека в помощь |  | 4h | 2026-04-13 09:00 A | 2026-04-13 13:00 A |  | 100% |  |  |  | start no earlier than 2026-04-13 09:00 | Труфанов А | 4h | 4h |
| 1860 | 5.74 | замена паука на расстаривателе- высокие бэги не могут поднять до конца |  | 1h | 2026-04-10 08:00 A | 2026-04-10 10:00 A |  | 100% |  |  |  | start no earlier than 2026-04-10 08:00 | Тимофеев В | 1h | 1h |

| ID | WBS | Task | Type | Duration | Start | Finish | Predecessors | Complete | Actual start | Actual finish | Constraint | Resources | Work | Actual work |
| --- | --- | --- | --- | --- | --- | --- | --- | --- | --- | --- | --- | --- | --- | --- |
| 1861 | 5.75 | **получить насос Wilo, установить на 1 газовый котел** |  | 0.12d | 2026-04-10 09:00 A | 2026-04-10 10:00 A |  | 100% |  |  |  | Бундин В | 2h | 2h |
| 1862 | 5.75.1 | проверить направление подачи воды, посмотреть по аналогии 2 котла |  | 1h | 2026-04-10 09:00 A | 2026-04-10 10:00 A |  | 100% |  |  | start no earlier than 2026-04-10 09:00 | Тимофеев В | 1h | 1h |
| 1863 | 5.76 | ремот сеток с сито |  | 2h | 2026-04-06 09:00 A | 2026-04-06 11:00 A |  | 100% |  |  | start no earlier than 2026-04-06 08:00 | Труфанов А | 2h | 2h |
| 1864 | 5.77 | на выходах из сито №1 и №2 установить сетки с бортиками |  | 2h | 2026-04-06 09:00 A | 2026-04-06 11:00 A |  | 100% |  |  | start no earlier than 2026-04-06 08:00 | Труфанов А | 2h | 2h |
| 1865 | 5.78 | сыпит сырье с дробилки (вход) |  | 2h | 2026-06-15 09:00 A | 2026-06-15 11:00 A |  | 100% |  |  | start no earlier than 2026-06-13 09:00 | Некрасов А; Труфанов А | 4h | 4h |
| 1866 | 5.79 | востановить ручной штурвал заслонки на растаривателе дробилки |  | 1h | 2026-04-02 08:00 A | 2026-04-02 10:00 A |  | 100% |  |  | start no earlier than 2026-04-02 08:00 | Бобренок В | 1h | 1h |
| 1867 | 5.80 | изготовить штурвал заслонки на растариватель вибросита у стены |  | 2h | 2026-04-13 09:00 A | 2026-04-13 11:00 A |  | 100% |  |  | start no earlier than 2026-04-13 09:00 | Труфанов А | 2h | 2h |
| 1868 | 5.81 | монтаж отбойников | manual | 6h | 2026-04-18 09:00 A | 2026-04-18 16:00 A |  | 100% |  |  | start no earlier than 2026-04-18 09:00 | Бобренок В | 6h | 6h |
| 1869 | 5.82 | **ремонт шкаф управления шнеком 1 растариватель (замена щитка взять на складе)** |  | 13.5d? | 2026-04-21 09:00 | 2026-05-07 13:00 |  | 100% | 2026-04-17 09:00 | 2026-04-29 09:30 |  |  | 91.75h | 91.75h |
| 1870 | 5.82.1 | вывод кнопки управления частотником на ШУ (если нужно замена частотника) с мастером согласовать остановку |  | 5h | 2026-04-20 09:00 A | 2026-04-20 15:00 A |  | 100% |  |  | start no earlier than 2026-04-20 09:00 | Дедов В | 5h | 5h |
| 1871 | 5.82.2 | установить кнопочный пост |  | 2h | 2026-04-21 09:00 A | 2026-04-21 11:00 A |  | 100% |  |  | start no earlier than 2026-04-21 09:00 | Дедов В | 2h | 2h |
| 1872 | 5.82.3 | заявка кнопка SB7 |  | 15min | 2026-04-21 09:00 A | 2026-04-21 09:15 A |  | 100% |  |  | start no earlier than 2026-04-21 09:00 | Зорькин В | 0.25h | 0.25h |
| 1873 | 5.82.4 | доставка |  | 5d | 2026-04-21 09:15 A | 2026-04-28 09:15 A | 1872 | 100% |  |  | start no earlier than 2026-04-20 08:00 | Карабанов | 40h | 40h |
| 1874 | 5.82.5 | замена |  | 1h | 2026-04-27 09:15 A | 2026-04-27 10:15 A | 1873 | 100% |  |  | start no earlier than 2026-04-20 08:00 | Дедов В | 1h | 1h |
| 1875 | 5.82.6 | ремонт корпус |  | 1h | 2026-04-17 09:00 A | 2026-04-17 10:00 A | 1870 | 100% |  |  | start no earlier than 2026-04-09 09:00 | Труфанов А | 1h | 1h |
| 1876 | 5.82.7 | **замена корпус** |  | 6.06d | 2026-04-21 09:00 A | 2026-04-29 09:30 A |  | 100% |  |  |  |  | 42.5h | 42.5h |
| 1877 | 5.82.7.1 | заявка |  | 30min | 2026-04-21 09:00 A | 2026-04-21 09:30 A |  | 100% |  |  | start no earlier than 2026-03-31 08:00 | Зорькин В | 0.5h | 0.5h |
| 1878 | 5.82.7.2 | доставка |  | 5d | 2026-04-21 09:30 A | 2026-04-29 09:30 A | 1877 | 100% |  |  | start no earlier than 2026-03-31 08:00 | Карабанов | 40h | 40h |
| 1879 | 5.82.7.3 | замена |  | 2h | 2026-04-28 09:30 A | 2026-04-28 11:30 A | 1878 | 100% |  |  | start no earlier than 2026-04-14 09:00 | Тимофеев В | 2h | 2h |
| 1880 | 5.83 | получить фланец на складе NMRV040 и установить мотор-редуктор на расстаривателе №1 |  | 2h | 2026-04-28 09:00 A | 2026-04-28 11:00 A |  | 100% |  |  | start no earlier than 2026-04-28 09:00 | Бундин В | 2h | 2h |
| 1881 | 5.84 | убрать красный скотч везде в дробилке, сделать крепление фильтра с малой дробилки на ленточный хомут |  | 3h | 2026-03-27 09:00 A | 2026-03-27 12:00 A |  | 100% |  |  | start no earlier than 2026-03-27 08:00 | Труфанов А | 3h | 3h |
| 1882 | 5.85 | ремонт вибросито |  | 4h | 2026-03-27 08:00 A | 2026-03-27 13:00 A |  | 100% |  |  | start no earlier than 2026-03-27 08:00 | Тимофеев В; Некрасов А | 7h | 7h |
| 1883 | 5.86 | заварить сито возле слесарки (2 шт) и деки 2 шт |  | 3h | 2026-03-26 09:00 A | 2026-03-26 12:00 A |  | 100% |  |  | start no earlier than 2026-03-26 08:00 | Труфанов А | 3h | 3h |
| 1884 | 5.87 | сделать отбойник на входную дверь |  | 1h | 2026-03-28 09:00 A | 2026-03-30 10:00 A |  | 100% |  |  | start no earlier than 2026-03-28 09:00 | Бундин В | 1h | 1h |
| 1885 | 5.88 | сделать трап в курилку |  | 3h | 2026-04-01 09:00 A | 2026-04-01 12:00 A |  | 100% |  |  | start no earlier than 2026-04-01 09:00 | Бундин В | 3h | 3h |
| 1886 | 5.89 | заварить бункер дробилки |  | 2h | 2026-03-24 09:00 A | 2026-03-24 11:00 A |  | 100% |  |  | start no earlier than 2026-03-24 09:00 | Некрасов А; Труфанов А | 4h | 4h |
| 1887 | 5.90 | перенос металл с торца стеллажа напротив ВРУ / на син склад |  | 1h | 2026-03-25 09:00 A | 2026-03-25 10:00 A |  | 100% |  |  | start no earlier than 2026-03-25 09:00 | Бобренок В | 1h | 1h |
| 1888 | 5.91 | пульт управления шибером растариватель правый демонтаж красный скотч / закрепить |  | 1h | 2026-03-22 09:00 A | 2026-03-23 10:00 A |  | 100% |  |  | start no earlier than 2026-03-22 09:00 | Бобренок В | 1h | 1h |
| 1889 | 5.92 | установить корпус на переключатель реверса шнек растаривателя правый / продуть от пыли контакты |  | 30min | 2026-03-22 09:00 A | 2026-03-23 09:30 A |  | 100% |  |  | start no earlier than 2026-03-22 09:00 | Бобренок В | 0.5h | 0.5h |
| 1890 | 5.93 | демонтаж розетки без крышки 2 этаж щиток в фае |  | 30min | 2026-03-25 09:00 A | 2026-03-25 09:30 A |  | 100% |  |  | start no earlier than 2026-03-25 09:00 | Бобренок В | 0.5h | 0.5h |
| 1891 | 5.94 | подлючить розетку для зарядки нового АКБ для штабелера Ц.5А |  | 2h | 2026-03-21 09:00 A | 2026-03-23 11:00 A |  | 100% |  |  | start no earlier than 2026-03-21 09:00 | Дедов В | 2h | 2h |

| ID | WBS | Task | Type | Duration | Start | Finish | Predecessors | Complete | Total slack | Free slack | Constraint | Resources | Work | Actual work |
| --- | --- | --- | --- | --- | --- | --- | --- | --- | --- | --- | --- | --- | --- | --- |
| 1892 | 5.95 | **ремонт шнек с дробилки** |  | 11.75d | 2026-03-17 09:00 A | 2026-04-01 16:00 A |  | 100% |  |  |  |  | 7h | 7h |
| 1893 | 5.95.1 | орг пескоструйка корпус шнека - отправить |  | 1h | 2026-03-17 09:00 A | 2026-03-17 10:00 A |  | 100% |  |  | start no earlier than 2026-03-17 08:00 | Шуранов Ю | 1h | 1h |
| 1894 | 5.95.2 | сборка шнека с ремонта |  | 6h | 2026-04-01 09:00 A | 2026-04-01 16:00 A | 1893 | 100% |  |  | start no earlier than 2026-04-01 09:00 | Некрасов А | 6h | 6h |
| 1895 | 5.96 | установить уплотнения на гофра без красн скотча |  | 4h | 2026-03-20 09:00 A | 2026-03-20 13:00 A |  | 100% |  |  | start no earlier than 2026-03-20 09:00 | Некрасов А; Труфанов А | 8h | 8h |
| 1896 | 5.97 | добавить воду в 4 газ. Котел проверить реальное давление в системе |  | 2h | 2026-03-19 08:00 A | 2026-03-19 11:00 A |  | 100% |  |  | start no earlier than 2026-03-19 08:00 | Бундин В | 2h | 2h |
| 1897 | 5.98 | сменить палярность вращения дробилки / сточило ножи |  | 1h | 2026-03-16 09:00 A | 2026-03-16 10:00 A |  | 100% |  |  | start no earlier than 2026-03-16 09:00 | Труфанов А; Некрасов А | 2h | 2h |
| 1898 | 5.99 | **устанвить ИБП на клапан газ** |  | 0.03d | 2026-03-16 09:00 A | 2026-03-16 09:15 A |  | 100% |  |  |  |  | 0.25h | 0.25h |
| 1899 | 5.99.1 | координация сроков выполнения с газовщиком |  | 15min | 2026-03-16 09:00 A | 2026-03-16 09:15 A |  | 100% |  |  | start no earlier than 2026-03-16 09:00 | Шуранов Ю | 0.25h | 0.25h |
| 1900 | 5.100 | **установить вентилятор с клапаном и фильтром** |  | 11.03d? | 2026-03-18 09:00 | 2026-04-02 09:15 |  |  | 250.56d |  |  |  | 88.25h |  |
| 1901 | 5.100.1 | получить сммету / счет |  | 15min | 2026-03-18 09:00 | 2026-03-18 09:15 |  |  | 250.56d | 0d | start no earlier than 2026-03-18 09:00 | Домоводов К | 0.25h |  |
| 1902 | 5.100.2 | изготовление поставка |  | 10d | 2026-03-18 09:15 | 2026-04-01 09:15 | 1901 |  | 250.56d | 0d | start no earlier than 2026-03-17 08:00 | оплот | 80h |  |
| 1903 | 5.100.3 | монтаж |  | 1d? | 2026-04-01 09:15 | 2026-04-02 09:15 | 1902 |  | 250.56d |  | start no earlier than 2026-03-17 08:00 | оплот | 8h |  |
| 1904 | 5.101 | закрыть отвертстие от демонтированной аспирации фильтротканью. Временно, до изг фильтра |  | 1h | 2026-03-13 08:00 A | 2026-03-13 10:00 A |  | 100% |  |  | start no earlier than 2026-03-13 08:00 | Дедов В | 1h | 1h |
| 1905 | 5.102 | **на отверстие от демонтированной оспирации установить фильтр** |  | 7.01d | 2026-03-20 09:00 A | 2026-03-31 09:05 A |  | 100% |  |  |  |  | 2.08h | 2.08h |
| 1906 | 5.102.1 | получить фильтры |  | 5min | 2026-03-31 09:00 A | 2026-03-31 09:05 A |  | 100% |  |  | start no earlier than 2026-03-31 09:00 | Шуранов Ю | 0.08h | 0.08h |
| 1907 | 5.102.2 | монтаж |  | 1h | 2026-03-20 09:00 A | 2026-03-20 10:00 A | 1906FS+1d | 100% |  |  | start no earlier than 2026-03-20 09:00 | Некрасов А; Труфанов А | 2h | 2h |
| 1908 | 5.103 | **устранить ржавчину шнека после дробилки** |  | 1d? | 2026-03-16 09:00 A | 2026-03-16 18:00 A |  | 100% |  |  |  |  | 16h | 16h |
| 1909 | 5.103.1 | полная разборка / зачистка / сборка |  | 1d? | 2026-03-16 09:00 A | 2026-03-16 18:00 A |  | 100% |  |  | start no earlier than 2026-03-16 09:00 | Труфанов А; Некрасов А | 16h | 16h |
| 1910 | 5.103.2 | согласовать чем можно покрыть шнек внутри | milestone | 0d | 2026-03-16 09:00 A | 2026-03-16 09:00 A |  | 100% |  |  | start no earlier than 2026-03-16 09:00 | Домоводов К |  |  |
| 1911 | 5.104 | заменаить гидро АКБ на насосной станции / замена мебраны и золотника |  | 2h | 2026-03-15 09:00 A | 2026-03-16 11:00 A |  | 100% |  |  | start no earlier than 2026-03-15 09:00 | Бундин В | 2h | 2h |
| 1912 | 5.105 | устарнить выдавливание материала с шнека №1 узел дробилки |  | 4h | 2026-03-13 09:00 A | 2026-03-13 13:00 A |  | 100% |  |  | start no earlier than 2026-03-13 09:00 | Тимофеев В; Бундин В | 8h | 8h |
| 1913 | 5.106 | проверить обр клапан бойлер в гардеробе. Стреляет |  | 30min | 2026-03-13 09:00 A | 2026-03-13 09:30 A |  | 100% |  |  | start no earlier than 2026-03-13 09:00 | Бундин В | 0.5h | 0.5h |
| 1914 | 5.107 | долить дистилят в АКБ штабелер свинцовый |  | 1h | 2026-03-11 09:00 A | 2026-03-11 10:00 A |  | 100% |  |  | start no earlier than 2026-03-11 09:00 | Макаревич А | 1h | 1h |
| 1915 | 5.108 | **замена бойлер туалет** |  | 16.25d | 2026-03-23 09:00 A | 2026-04-14 11:00 A |  | 100% |  |  |  |  | 82.25h | 82.25h |
| 1916 | 5.108.1 | заявка бойлер |  | 15min | 2026-03-23 09:00 A | 2026-03-23 09:15 A |  | 100% |  |  | start no earlier than 2026-03-23 09:00 | Шуранов Ю | 0.25h | 0.25h |
| 1917 | 5.108.2 | доставка |  | 10d | 2026-03-30 09:00 A | 2026-04-10 18:00 A | 1916 | 100% |  |  | start no earlier than 2026-03-29 09:00 | Карабанов | 80h | 80h |
| 1918 | 5.108.3 | монтаж |  | 2h | 2026-04-14 09:00 A | 2026-04-14 11:00 A | 1917 | 100% |  |  | start no earlier than 2026-03-12 08:00 | Тимофеев В | 2h | 2h |
| 1919 | 5.109 | ремонт хомут с вибросито |  | 1h | 2026-03-10 09:00 A | 2026-03-10 10:00 A |  | 100% |  |  | start no earlier than 2026-03-10 09:00 | Макаревич А | 1h | 1h |
| 1920 | 5.110 | Заварить деку на сито |  | 2h | 2026-03-06 09:00 A | 2026-03-06 11:00 A |  | 100% |  |  | start no earlier than 2026-03-06 09:00 | Тимофеев В | 2h | 2h |
| 1921 | 5.111 | Замена двойной розетки (созвон с Шурановым) или спросить у мастера |  | 1h | 2026-03-05 08:00 A | 2026-03-05 10:00 A |  | 100% |  |  | start no earlier than 2026-03-05 08:00 | Дедов В | 1h | 1h |
| 1922 | 5.112 | ошибка Е10 стиральная машинка |  | 1h | 2026-03-04 09:00 A | 2026-03-04 10:00 A |  | 100% |  |  | start no earlier than 2026-03-04 09:00 | Дедов В | 1h | 1h |
| 1923 | 5.113 | ремонт сито, сварка шов |  | 2h | 2026-03-03 09:00 A | 2026-03-03 11:00 A |  | 100% |  |  | start no earlier than 2026-03-03 09:00 | Макаревич А | 2h | 2h |
| 1924 | 5.114 | ремонт растариватель №1 + установить косынки |  | 2h | 2026-03-03 09:00 A | 2026-03-03 11:00 A |  | 100% |  |  | start no earlier than 2026-03-03 09:00 | Некрасов А; Труфанов А | 4h | 4h |

| ID | WBS | Task | Duration | Start | Finish | Predecessors | Complete | Remaining | Actual start | Total slack | Constraint | Resources | Work | Actual work |
| --- | --- | --- | --- | --- | --- | --- | --- | --- | --- | --- | --- | --- | --- | --- |
| 1925 | 5.115 | **ремонт растаривателя №3 - клинит заслонку** | 97.81d | 2026-04-20 09:00 A | 2026-09-02 16:30 |  | 87% | 13.01d |  | 140.78d |  |  | 16.92h | 14.67h |
| 1926 | 5.115.1 | установка ручной штурвал управления шибером | 2h | 2026-04-20 09:00 A | 2026-04-20 11:00 A |  | 100% |  |  |  | start no earlier than 2026-04-20 09:00 | Бундин В | 2h | 2h |
| 1927 | 5.115.2 | контроль поставка Зип - оплачивали или нет? | 10min | 2026-08-12 09:00 A | 2026-08-12 09:10 A |  | 100% |  |  |  | start no earlier than 2026-08-12 09:00 | Зорькин В | 0.17h | 0.17h |
| 1928 | 5.115.3 | получить счет | 15min | 2026-08-13 09:00 A | 2026-08-13 09:15 A |  | 100% |  |  |  | start no earlier than 2026-08-13 09:00 | Домоводов К | 0.25h | 0.25h |
| 1929 | 5.115.4 | контроль поставки | 15min | 2026-08-31 09:15 | 2026-08-31 09:30 | 1928FS+12d |  |  |  | 143.53d | start no earlier than 2026-08-31 09:00 | Зорькин В | 0.25h |  |
| 1930 | 5.115.5 | приемка | 15min | 2026-09-01 09:30 A | 2026-09-01 09:45 A | 1929FS+1d | 100% |  |  |  | start no earlier than 2026-08-31 09:00 | Зорькин В | 0.25h | 0.25h |
| 1931 | 5.115.6 | замена | 4h | 2026-09-02 09:30 A | 2026-09-02 14:30 A | 1930FS+1d | 100% |  |  |  | start no earlier than 2026-08-12 09:00 | Тимофеев В | 4h | 4h |
| 1932 | 5.115.7 | Ремонт паука с растаривателя, оценить состояние. | 2h | 2026-09-02 09:00 A | 2026-09-02 11:00 A |  | 100% |  |  |  | start no earlier than 2026-09-02 09:00 | Тимофеев В | 2h | 2h |
| 1933 | 5.115.8 | установить фланец на редуктор NMRV050 | 2h | 2026-05-18 09:00 A | 2026-05-18 11:00 A |  | 100% |  |  |  | start no earlier than 2026-05-20 09:00 | Бобренок В | 2h | 2h |
| 1934 | 5.115.9 | настройка тепловое реле, настройка концевиков | 2h | 2026-09-02 14:30 | 2026-09-02 16:30 | 1931, 1933 |  |  |  | 140.78d | start no earlier than 2026-05-08 09:00 | Дедов В | 2h |  |
| 1935 | 5.115.10 | доработка пластины, которая клинит | 4h | 2026-05-07 09:00 A | 2026-05-07 13:00 A |  | 100% |  |  |  | start no earlier than 2026-05-07 09:00 | Тимофеев В | 4h | 4h |
| 1936 | 5.116 | **установить курилку на раму. Изготовить лавочку** | 19.25d? | 2026-02-28 09:00 A | 2026-03-27 11:00 A |  | 100% |  |  |  |  |  | 27h | 27h |
| 1937 | 5.116.1 | сделать удлинители для синей платформы, на которые встанет курилка | 1d? | 2026-02-28 09:00 A | 2026-03-02 18:00 A |  | 100% |  |  |  | start no earlier than 2026-02-28 09:00 | Макаревич А | 8h | 8h |
| 1938 | 5.116.2 | закрыть отверстие в полу жзелезом | 1h | 2026-03-13 09:00 A | 2026-03-13 10:00 A |  | 100% |  |  |  | start no earlier than 2026-03-13 09:00 | Некрасов А; Труфанов А | 2h | 2h |
| 1939 | 5.116.3 | монтаж фанера на лавочку | 2h | 2026-03-27 09:00 A | 2026-03-27 11:00 A | 1938 | 100% |  |  |  | start no earlier than 2026-03-27 09:00 |  |  |  |
| 1940 | 5.116.4 | поворот курилки к стене, от ветра | 1h | 2026-03-20 09:00 A | 2026-03-20 10:00 A |  | 100% |  |  |  | start no earlier than 2026-03-20 09:00 | Некрасов А | 1h | 1h |
| 1941 | 5.116.5 | изготовить трап входной | 4h | 2026-03-20 10:00 A | 2026-03-20 15:00 A | 1940 | 100% |  |  |  | start no earlier than 2026-03-12 08:00 | Некрасов А | 4h | 4h |
| 1942 | 5.116.6 | изготовить лавку по периметру курилки. На железо будет потом доска или пенка. Металл с остатков 3ц или с синего склада | 1d? | 2026-03-01 09:00 A | 2026-03-02 18:00 A |  | 100% |  |  |  | start no earlier than 2026-03-01 09:00 | Макаревич А | 8h | 8h |
| 1943 | 5.116.7 | приготовить ручки за которые будет толпа поднимать руками курилку | 2h | 2026-03-09 09:00 A | 2026-03-09 11:00 A |  | 100% |  |  |  | start no earlier than 2026-03-09 09:00 | Некрасов А; Труфанов А | 4h | 4h |
| 1944 | 5.117 | ТО штабелеров - обрезать нитки. Дефектовка подшипников, указать в отчете состояние | 2h | 2026-03-01 09:00 A | 2026-03-02 11:00 A |  | 100% |  |  |  | start no earlier than 2026-03-01 09:00 | Макаревич А | 2h | 2h |
| 1945 | 5.118 | **штабелер - замена ролик мачты. Подшипник котка** | 0.01d | 2026-03-03 09:00 A | 2026-03-03 09:05 A |  | 100% |  |  |  |  |  | 0.17h | 0.17h |
| 1946 | 5.118.1 | контроль | 5min | 2026-03-03 09:00 A | 2026-03-03 09:05 A |  | 100% |  |  |  | start no earlier than 2026-03-03 09:00 | Зорькин В; Тракресурс | 0.17h | 0.17h |
| 1947 | 5.119 | **установить стеллажи для архив образцов** | 25.06d? | 2026-03-03 09:00 | 2026-04-07 09:30 A |  | 100% |  | 2026-03-05 09:00 |  |  |  | 227.25h | 227.25h |
| 1948 | 5.119.1 | монтаж освещение | 4h | 2026-03-06 09:00 A | 2026-03-06 13:00 A |  | 100% |  |  |  | start no earlier than 2026-03-06 09:00 | Некрасов А; Труфанов А | 8h | 8h |

| ID | WBS | Task | Duration | Start | Finish | Predecessors | Complete | Actual start | Actual finish | Constraint | Resources | Work | Actual work |
| --- | --- | --- | --- | --- | --- | --- | --- | --- | --- | --- | --- | --- | --- |
| 1949 | 5.119.2 | **покрасить стеллажи** | 12.02d | 2026-03-06 14:00 A | 2026-03-24 14:10 A | 1948 | 100% |  |  |  |  | 92.17h | 92.17h |
| 1950 | 5.119.2.1 | Заказать краску не пахнущую для радиаторов | 10min | 2026-03-06 14:00 A | 2026-03-06 14:10 A |  | 100% |  |  | start no earlier than 2026-03-03 09:00 | Зорькин В | 0.17h | 0.17h |
| 1951 | 5.119.2.2 | Доставка | 10d | 2026-03-06 14:10 A | 2026-03-24 14:10 A | 1950 | 100% |  |  | start no earlier than 2026-03-03 09:00 | Карабанов | 80h | 80h |
| 1952 | 5.119.2.3 | покраска | 4h | 2026-03-06 14:00 A | 2026-03-06 18:00 A |  | 100% |  |  | start no earlier than 2026-03-06 09:00 | Некрасов А; Труфанов А | 8h | 8h |
| 1953 | 5.119.2.4 | покраска | 4h | 2026-03-06 14:00 A | 2026-03-06 18:00 A |  | 100% |  |  | start no earlier than 2026-03-06 09:00 | Бундин В | 4h | 4h |
| 1954 | 5.119.3 | занести стеллажи в кабинеты с работниками 5ц | 4h | 2026-03-09 09:00 A | 2026-03-09 13:00 A | 1956 | 100% |  |  | start no earlier than 2026-03-09 09:00 | Бобренок В | 4h | 4h |
| 1955 | 5.119.4 | сборка стеллажей | 4h | 2026-03-13 09:00 A | 2026-03-13 13:00 A |  | 100% |  |  | start no earlier than 2026-03-13 09:00 | Труфанов А; Некрасов А | 8h | 8h |
| 1956 | 5.119.5 | монтаж доп полок с уголка | 4h | 2026-03-08 09:00 A | 2026-03-09 13:00 A | 1957 | 100% |  |  | start no earlier than 2026-03-08 09:00 | Бобренок В | 4h | 4h |
| 1957 | 5.119.6 | напилить фанеру на стеллажи | 8h | 2026-03-15 09:00 A | 2026-03-16 18:00 A |  | 100% |  |  | start no earlier than 2026-03-15 09:00 | Бундин В | 8h | 8h |
| 1958 | 5.119.7 | напилить фанеру на стеллажи | 4h | 2026-03-16 09:00 A | 2026-03-16 13:00 A |  | 100% |  |  | start no earlier than 2026-03-16 09:00 | Макаревич А; Тимофеев В | 8h | 8h |
| 1959 | 5.119.8 | **монтаж двери** | 8.06d? | 2026-03-03 09:00 | 2026-03-11 09:30 |  | 100% | 2026-03-05 09:00 | 2026-04-07 09:30 |  |  | 95.08h | 95.08h |
| 1960 | 5.119.8.1 | заявка фурнитуры | 30min | 2026-03-05 09:00 A | 2026-03-05 09:30 A |  | 100% |  |  | start no earlier than 2026-03-05 09:00 | Зорькин В | 0.5h | 0.5h |
| 1961 | 5.119.8.2 | получить коробку на дверь / контроолль поставки | 5min | 2026-03-18 09:00 A | 2026-03-18 09:05 A |  | 100% |  |  | start no earlier than 2026-03-18 09:00 | Зорькин В | 0.08h | 0.08h |
| 1962 | 5.119.8.3 | монтаж 2 двери | 4h | 2026-03-20 09:00 A | 2026-03-20 13:00 A |  | 100% |  |  | start no earlier than 2026-03-20 09:00 | Тимофеев В; Бундин В | 8h | 8h |
| 1963 | 5.119.8.4 | монтаж замка и ручек | 2h | 2026-03-24 09:00 A | 2026-03-24 11:00 A |  | 100% |  |  | start no earlier than 2026-03-24 09:00 | Тимофеев В | 2h | 2h |
| 1964 | 5.119.8.5 | **монтаж наличноков** | 10.06d | 2026-03-24 09:00 A | 2026-04-07 09:30 A |  | 100% |  |  |  |  | 84.5h | 84.5h |
| 1965 | 5.119.8.5.1 | заявка на наличинки | 30min | 2026-03-24 09:00 A | 2026-03-24 09:30 A |  | 100% |  |  | start no earlier than 2026-03-24 09:00 | Зорькин В | 0.5h | 0.5h |
| 1966 | 5.119.8.5.2 | доставка | 10d | 2026-03-24 09:30 A | 2026-04-07 09:30 A | 1965 | 100% |  |  | start no earlier than 2026-03-20 08:00 | Карабанов | 80h | 80h |
| 1967 | 5.119.8.5.3 | монтаж | 4h | 2026-04-04 09:30 A | 2026-04-06 13:00 A | 1966 | 100% |  |  | start no earlier than 2026-03-20 08:00 | Тимофеев В | 4h | 4h |
| 1968 | 5.120 | **монтаж розеток для весов** | 83d | 2026-03-02 09:00 A | 2026-06-24 18:00 A |  | 100% |  |  |  |  | 98.5h | 98.5h |
| 1969 | 5.120.1 | составить план монтажа, расчет материалов | 30min | 2026-03-02 09:00 A | 2026-03-02 09:30 A |  | 100% |  |  | start no earlier than 2026-03-02 09:00 | Некрасов А; Зорькин В; Труфанов А | 1.5h | 1.5h |
| 1970 | 5.120.2 | заявка трос/ талреп | 30min | 2026-03-02 09:30 A | 2026-03-02 10:00 A | 1969 | 100% |  |  | start no earlier than 2026-02-27 08:00 | Зорькин В | 0.5h | 0.5h |
| 1971 | 5.120.3 | доставка | 10d | 2026-03-02 10:00 A | 2026-03-16 10:00 A | 1970 | 100% |  |  | start no earlier than 2026-02-27 08:00 | Карабанов | 80h | 80h |
| 1972 | 5.120.4 | комплектация | 30min | 2026-06-01 09:00 A | 2026-06-01 09:30 A |  | 100% |  |  | start no earlier than 2026-06-01 09:00 | Зорькин В | 0.5h | 0.5h |
| 1973 | 5.120.5 | монтаж | 8h | 2026-06-24 09:00 A | 2026-06-24 18:00 A | 1971 | 100% |  |  | start no earlier than 2026-06-24 09:00 | Тимофеев В; Макаревич А | 16h | 16h |

| ID | WBS | Task | Duration | Start | Finish | Predecessors | Complete | Remaining | Actual start | Total slack | Free slack | Constraint | Resources | Work | Actual work |
| --- | --- | --- | --- | --- | --- | --- | --- | --- | --- | --- | --- | --- | --- | --- | --- |
| 1974 | 5.121 | **установить кнопочный пост вентилятора в окно в доступную зону** | 5.06d | 2026-03-03 09:00 A | 2026-03-10 09:30 |  | 1% | 5.01d |  | 267.53d |  |  |  | 44.5h | 0.5h |
| 1975 | 5.121.1 | заявка частотник 0,5-0,75квт | 30min | 2026-03-03 09:00 A | 2026-03-03 09:30 A |  | 100% |  |  |  |  | start no earlier than 2026-03-03 09:00 | Зорькин В | 0.5h | 0.5h |
| 1976 | 5.121.2 | доставка | 5d | 2026-03-03 09:30 | 2026-03-10 09:30 | 1975 |  |  |  | 267.53d |  | start no earlier than 2026-02-27 08:00 | Карабанов | 40h |  |
| 1977 | 5.121.3 | монтаж | 4h | 2026-03-03 09:00 | 2026-03-03 13:00 |  |  |  |  | 272.09d |  | start no earlier than 2026-03-03 09:00 | Дедов В | 4h |  |
| 1978 | 5.122 | замена местами бойлер с раздевали и кухня | 2h | 2026-02-27 09:00 A | 2026-02-27 11:00 A |  | 100% |  |  |  |  | start no earlier than 2026-02-27 08:00 | Бундин В; Труфанов А | 4h | 4h |
| 1979 | 5.123 | **установить калорифер на 4 котел** | 11.12d? | 2026-10-12 09:00 | 2026-10-27 10:00 |  |  |  |  | 96.47d |  |  |  | 97h |  |
| 1980 | 5.123.1 | заявка | 1h | 2026-10-12 09:00 | 2026-10-12 10:00 |  |  |  |  | 96.47d | 0d | start no earlier than 2026-10-12 09:00 | Зорькин В | 1h |  |
| 1981 | 5.123.2 | доставка | 10d | 2026-10-12 10:00 | 2026-10-26 10:00 | 1980 |  |  |  | 96.47d | 0d | start no earlier than 2026-02-27 08:00 | Карабанов | 80h |  |
| 1982 | 5.123.3 | монтаж | 1d? | 2026-10-26 10:00 | 2026-10-27 10:00 | 1981 |  |  |  | 96.47d |  | start no earlier than 2026-02-27 08:00 | Некрасов А; Труфанов А | 16h |  |
| 1983 | 5.124 | **изготовить бункер нерж** | 77d? | 2026-06-06 09:00 | 2026-09-16 18:00 |  | 83% | 13.29d? | 2026-03-16 09:00 |  |  |  |  | 115.5h | 81.5h |
| 1984 | 5.124.1 | составить чертеж | 1h | 2026-03-16 09:00 A | 2026-03-16 10:00 A |  | 100% |  |  |  |  | start no earlier than 2026-03-16 09:00 | Зорькин В | 1h | 1h |
| 1985 | 5.124.2 | заявка на нерж | 30min | 2026-03-16 10:00 A | 2026-03-16 10:30 A | 1984 | 100% |  |  |  |  | start no earlier than 2026-02-27 08:00 | Зорькин В | 0.5h | 0.5h |
| 1986 | 5.124.3 | доставка | 10d | 2026-04-23 09:00 A | 2026-05-06 18:00 A | 1985 | 100% |  |  |  |  | start no earlier than 2026-04-23 09:00 | Карабанов | 80h | 80h |
| 1987 | 5.124.4 | проверка черетежей / подготовка к сборке | 1h | 2026-09-25 09:00 | 2026-09-25 10:00 |  |  |  |  | 117.47d | 0d | start no earlier than 2026-09-25 09:00 | Труфанов А; Зорькин В | 2h |  |
| 1988 | 5.124.5 | сборка | 2d | 2026-09-25 10:00 | 2026-09-28 10:00 | 1986, 1987 |  |  |  | 117.47d |  | start no earlier than 2026-09-22 09:00 | Некрасов А; Тимофеев В | 32h |  |
| 1989 | 5.125 | аудит по взрывоопасности 5ц | 1d? | 2025-09-03 09:00 | 2025-09-03 18:00 |  |  |  |  | 400.59d |  | start no earlier than 2025-09-03 09:00 |  |  |  |
| 1990 | 5.126 | **расширить прорем для проезда погрузчика** | 3d? | 2024-05-27 09:00 | 2024-05-29 18:00 |  |  |  |  | 730.59d |  |  |  | 24h |  |
| 1991 | 5.126.1 | перенос канализ трубы | 1d? | 2024-05-27 09:00 | 2024-05-27 18:00 |  |  |  |  | 730.59d | 0d | start no earlier than 2024-05-27 09:00 | Некрасов А | 8h |  |
| 1992 | 5.126.2 | монтаж закладных в прорем +400мм | 1d? | 2024-05-28 09:00 | 2024-05-28 18:00 | 1991 |  |  |  | 730.59d | 0d | start no earlier than 2024-05-17 09:00 | Некрасов А | 8h |  |
| 1993 | 5.126.3 | демонтаж /расширение | 1d? | 2024-05-29 09:00 | 2024-05-29 18:00 | 1992 |  |  |  | 730.59d |  | start no earlier than 2024-05-17 09:00 | Некрасов А | 8h |  |
| 1994 | 5.127 | подключить концевые выключатели шибера растаривателя | 2h | 2023-06-21 09:00 | 2023-06-21 11:00 |  |  |  |  | 976.34d |  | start no earlier than 2023-06-21 09:00 | Дедов В | 2h |  |
| 1995 | 5.128 | **установить сирену при включении тельфера** | 119d? | 2023-05-29 09:00 A | 2023-11-09 18:00 |  |  | 118.79d? |  | 874.59d |  |  |  | 48.08h | 0.08h |
| 1996 | 5.128.1 | заявка на сирену и кабель | 5min | 2023-05-29 09:00 A | 2023-05-29 09:05 A |  | 100% |  |  |  |  | start no earlier than 2023-05-29 09:00 | Лобанов И | 0.08h | 0.08h |
| 1997 | 5.128.2 | доставка | 5d | 2023-05-29 09:05 | 2023-06-05 09:05 | 1996 |  |  |  | 987.58d | 112.99d | start no earlier than 2023-05-22 09:00 | Малинина М | 40h |  |
| 1998 | 5.128.3 | монтаж | 1d? | 2023-11-09 09:00 | 2023-11-09 18:00 | 1997 |  |  |  | 874.59d |  | start no earlier than 2023-11-09 09:00 | Дедов В | 8h |  |
| 1999 | 5.129 | держак мешка для сбора отработанного корма лопатой, что бы второй не держал мешок | 1d? | 2026-05-04 09:00 | 2026-05-04 18:00 |  |  |  |  | 227.59d |  | start no earlier than 2026-05-04 09:00 | Тимофеев В | 8h |  |

| ID | WBS | Task | Duration | Start | Finish | Predecessors | Complete | Remaining | Total slack | Constraint | Resources | Work | Actual work |
| --- | --- | --- | --- | --- | --- | --- | --- | --- | --- | --- | --- | --- | --- |
| 2000 | 5.130 | **Замена насосной станции** | 9.25d | 2026-09-01 09:00 A | 2026-09-11 11:00 |  | 92% | 0.71d | 133.34d |  |  | 6.33h | 6h |
| 2001 | 5.130.1 | Замена насоса | 2h | 2026-09-01 09:00 A | 2026-09-01 11:00 A |  | 100% |  |  | start no earlier than 2026-09-01 09:00 | Бундин В | 2h | 2h |
| 2002 | 5.130.2 | Заявка на станцию | 15min | 2026-09-02 09:00 | 2026-09-02 09:15 |  |  |  | 141.56d | start no earlier than 2026-09-02 08:00 | Зорькин В | 0.25h |  |
| 2003 | 5.130.3 | контроль доставки | 5min | 2026-09-11 09:00 | 2026-09-11 09:05 |  |  |  | 133.58d | start no earlier than 2026-09-11 09:00 | Зорькин В | 0.08h |  |
| 2004 | 5.130.4 | установка новой насосной станции | 2h | 2026-09-11 09:00 A | 2026-09-11 11:00 A |  | 100% |  |  | start no earlier than 2026-09-11 09:00 | Некрасов А; Макаревич А | 4h | 4h |
| 2005 | 5.131 | Попытаться заварить деки и хомуты той проволокой по нерже, что есть у нас | 3h | 2026-07-28 08:00 A | 2026-07-28 12:00 A |  | 100% |  |  | start no earlier than 2026-07-28 08:00 | Макаревич А | 3h | 3h |
| 2006 | 5.132 | **5 цех** | 0.25d | 2026-04-07 09:00 A | 2026-04-07 11:00 A |  | 100% |  |  |  |  | 3.5h | 3.5h |
| 2007 | 5.132.1 | Установка сеток на сито | 1h | 2026-04-07 09:00 A | 2026-04-07 10:00 A |  | 100% |  |  | start no earlier than 2026-04-07 08:00 | Бундин В | 1h | 1h |
| 2008 | 5.132.2 | **2 цех** | 0.25d | 2026-04-07 09:00 A | 2026-04-07 11:00 A |  | 100% |  |  |  |  | 2.5h | 2.5h |
| 2009 | 5.132.2.1 | Взять шланг с мойки зона экструдера, установить на складе навесок цех 2, для набора воды в кубы | 30min | 2026-04-07 09:00 A | 2026-04-07 09:30 A |  | 100% |  |  | start no earlier than 2026-04-07 08:00 | Бундин В | 0.5h | 0.5h |
| 2010 | 5.132.2.2 | Посмотреть подачу воды на поломоечной машинке | 2h | 2026-04-07 09:00 A | 2026-04-07 11:00 A |  | 100% |  |  | start no earlier than 2026-04-07 08:00 | Бундин В | 2h | 2h |
| 2011 | 6 | **модернизация** | 981.5d? | 2023-06-07 09:00 A | 2027-03-03 13:00 |  | 48% | 507.12d? | 5.09d |  |  | 3394.67h | 2643.67h |
| 2012 | 6.1 | доработка нерж труб для парогенератора (антиэлектрод) | 1h | 2026-07-06 09:00 | 2026-07-06 10:00 |  |  |  | 183.47d | start no earlier than 2026-07-06 09:00 | Тимофеев В | 1h |  |
| 2013 | 6.2 | **Дражжировка 2 линия 1 цех** | 0.25d | 2026-07-29 08:00 A | 2026-07-29 11:00 A |  | 100% |  |  |  |  | 2h | 2h |
| 2014 | 6.2.1 | установка трубки с отверстиями, эксперимент | 2h | 2026-07-29 08:00 A | 2026-07-29 11:00 A |  | 100% |  |  | start no earlier than 2026-07-29 08:00 | Тимофеев В | 2h | 2h |
| 2015 | 6.3 | **поточные весы на входе в барабан жира** | 0.12d | 2026-06-15 09:00 A | 2026-06-15 10:00 A |  | 100% |  |  |  |  | 1h | 1h |
| 2016 | 6.3.1 | запрос КП у НОТИС - весы с дозатором / бункеры | 1h | 2026-06-15 09:00 A | 2026-06-15 10:00 A |  | 100% |  |  | start no earlier than 2026-06-15 09:00 | Зорькин В | 1h | 1h |
| 2017 | 6.4 | **устройство загрузки в смесители** | 0.12d | 2026-03-31 09:00 | 2026-03-31 10:00 |  |  |  | 252.47d |  |  | 1h |  |
| 2018 | 6.4.1 | подбор оборудования, запрос КП | 1h | 2026-03-31 09:00 | 2026-03-31 10:00 |  |  |  | 252.47d | start no earlier than 2026-03-31 08:00 | Зорькин В | 1h |  |
| 2019 | 6.5 | **определить параметры сушки гранулы лаб испытанием** | 6d | 2024-09-09 09:00 A | 2024-09-16 18:00 A |  | 100% |  |  |  |  | 16h | 16h |
| 2020 | 6.5.1 | изучить метод материал, физ законы процесса сушки. | 4h | 2024-09-09 09:00 A | 2024-09-09 13:00 A |  | 100% |  |  | start no earlier than 2024-09-09 09:00 | Зорькин В | 4h | 4h |
| 2021 | 6.5.2 | Определить набор средств измерения и оборыдования для лаб работы. | 4h | 2024-09-09 14:00 A | 2024-09-09 18:00 A | 2020 | 100% |  |  | start no earlier than 2024-09-09 09:00 | Зорькин В | 4h | 4h |
| 2022 | 6.5.3 | разрабоать пошаговый план лаб работы сушки 1кг продукта в термошкафу | 4h | 2024-09-16 09:00 A | 2024-09-16 13:00 A | 2021 | 100% |  |  | start no earlier than 2024-09-16 09:00 | Зорькин В | 4h | 4h |
| 2023 | 6.5.4 | определить зависимость времени сушки от температуры и влажности среды. | 4h | 2024-09-16 14:00 A | 2024-09-16 18:00 A | 2022 | 100% |  |  | start no earlier than 2024-09-06 08:00 | Зорькин В | 4h | 4h |

| ID | WBS | Task | Type | Duration | Start | Finish | Predecessors | Complete | Remaining | Total slack | Constraint | Resources | Work | Actual work |
| --- | --- | --- | --- | --- | --- | --- | --- | --- | --- | --- | --- | --- | --- | --- |
| 2024 | 6.6 | **станция фильтрации гидролизат с еврокуба в промежут емкость. Фильтр + насос** |  | 27.25d | 2026-03-13 09:00 A | 2026-04-21 11:00 A |  | 100% |  |  |  |  | 8h | 8h |
| 2025 | 6.6.1 | составить схему размещения насос / фильтр |  | 1h | 2026-03-13 09:00 A | 2026-03-13 10:00 A |  | 100% |  |  | start no earlier than 2026-03-13 09:00 | Зорькин В | 1h | 1h |
| 2026 | 6.6.2 | заявка фильтр 5" коллона + фитинги РР |  | 1h | 2026-03-13 10:00 A | 2026-03-13 11:00 A | 2025 | 100% |  |  | start no earlier than 2026-03-12 08:00 | Зорькин В | 1h | 1h |
| 2027 | 6.6.3 | доставка |  | 10d | 2026-03-13 11:00 A | 2026-03-27 11:00 A | 2026 | 100% |  |  | start no earlier than 2026-03-12 08:00 |  |  |  |
| 2028 | 6.6.4 | сборка насосная станция с фильром в 1ц |  | 4h | 2026-04-20 09:00 A | 2026-04-20 13:00 A | 2027 | 100% |  |  | start no earlier than 2026-04-20 09:00 | Тимофеев В | 4h | 4h |
| 2029 | 6.6.5 | оформление протокол испытаний |  | 2h | 2026-04-21 09:00 A | 2026-04-21 11:00 A |  | 100% |  |  | start no earlier than 2026-04-21 09:00 | Зорькин В | 2h | 2h |
| 2030 | 6.7 | **тест форсунки на гидролизат фильтрованный гидролизат** |  | 95.25d | 2026-04-21 11:00 A | 2026-09-01 13:00 | 2024 | 72% | 26.28d | 142.09d |  |  | 19h | 15h |
| 2031 | 6.7.1 | подготовить переходник |  | 2h | 2026-04-21 11:00 A | 2026-04-21 13:00 A |  | 100% |  |  | start no earlier than 2026-03-12 08:00 | Тимофеев В | 2h | 2h |
| 2032 | 6.7.2 | тестирование разных форсунок |  | 2h | 2026-04-21 13:00 A | 2026-04-21 16:00 A | 2031 | 100% |  |  | start no earlier than 2026-03-12 08:00 | Тимофеев В; Зорькин В | 4h | 4h |
| 2033 | 6.7.3 | контроль наличия фитингов для подключения насосной фильтровальной станции к еврокубу |  | 30min | 2026-04-24 08:00 A | 2026-04-24 09:30 A |  | 100% |  |  | start no earlier than 2026-04-24 08:00 | Зорькин В; Тимофеев В | 1h | 1h |
| 2034 | 6.7.4 | тест - наполнить канистру с куба гидролизатом через станцию+фильтр |  | 2h | 2026-04-27 09:00 A | 2026-04-27 11:00 A |  | 100% |  |  | start no earlier than 2026-04-27 09:00 | Зорькин В; Тимофеев В | 3h | 3h |
| 2035 | 6.7.5 | фильтрованный гдз распылить форсунками штатным насосом - забивакет |  | 4h | 2026-05-13 09:00 A | 2026-05-13 13:00 A | 2034 | 100% |  |  | start no earlier than 2026-05-13 09:00 | Зорькин В; Тимофеев В | 5h | 5h |
| 2036 | 6.7.6 | проект распыление моторчиком |  | 4h | 2026-09-01 09:00 | 2026-09-01 13:00 |  |  |  | 142.09d | start no earlier than 2026-09-01 09:00 | Домоводов К | 4h |  |
| 2037 | 6.8 | **станция фильтраци куринный жир с еврокуба в промежут емкость. Насос + фильтр** |  | 36.75d? | 2026-03-05 09:00 A | 2026-04-24 16:00 A |  | 100% |  |  |  |  | 46h | 46h |
| 2038 | 6.8.1 | подбор производительный насос и фильтр для жира. Закачка с еврокуба, перекачка через фильтр |  | 1d? | 2026-03-05 09:00 A | 2026-03-05 18:00 A |  | 100% |  |  | start no earlier than 2026-03-05 09:00 | Домоводов К; Зорькин В | 16h | 16h |
| 2039 | 6.8.2 | заявка материалы |  | 1d? | 2026-03-06 09:00 A | 2026-03-06 18:00 A | 2038 | 100% |  |  | start no earlier than 2026-02-27 08:00 | Зорькин В | 8h | 8h |
| 2040 | 6.8.3 | тест насосной станцией с фильтром |  | 1d? | 2026-04-20 09:00 A | 2026-04-20 18:00 A |  | 100% |  |  | start no earlier than 2026-04-20 09:00 | Зорькин В; Тимофеев В | 16h | 16h |
| 2041 | 6.8.4 | сборка второй станции для жира на БГ11А |  | 6h | 2026-04-24 08:00 A | 2026-04-24 16:00 A |  | 100% |  |  | start no earlier than 2026-04-24 08:00 | Тимофеев В | 6h | 6h |
| 2042 | 6.9 | **мешалка гидролизата** |  | 131.12d | 2026-03-03 09:00 A | 2026-09-02 10:00 A |  | 100% |  |  |  |  | 37.08h | 37.08h |
| 2043 | 6.9.1 | определить диаметр вала / где инструкция? Выяснить |  | 20min | 2026-08-28 09:00 A | 2026-08-28 09:20 A |  | 100% |  |  | start no earlier than 2026-08-28 09:00 | Зорькин В | 0.33h | 0.33h |
| 2044 | 6.9.2 | согласовать договор /оплата счет |  | 1h | 2026-03-03 09:00 A | 2026-03-03 10:00 A |  | 100% |  |  | start no earlier than 2026-03-03 09:00 | Домоводов К | 1h | 1h |
| 2045 | 6.9.3 | доставка | milestone | 0d | 2026-08-10 08:00 A | 2026-08-10 08:00 A |  | 100% |  |  | start no earlier than 2026-08-10 08:00 |  |  |  |
| 2046 | 6.9.4 | планирование технологии работы / какие нужны доработки |  | 15min | 2026-08-12 09:00 A | 2026-08-12 09:15 A |  | 100% |  |  | start no earlier than 2026-08-12 09:00 | Домоводов К | 0.25h | 0.25h |
| 2047 | 6.9.5 | сборка и тест с операторами в 1ц. Можно приварить кронштейны под штабелер |  | 4h | 2026-08-12 09:00 A | 2026-08-12 13:00 A |  | 100% |  |  | start no earlier than 2026-08-12 09:00 | Макаревич А | 4h | 4h |
| 2048 | 6.9.6 | составить чертеж кронштейна |  | 1h | 2026-08-17 09:00 A | 2026-08-17 10:00 A |  | 100% |  |  | start no earlier than 2026-08-17 09:00 | Шуранов Ю | 1h | 1h |
| 2049 | 6.9.7 | заявка на лебедка |  | 15min | 2026-08-17 10:00 A | 2026-08-17 10:15 A | 2048 | 100% |  |  | start no earlier than 2026-08-14 09:00 | Шуранов Ю | 0.25h | 0.25h |
| 2050 | 6.9.8 | конроль доставки |  | 15min | 2026-08-22 10:15 A | 2026-08-24 09:15 A | 2049FS+5d | 100% |  |  | start no earlier than 2026-08-14 09:00 | Шуранов Ю | 0.25h | 0.25h |
| 2051 | 6.9.9 | монтаж лебедка |  | 6h | 2026-08-31 09:00 A | 2026-08-31 16:00 A | 2050FS+1d | 100% |  |  | start no earlier than 2026-08-31 09:00 | Некрасов А; Труфанов А | 12h | 12h |
| 2052 | 6.9.10 | монтаж кронштейн под лебедку |  | 6h | 2026-08-31 16:00 A | 2026-09-01 13:00 A | 2051 | 100% |  |  | start no earlier than 2026-08-31 09:00 | Некрасов А; Труфанов А | 12h | 12h |
| 2053 | 6.9.11 | Установить 3-х фазную вилку для мешалки рядом с частотником |  | 2h | 2026-08-31 08:00 A | 2026-08-31 11:00 A |  | 100% |  |  | start no earlier than 2026-08-31 08:00 | Дедов В | 2h | 2h |
| 2054 | 6.9.12 | Установить розетку для электротали, проложить кабель к розетке возле мухобойки |  | 3h | 2026-08-31 08:00 A | 2026-08-31 12:00 A |  | 100% |  |  | start no earlier than 2026-08-31 08:00 | Дедов В | 3h | 3h |
| 2055 | 6.9.13 | Подключить таль к розетке, проложить гофру |  | 1h | 2026-09-02 09:00 A | 2026-09-02 10:00 A |  | 100% |  |  | start no earlier than 2026-09-02 09:00 | Бундин В | 1h | 1h |

| ID | WBS | Task | Duration | Start | Finish | Predecessors | Complete | Remaining | Total slack | Constraint | Resources | Work | Actual work |
| --- | --- | --- | --- | --- | --- | --- | --- | --- | --- | --- | --- | --- | --- |
| 2056 | 6.10 | **качественное нанесение жира тесты** | 268.5d? | 2026-03-02 09:00 A | 2027-03-03 13:00 A |  | 100% |  |  |  |  | 2102h | 2102h |
| 2057 | 6.10.1 | **испытания форсунка 2х фазная 1ц** | 2.25d | 2026-03-02 09:00 A | 2026-03-04 11:00 A |  | 100% |  |  |  |  | 5.5h | 5.5h |
| 2058 | 6.10.1.1 | подготовить кронштейн крепления форсунки к конвейеру | 2h | 2026-03-02 09:00 A | 2026-03-02 11:00 A |  | 100% |  |  | start no earlier than 2026-03-02 09:00 | Тимофеев В | 2h | 2h |
| 2059 | 6.10.1.2 | подготовить пневморедуктор, временно с НОТИС 3ц | 1h | 2026-03-02 11:00 A | 2026-03-02 12:00 A | 2058 | 100% |  |  | start no earlier than 2026-02-27 08:00 | Тимофеев В | 1h | 1h |
| 2060 | 6.10.1.3 | подготовить фильтр 1шт | 30min | 2026-03-02 12:00 A | 2026-03-02 12:30 A | 2059 | 100% |  |  | start no earlier than 2026-02-27 08:00 | Тимофеев В | 0.5h | 0.5h |
| 2061 | 6.10.1.4 | Тест форсунки на жирах, скооперироваться с технологами | 2h | 2026-03-04 09:00 A | 2026-03-04 11:00 A |  | 100% |  |  | start no earlier than 2026-03-04 09:00 | Тимофеев В | 2h | 2h |
| 2062 | 6.10.2 | **монтаж форсунки в линию** | 261.5d? | 2026-03-11 09:00 A | 2027-03-03 13:00 A |  | 100% |  |  |  | Тимофеев В | 2096.5h | 2096.5h |
| 2063 | 6.10.2.1 | **тест однофазная форсунка** | 30.25d? | 2026-03-11 09:00 A | 2026-04-22 11:00 A |  | 100% |  |  |  |  | 52.5h | 52.5h |
| 2064 | 6.10.2.1.1 | заявка пневморедуктор, фитинги насос - кран - 3х ходовой | 30min | 2026-03-11 09:00 A | 2026-03-11 09:30 A |  | 100% |  |  | start no earlier than 2026-03-11 09:00 | Зорькин В | 0.5h | 0.5h |
| 2065 | 6.10.2.1.2 | проект рама для монтаж фильтров, редуктор, кронштейн форсунки | 1d? | 2026-03-11 09:30 A | 2026-03-12 09:30 A | 2064 | 100% |  |  | start no earlier than 2026-02-27 08:00 | Домоводов К | 8h | 8h |
| 2066 | 6.10.2.1.3 | доставка | 5d | 2026-03-30 09:00 A | 2026-04-03 18:00 A |  | 100% |  |  | start no earlier than 2026-03-30 09:00 | Карабанов | 40h | 40h |
| 2067 | 6.10.2.1.4 | сборка рама, покраска | 2h | 2026-04-22 09:00 A | 2026-04-22 11:00 A | 2065 | 100% |  |  | start no earlier than 2026-04-22 09:00 | Тимофеев В | 2h | 2h |
| 2068 | 6.10.2.1.5 | монтаж 0,3 форсунки | 2h | 2026-04-22 09:00 A | 2026-04-22 11:00 A | 2066 | 100% |  |  | start no earlier than 2026-04-22 09:00 | Тимофеев В | 2h | 2h |
| 2069 | 6.11 | **тест однофазная форсунка** | 0.02d | 2026-03-16 09:00 A | 2026-03-16 09:10 A |  | 100% |  |  |  |  | 0.17h | 0.17h |
| 2070 | 6.11.1 | получить счет | 10min | 2026-03-16 09:00 A | 2026-03-16 09:10 A |  | 100% |  |  | start no earlier than 2026-03-16 09:00 | Домоводов К | 0.17h | 0.17h |
| 2071 | 6.12 | **установить фильтры жир на 1 и 2 линию** | 71.25d | 2026-03-17 09:00 A | 2026-06-24 11:00 |  | 83% | 11.88d | 191.34d |  |  | 14h | 12h |
| 2072 | 6.12.1 | сборка система фильтров 2 фильтра на 2 линии подготовиь + рама | 4h | 2026-03-17 09:00 A | 2026-03-17 13:00 A |  | 100% |  |  | start no earlier than 2026-03-17 09:00 | Тимофеев В | 4h | 4h |
| 2073 | 6.12.2 | монтаж стационарно рама под фильтры | 4h | 2026-04-22 09:00 A | 2026-04-22 13:00 A | 2072 | 100% |  |  | start no earlier than 2026-04-22 09:00 | Тимофеев В | 4h | 4h |
| 2074 | 6.12.3 | калибровка PID регулятора подачи жира | 2h | 2026-05-13 09:00 A | 2026-05-13 11:00 A |  | 100% |  |  | start no earlier than 2026-05-13 09:00 | Зорькин В; Домоводов К | 4h | 4h |
| 2075 | 6.12.4 | подготовка для установить на 1 линию | 2h | 2026-06-24 09:00 | 2026-06-24 11:00 |  |  |  | 191.34d | start no earlier than 2026-06-24 09:00 | Тимофеев В | 2h |  |
| 2076 | 6.13 | **ТЕКО 0,4 или 1,5 поставить пленку с БЕСТРОМА 620мм** | 6.09d | 2026-03-13 09:00 A | 2026-03-23 09:45 A |  | 100% |  |  |  |  | 0.75h | 0.75h |
| 2077 | 6.13.1 | запрос возможности в ТЕКО | 30min | 2026-03-13 09:00 A | 2026-03-13 09:30 A |  | 100% |  |  | start no earlier than 2026-03-13 09:00 | Зорькин В | 0.5h | 0.5h |
| 2078 | 6.13.2 | контроль ответ | 15min | 2026-03-23 09:30 A | 2026-03-23 09:45 A | 2077FS+10d | 100% |  |  | start no earlier than 2026-03-12 08:00 | Зорькин В | 0.25h | 0.25h |
| 2079 | 6.14 | **фильера с вставками для 2ц** | 0.02d | 2025-02-21 09:00 A | 2025-02-21 09:10 A |  | 100% |  |  |  |  | 0.17h | 0.17h |
| 2080 | 6.14.1 | контроль изготовления | 10min | 2025-02-21 09:00 A | 2025-02-21 09:10 A |  | 100% |  |  | start no earlier than 2025-02-21 09:00 | Шуранов Ю | 0.17h | 0.17h |

| ID | WBS | Task | Duration | Start | Finish | Predecessors | Complete | Total slack | Free slack | Constraint | Resources | Work | Actual work |
| --- | --- | --- | --- | --- | --- | --- | --- | --- | --- | --- | --- | --- | --- |
| 2081 | 6.15 | **ручка для экструдера крутиьт мотор на 1 и 2 линию** | 138d? | 2024-08-09 09:00 | 2025-02-18 18:00 |  |  | 541.59d |  |  |  | 9h |  |
| 2082 | 6.15.1 | изготовление | 1d? | 2025-02-18 09:00 | 2025-02-18 18:00 |  |  | 541.59d |  | start no earlier than 2025-02-18 09:00 | Черепанов И | 8h |  |
| 2083 | 6.15.2 | составить чертежи / разместить изготовление | 1h | 2024-08-09 09:00 | 2024-08-09 10:00 |  |  | 679.47d |  | start no earlier than 2024-08-09 09:00 | Шуранов Ю | 1h |  |
| 2084 | 6.16 | **охлаждение шкафов управления печью 1 2 3 линия** | 5d? | 2024-04-18 09:00 | 2024-04-24 18:00 |  |  | 755.59d |  |  |  | 40h |  |
| 2085 | 6.16.1 | выбор и заявка кондиционеры для щитов управления | 1d? | 2024-04-18 09:00 | 2024-04-18 18:00 |  |  | 755.59d | 0d | start no earlier than 2024-04-18 09:00 | Домоводов К | 8h |  |
| 2086 | 6.16.2 | оплата / доставка | 1d? | 2024-04-19 09:00 | 2024-04-19 18:00 | 2085 |  | 755.59d | 0d | start no earlier than 2024-04-04 09:00 | Мультан | 8h |  |
| 2087 | 6.16.3 | монтаж | 3d | 2024-04-22 09:00 | 2024-04-24 18:00 | 2086 |  | 755.59d |  | start no earlier than 2024-04-11 09:00 | Некрасов А | 24h |  |
| 2088 | 6.17 | **подача гидролизат в смеситель насосом** | 25d? | 2024-03-25 09:00 | 2024-04-26 18:00 |  |  | 753.59d |  |  |  | 200h |  |
| 2089 | 6.17.1 | выбор насоса / заявка на насос | 1d? | 2024-03-25 09:00 | 2024-03-25 18:00 |  |  | 753.59d | 0d | start no earlier than 2024-03-25 09:00 | Домоводов К | 8h |  |
| 2090 | 6.17.2 | проректирование автоматика, монтажная часть / заявка | 1d? | 2024-03-26 09:00 | 2024-03-26 18:00 | 2089 |  | 753.59d | 0d | start no earlier than 2024-03-22 09:00 | Домоводов К | 8h |  |
| 2091 | 6.17.3 | поставка оборудования | 20d | 2024-03-27 09:00 | 2024-04-23 18:00 | 2090 |  | 753.59d | 0d | start no earlier than 2024-03-22 09:00 | Мультан | 160h |  |
| 2092 | 6.17.4 | монтаж электрика | 1d? | 2024-04-24 09:00 | 2024-04-24 18:00 | 2091 |  | 753.59d | 0d | start no earlier than 2024-03-22 09:00 | Некрасов А | 8h |  |
| 2093 | 6.17.5 | монтаж трубопровод | 1d? | 2024-04-25 09:00 | 2024-04-25 18:00 | 2092 |  | 753.59d | 0d | start no earlier than 2024-03-22 09:00 | Некрасов А | 8h |  |
| 2094 | 6.17.6 | монтаж автоматика | 1d? | 2024-04-26 09:00 | 2024-04-26 18:00 | 2093 |  | 753.59d |  | start no earlier than 2024-03-22 09:00 | Некрасов А | 8h |  |
| 2095 | 6.18 | **установить форсунки на подачу жир и гидролизат** | 106.38d | 2024-03-26 09:00 A | 2024-08-21 12:00 A |  | 100% |  |  |  |  | 187h | 187h |
| 2096 | 6.18.1 | выбор тип форсунок, заявка | 1d | 2024-03-26 09:00 A | 2024-03-26 18:00 A |  | 100% |  |  | start no earlier than 2024-03-26 09:00 | Домоводов К | 8h | 8h |
| 2097 | 6.18.2 | проректирование / заявка на пневматику и электрику для управления форсунками | 1d | 2024-03-27 09:00 A | 2024-03-27 18:00 A | 2096 | 100% |  |  | start no earlier than 2024-03-22 09:00 | Домоводов К | 8h | 8h |
| 2098 | 6.18.3 | тех решение / чертеж крепления форсунок | 1d | 2024-03-28 09:00 A | 2024-03-28 18:00 A | 2097 | 100% |  |  | start no earlier than 2024-03-22 09:00 | Домоводов К | 8h | 8h |
| 2099 | 6.18.4 | доставка | 20d | 2024-03-29 09:00 A | 2024-04-25 18:00 A | 2096, 2098 | 100% |  |  | start no earlier than 2024-03-22 09:00 | Мультан | 160h | 160h |
| 2100 | 6.18.5 | монтаж механника | 2h | 2024-08-21 09:00 A | 2024-08-21 11:00 A | 2099 | 100% |  |  | start no earlier than 2024-08-21 09:00 | Тимофеев В | 2h | 2h |
| 2101 | 6.18.6 | монтаж пневматика | 1h | 2024-08-21 11:00 A | 2024-08-21 12:00 A | 2100 | 100% |  |  | start no earlier than 2024-03-22 09:00 | Тимофеев В | 1h | 1h |
| 2102 | 6.19 | **модернизация откидной воронка загрузки в барабан дрожировки** | 10.62d | 2024-05-14 09:00 A | 2024-05-28 15:00 A |  | 100% |  |  |  |  | 89h | 89h |
| 2103 | 6.19.1 | составить эскиз / заказ шарниры (при остановке экструдера) | 1h | 2024-05-14 09:00 A | 2024-05-14 10:00 A |  | 100% |  |  | start no earlier than 2024-05-14 09:00 | Шуранов Ю | 1h | 1h |
| 2104 | 6.19.2 | доставка | 10d | 2024-05-14 10:00 A | 2024-05-28 10:00 A | 2103 | 100% |  |  | start no earlier than 2024-03-14 09:00 | Мультан | 80h | 80h |
| 2105 | 6.19.3 | монгтаж | 4h | 2024-05-28 10:00 A | 2024-05-28 15:00 A | 2104 | 100% |  |  | start no earlier than 2024-05-14 09:00 | Макаревич А; Некрасов А | 8h | 8h |
| 2106 | 6.20 | модернизация ножевого узла | 1d? | 2023-12-28 09:00 | 2023-12-28 18:00 |  |  | 839.59d |  | start no earlier than 2023-12-28 09:00 |  |  |  |

| ID | WBS | Task | Duration | Start | Finish | Predecessors | Complete | Remaining | Total slack | Free slack | Constraint | Resources | Work | Actual work |
| --- | --- | --- | --- | --- | --- | --- | --- | --- | --- | --- | --- | --- | --- | --- |
| 2107 | 6.21 | **модернизация дозации воды в прекондиционер** | 0.62d | 2023-12-25 09:00 A | 2023-12-25 15:00 A |  | 100% |  |  |  |  |  | 5h | 5h |
| 2108 | 6.21.1 | установить балансировочный кран 2 линия | 1h | 2023-12-25 09:00 A | 2023-12-25 10:00 A |  | 100% |  |  |  | start no earlier than 2023-12-25 09:00 | Дедов В | 1h | 1h |
| 2109 | 6.21.2 | установить расходомер 2 линия | 2h | 2023-12-25 10:00 A | 2023-12-25 12:00 A | 2108 | 100% |  |  |  | start no earlier than 2023-12-20 09:00 | Дедов В | 2h | 2h |
| 2110 | 6.21.3 | установить расходомер 2 линия | 2h | 2023-12-25 12:00 A | 2023-12-25 15:00 A | 2109 | 100% |  |  |  | start no earlier than 2023-12-20 09:00 | Дедов В | 2h | 2h |
| 2111 | 6.22 | **заменить шланг на высоктемпературный на жир** | 1.62d? | 2024-05-14 09:00 A | 2024-05-15 15:00 A |  | 100% |  |  |  |  |  | 13h | 13h |
| 2112 | 6.22.1 | заявка / подбор | 1h | 2024-05-14 09:00 A | 2024-05-14 10:00 A |  | 100% |  |  |  | start no earlier than 2024-05-14 09:00 | Шуранов Ю | 1h | 1h |
| 2113 | 6.22.2 | доставка | 1d? | 2024-05-14 10:00 A | 2024-05-15 10:00 A | 2112 | 100% |  |  |  | start no earlier than 2023-12-13 08:00 | Малинина М | 8h | 8h |
| 2114 | 6.22.3 | замена | 4h | 2024-05-15 10:00 A | 2024-05-15 15:00 A | 2113 | 100% |  |  |  | start no earlier than 2024-01-15 09:00 | Тимофеев В | 4h | 4h |
| 2115 | 6.23 | **тепловая защита электромоторов мехнизмов** | 108.75d | 2023-12-28 09:00 A | 2024-05-28 16:00 |  | 2% | 106.58d | 731.84d |  |  |  | 100h | 2h |
| 2116 | 6.23.1 | **составить список эл моторов (нужен ток ) без теплового реле - от вибросита - до упаковки вся технология** | 75.25d | 2024-01-30 09:00 A | 2024-05-14 11:00 |  | 17% | 62.71d | 742.34d |  |  |  | 12h | 2h |
| 2117 | 6.23.1.1 | 5 цех | 2h | 2024-01-30 09:00 A | 2024-01-30 11:00 A |  | 100% |  |  |  | start no earlier than 2024-01-30 09:00 | Дедов В | 2h | 2h |
| 2118 | 6.23.1.2 | 1 цех | 4h | 2024-01-30 09:00 | 2024-01-30 13:00 |  |  |  | 817.09d |  | start no earlier than 2024-01-30 09:00 | Дедов В | 4h |  |
| 2119 | 6.23.1.3 | 2 цех | 4h | 2024-01-30 09:00 | 2024-01-30 13:00 |  |  |  | 817.09d |  | start no earlier than 2024-01-30 09:00 | Дедов В | 4h |  |
| 2120 | 6.23.1.4 | заполнитьт таблицу для заявки место-двиг-ток | 2h | 2024-05-14 09:00 | 2024-05-14 11:00 |  |  |  | 742.34d |  | start no earlier than 2024-05-14 09:00 | Шуранов Ю | 2h |  |
| 2121 | 6.23.2 | переписать список мотор-редукторов | 2h | 2023-12-28 09:00 | 2023-12-28 11:00 |  |  |  | 828.59d | 96.75d | start no earlier than 2023-12-28 09:00 | Дедов В | 2h |  |
| 2122 | 6.23.3 | заявка тепл реле | 2h | 2024-05-14 09:00 | 2024-05-14 11:00 | 2121FS+1d |  |  | 731.84d | 0d | start no earlier than 2024-05-14 09:00 | Шуранов Ю | 2h |  |
| 2123 | 6.23.4 | дост авка | 10d | 2024-05-14 11:00 | 2024-05-28 11:00 | 2122 |  |  | 731.84d | 0d | start no earlier than 2023-12-13 08:00 | Малинина М | 80h |  |
| 2124 | 6.23.5 | монтаж конвейер 2ц | 2h | 2024-05-28 11:00 | 2024-05-28 13:00 | 2122, 2123 |  |  | 731.84d | 0d | start no earlier than 2024-01-19 09:00 | Дедов В | 2h |  |
| 2125 | 6.23.6 | монтаж составить список | 2h | 2024-05-28 14:00 | 2024-05-28 16:00 | 2124 |  |  | 731.84d |  | start no earlier than 2023-12-13 08:00 | Домоводов К | 2h |  |
| 2126 | 6.24 | **устройство контроля уровня сырья в большом бункере** | 14.03d | 2023-08-16 09:00 A | 2023-09-05 09:15 |  |  | 14d | 922.56d |  |  |  | 192.25h | 0.25h |
| 2127 | 6.24.1 | заявка на датчик | 15min | 2023-08-16 09:00 A | 2023-08-16 09:15 A |  | 100% |  |  |  | start no earlier than 2023-08-14 09:00 | Лобанов И | 0.25h | 0.25h |
| 2128 | 6.24.2 | доставка | 10d | 2023-08-16 09:15 | 2023-08-30 09:15 | 2127 |  |  | 922.56d | 0d | start no earlier than 2023-03-10 09:00 | Малинина М; Домоводов К | 160h |  |
| 2129 | 6.24.3 | выполнение монажных работ | 4d | 2023-08-30 09:15 | 2023-09-05 09:15 | 2128 |  |  | 922.56d |  | start no earlier than 2023-03-10 09:00 | Подрядчик | 32h |  |
| 2130 | 6.25 | **конвейер с охладителя регулировка ленты - модернизация** | 6.25d | 2024-05-14 09:00 A | 2024-05-22 11:00 A |  | 100% |  |  |  |  |  | 50h | 50h |
| 2131 | 6.25.1 | выбор и заявка натяжные буксы | 2h | 2024-05-14 09:00 A | 2024-05-14 11:00 A |  | 100% |  |  |  | start no earlier than 2024-05-14 09:00 | Шуранов Ю | 2h | 2h |
| 2132 | 6.25.2 | доставка | 5d | 2024-05-14 11:00 A | 2024-05-21 11:00 A | 2131 | 100% |  |  |  | start no earlier than 2023-10-30 09:00 | Малинина М | 40h | 40h |
| 2133 | 6.25.3 | монтаж | 1d | 2024-05-21 11:00 A | 2024-05-22 11:00 A | 2132 | 100% |  |  |  | start no earlier than 2023-12-01 09:00 | Тимофеев В | 8h | 8h |

| ID | WBS | Task | Duration | Start | Finish | Predecessors | Complete | Remaining | Actual start | Total slack | Free slack | Constraint | Resources | Work | Actual work |
| --- | --- | --- | --- | --- | --- | --- | --- | --- | --- | --- | --- | --- | --- | --- | --- |
| 2134 | 6.26 | **прекондиционер забивается отслоением слипшегося сырья** | 204d? | 2023-08-03 09:00 | 2024-05-14 18:00 |  |  |  |  | 0d |  |  |  | 24h |  |
| 2135 | 6.26.1 | **решение тех совет** | 1d? | 2023-08-03 09:00 | 2023-08-03 18:00 |  |  |  |  |  |  |  |  | 24h |  |
| 2136 | 6.26.1.1 | вар1 - доп лопатки на выходе | 1d? | 2024-05-14 09:00 | 2024-05-14 18:00 |  |  |  |  | 741.59d |  | start no earlier than 2024-05-14 09:00 | Шуранов Ю | 8h |  |
| 2137 | 6.26.1.2 | вар 2 - вертикальные ворошители | 1d? | 2024-05-14 09:00 | 2024-05-14 18:00 |  |  |  |  | 741.59d |  | start no earlier than 2024-05-14 09:00 | Шуранов Ю | 8h |  |
| 2138 | 6.26.1.3 | вар 3 - подача пара | 1d? | 2024-05-14 09:00 | 2024-05-14 18:00 |  |  |  |  | 741.59d |  | start no earlier than 2024-05-14 09:00 | Шуранов Ю | 8h |  |
| 2139 | 6.27 | **фильтры на баки жиров перед насосами** | 439.12d | 2023-07-20 09:00 A | 2025-03-26 10:00 A |  | 100% |  |  |  |  |  |  | 4.75h | 4.75h |
| 2140 | 6.27.1 | утвердить тех решение | 1h | 2023-07-20 09:00 A | 2023-07-20 10:00 A |  | 100% |  |  |  |  | start no earlier than 2023-07-20 09:00 | Лобанов И; Домоводов К; Сапелин С | 3h | 3h |
| 2141 | 6.27.2 | купить сетку в корпусе | 30min | 2024-05-14 09:00 A | 2024-05-14 09:30 A |  | 100% |  |  |  |  | start no earlier than 2024-05-14 09:00 | Шуранов Ю | 0.5h | 0.5h |
| 2142 | 6.27.3 | купить 1/2 муфта для установки фитингов | 15min | 2025-03-26 09:00 A | 2025-03-26 09:15 A |  | 100% |  |  |  |  | start no earlier than 2025-03-26 08:00 | Шуранов Ю | 0.25h | 0.25h |
| 2143 | 6.27.4 | проверка фитингов | 1h | 2025-03-26 09:00 A | 2025-03-26 10:00 A |  | 100% |  |  |  |  | start no earlier than 2025-03-26 08:00 | Зорькин В | 1h | 1h |
| 2144 | 6.28 | **защита редутора шнеков при отказе маслянного насоса** | 20.12d? | 2023-08-02 09:00 | 2023-08-30 10:00 |  | 33% | 13.52d? | 2023-07-28 09:00 |  |  |  |  | 126.5h | 41.5h |
| 2145 | 6.28.1 | поиск фитинг для замера реле давления | 30min | 2023-07-28 09:00 A | 2023-07-28 09:30 A |  | 100% |  |  |  |  | start no earlier than 2023-07-28 09:00 | Тимофеев В | 0.5h | 0.5h |
| 2146 | 6.28.2 | заявка на фитинг | 1h | 2023-07-31 09:00 A | 2023-07-31 10:00 A | 2145 | 100% |  |  |  |  | start no earlier than 2023-07-31 09:00 | Лобанов И | 1h | 1h |
| 2147 | 6.28.3 | доставка | 5d | 2023-07-31 10:00 A | 2023-08-07 10:00 A | 2146 | 100% |  |  |  |  | start no earlier than 2023-07-31 09:00 | Малинина М | 40h | 40h |
| 2148 | 6.28.4 | заявка реле потока 1/2 или 3/4 | 1h | 2026-03-19 09:00 | 2026-03-19 10:00 |  |  |  |  | 249.97d | 0d | start no earlier than 2026-03-19 09:00 | Шуранов Ю | 1h |  |
| 2149 | 6.28.5 | доставка | 10d | 2026-03-19 10:00 | 2026-04-02 10:00 | 2148 |  |  |  | 249.97d | 1.88d | start no earlier than 2026-03-12 08:00 | Карабанов | 80h |  |
| 2150 | 6.28.6 | монтаж гидравлика | 2h | 2026-04-06 09:00 | 2026-04-06 11:00 | 2149 |  |  |  | 248.09d | 0d | start no earlier than 2026-04-06 09:00 | Тимофеев В | 2h |  |
| 2151 | 6.28.7 | монтаж электрика схема защиты + привязка к частотному приводу | 2h | 2026-04-06 11:00 | 2026-04-06 13:00 | 2150 |  |  |  | 248.09d |  | start no earlier than 2023-07-20 09:00 | Тимофеев В | 2h |  |
| 2152 | 6.29 | **подача сырья в упаковщки 1 цех** | 199.5d? | 2023-06-07 09:00 A | 2024-03-12 13:00 |  | 12% | 175.32d? |  | 787.09d |  |  |  | 37h | 8h |
| 2153 | 6.29.1 | испытание пневмотранспорта напорная магистраль | 4h | 2024-03-12 09:00 A | 2024-03-12 13:00 A |  | 100% |  |  |  |  | start no earlier than 2024-03-12 09:00 | Бобренок В; Некрасов А | 8h | 8h |
| 2154 | 6.29.2 | технологическая схема подачи продукта в упаковщики | 1d? | 2023-06-19 09:00 | 2023-06-19 18:00 |  |  |  |  | 977.59d |  | start no earlier than 2023-06-19 09:00 | Технолог | 8h |  |
| 2155 | 6.29.3 | поиск / запрорс цен на диверторы | 2h | 2023-06-07 09:00 | 2023-06-07 11:00 |  |  |  |  | 983.97d | 0d | start no earlier than 2023-06-07 09:00 | Домоводов К | 2h |  |
| 2156 | 6.29.4 | поиск / запрос цены на эжекторный приемник | 2h | 2023-06-07 11:00 | 2023-06-07 13:00 | 2155 |  |  |  | 983.97d | 0d | start no earlier than 2023-05-10 08:00 | Домоводов К | 2h |  |
| 2157 | 6.29.5 | расчет трассы | 2d | 2023-06-07 14:00 | 2023-06-09 13:00 | 2156 |  |  |  | 983.97d | 0d | start no earlier than 2023-05-10 08:00 | Домоводов К | 16h |  |
| 2158 | 6.29.6 | подбор приобритение вентилятора | 1h | 2023-06-09 14:00 | 2023-06-09 15:00 | 2157 |  |  |  | 983.97d |  | start no earlier than 2023-04-27 09:00 | Домоводов К | 1h |  |

| ID | WBS | Task | Type | Duration | Start | Finish | Predecessors | Complete | Remaining | Total slack | Free slack | Constraint | Resources | Work | Actual work |
| --- | --- | --- | --- | --- | --- | --- | --- | --- | --- | --- | --- | --- | --- | --- | --- |
| 2159 | 6.30 | **защита тэн печи при отключении вентиляторов** |  | 160.25d? | 2023-06-09 09:00 | 2024-01-19 11:00 |  |  |  | 824.34d |  |  |  | 66h |  |
| 2160 | 6.30.1 | устиановить защиту на пускателе 380 1 линия |  | 2h | 2024-01-19 09:00 | 2024-01-19 11:00 |  |  |  | 824.34d |  | start no earlier than 2024-01-19 09:00 | Тимофеев В | 2h |  |
| 2161 | 6.30.2 | составить схему защиты |  | 1d? | 2023-06-09 09:00 | 2023-06-09 18:00 |  |  |  | 976.59d | 0d | start no earlier than 2023-06-09 09:00 | Домоводов К | 8h |  |
| 2162 | 6.30.3 | заявка |  | 1d? | 2023-06-12 09:00 | 2023-06-12 18:00 | 2161 |  |  | 976.59d | 0d | start no earlier than 2023-04-25 09:00 | Домоводов К | 8h |  |
| 2163 | 6.30.4 | оплата поставка |  | 5d | 2023-06-13 09:00 | 2023-06-19 18:00 | 2162 |  |  | 976.59d | 5d | start no earlier than 2023-05-02 09:00 | Малинина М | 40h |  |
| 2164 | 6.30.5 | сборка и монтаж |  | 1d? | 2023-06-27 09:00 | 2023-06-27 18:00 | 2163 |  |  | 971.59d |  | start no earlier than 2023-06-27 09:00 | Бобренок В | 8h |  |
| 2165 | 6.31 | Настройка даты на пробнике, нужно приподнять на 3-5 мм (ждем решение технологов, информация поменялась, читать письмо от 01.09.2026) |  | 3h | 2026-09-03 09:00 A | 2026-09-03 12:00 A |  | 100% |  |  |  | start no earlier than 2026-09-03 09:00 | Тимофеев В | 3h | 3h |
| 2166 | 7 | **техника** |  | 636.03d? | 2024-05-14 09:00 A | 2026-10-13 09:15 |  | 98% | 14.86d? | 106.56d |  |  |  | 52.5h | 51.25h |
| 2167 | 7.1 | не заводится TRF, сломана шпилька колесо. Контроль приезда приемка работ |  | 1h | 2026-08-17 09:00 A | 2026-08-17 10:00 A |  | 100% |  |  |  | start no earlier than 2026-08-17 09:00 | Шуранов Ю | 1h | 1h |
| 2168 | 7.2 | **капремонт погрузчика коматсу короткий** |  | 49.03d | 2026-08-13 09:00 A | 2026-10-13 09:15 |  | 91% | 4.46d | 106.56d |  |  |  | 2.75h | 2.5h |
| 2169 | 7.2.1 | заявка получить цену в тракресурс |  | 15min | 2026-08-13 09:00 A | 2026-08-13 09:15 A |  | 100% |  |  |  | start no earlier than 2026-08-13 09:00 | Домоводов К | 0.25h | 0.25h |
| 2170 | 7.2.2 | заявка получить цену в форклифт |  | 15min | 2026-08-13 09:15 A | 2026-08-13 09:30 A | 2169 | 100% |  |  |  | start no earlier than 2026-08-13 09:00 | Домоводов К | 0.25h | 0.25h |
| 2171 | 7.2.3 | получить КП 2 | milestone | 0d | 2026-08-17 09:00 A | 2026-08-17 09:00 A |  | 100% |  |  |  | start no earlier than 2026-08-17 09:00 | Домоводов К |  |  |
| 2172 | 7.2.4 | решение о дате | milestone | 0d | 2026-09-07 09:00 A | 2026-09-07 09:00 A | 2170FS+1d | 100% |  |  |  | start no earlier than 2026-09-07 09:00 | Домоводов К |  |  |
| 2173 | 7.2.5 | орг отправить погрузчик в ремонт / составить акт |  | 2h | 2026-09-01 09:00 A | 2026-09-01 11:00 A | 2170, 2172FS+1d | 100% |  |  |  | start no earlier than 2026-08-26 09:00 | Шуранов Ю | 2h | 2h |
| 2174 | 7.2.6 | контроль сроков ремонта |  | 15min | 2026-10-13 09:00 | 2026-10-13 09:15 | 2173FS+20d |  |  | 106.56d |  | start no earlier than 2026-10-13 09:00 | Зорькин В | 0.25h |  |
| 2175 | 7.3 | заказать по комплекту воздушных фильтров для погрузчиков |  | 1h | 2026-08-18 09:00 A | 2026-08-18 10:00 A |  | 100% |  |  |  | start no earlier than 2026-08-18 09:00 | Шуранов Ю | 1h | 1h |
| 2176 | 7.4 | провкрить моточасы для проведения ТО |  | 1h | 2026-08-18 09:00 A | 2026-08-18 10:00 A |  | 100% |  |  |  | start no earlier than 2026-08-18 09:00 | Шуранов Ю | 1h | 1h |
| 2177 | 7.5 | не заводиться trf погрузчик, посмотреть подачу топлива |  | 1h | 2026-05-25 08:00 A | 2026-05-25 10:00 A |  | 100% |  |  |  | start no earlier than 2026-05-25 08:00 | Тимофеев В; Шуранов Ю | 2h | 2h |
| 2178 | 7.6 | ТО карбюратора ТРФ организовать |  | 1h | 2026-05-27 09:00 A | 2026-05-27 10:00 A |  | 100% |  |  |  | start no earlier than 2026-05-27 09:00 | Шуранов Ю | 1h | 1h |
| 2179 | 7.7 | ренгулировка ремня погрузчик желтый №209490 контроль |  | 1h | 2026-05-14 09:00 A | 2026-05-14 10:00 A |  | 100% |  |  |  | start no earlier than 2026-05-14 09:00 | Шуранов Ю | 1h | 1h |
| 2180 | 7.8 | ремонт генераторов -найти фирму |  | 1d? | 2026-05-07 09:00 A | 2026-05-07 18:00 A |  | 100% |  |  |  | start no earlier than 2026-05-07 09:00 | Шуранов Ю | 8h | 8h |
| 2181 | 7.9 | греется мотор сменный погрузчик (вероятно помпа). Орг визит |  | 15min | 2026-04-27 09:00 A | 2026-04-27 09:15 A |  | 100% |  |  |  | start no earlier than 2026-04-27 08:00 | Шуранов Ю | 0.25h | 0.25h |
| 2182 | 7.10 | установить вентиляторы на погрузчики |  | 2h | 2026-04-27 08:00 A | 2026-04-27 11:00 A |  | 100% |  |  |  | start no earlier than 2026-04-27 08:00 | Тимофеев В | 2h | 2h |
| 2183 | 7.11 | заменить шланги гидравлики погрузчик ТРФ |  | 1d? | 2026-04-21 09:00 A | 2026-04-21 18:00 A |  | 100% |  |  |  | start no earlier than 2026-04-21 09:00 |  |  |  |
| 2184 | 7.12 | пригласить тракресурс |  | 1h | 2026-04-21 09:00 A | 2026-04-21 10:00 A |  | 100% |  |  |  | start no earlier than 2026-04-21 09:00 | Шуранов Ю | 1h | 1h |
| 2185 | 7.13 | проварить ковш трактора в слесарке |  | 4h | 2026-03-24 08:00 A | 2026-03-24 13:00 A |  | 100% |  |  |  | start no earlier than 2026-03-24 08:00 | Бобренок В | 4h | 4h |
| 2186 | 7.14 | контроль доставки / приемка погрузчи коматсу |  | 1h | 2026-03-13 09:00 A | 2026-03-13 10:00 A |  | 100% |  |  |  | start no earlier than 2026-03-13 09:00 | Шуранов Ю | 1h | 1h |
| 2187 | 7.15 | ремонт штабелер 5 цех ролик и опрное колесо. Контроль |  | 30min | 2026-03-13 09:00 A | 2026-03-13 09:30 A |  | 100% |  |  |  | start no earlier than 2026-03-13 09:00 | Шуранов Ю | 0.5h | 0.5h |
| 2188 | 7.16 | ремонт ковш трактор |  | 6h | 2026-03-03 09:00 A | 2026-03-03 16:00 A |  | 100% |  |  |  | start no earlier than 2026-03-03 08:00 | Некрасов А; Труфанов А | 12h | 12h |

| ID | WBS | Task | Type | Duration | Start | Finish | Predecessors | Complete | Remaining | Total slack | Constraint | Resources | Work | Actual work |
| --- | --- | --- | --- | --- | --- | --- | --- | --- | --- | --- | --- | --- | --- | --- |
| 2189 | 7.17 | **ремонт цепи желтый вилочный + ручник** |  | 0.16d | 2025-07-28 09:00 A | 2025-07-28 10:15 A |  | 100% |  |  |  |  | 1.25h | 1.25h |
| 2190 | 7.17.1 | контроль даты визита |  | 15min | 2025-07-28 09:00 A | 2025-07-28 09:15 A |  | 100% |  |  | start no earlier than 2025-07-28 09:00 | Шуранов Ю | 0.25h | 0.25h |
| 2191 | 7.17.2 | ремонт контроль \принять работы |  | 1h | 2025-07-28 09:15 A | 2025-07-28 10:15 A | 2190 | 100% |  |  | start no earlier than 2025-07-23 09:00 | Шуранов Ю | 1h | 1h |
| 2192 | 7.18 | реморнт педаль газ на 3d принтере |  | 1h | 2025-07-23 09:00 A | 2025-07-23 10:00 A |  | 100% |  |  | start no earlier than 2025-07-23 09:00 | Шуранов Ю | 1h | 1h |
| 2193 | 7.19 | реморнт педаль газ на 3d принтере |  | 1h | 2026-09-01 09:00 | 2026-09-01 10:00 |  |  |  | 142.47d | start no earlier than 2026-09-01 09:00 | Домоводов К | 1h |  |
| 2194 | 7.20 | ТО штабелеры кайтымовская орг |  | 1h | 2025-07-23 09:00 A | 2025-07-23 10:00 A |  | 100% |  |  | start no earlier than 2025-07-23 09:00 | Шуранов Ю | 1h | 1h |
| 2195 | 7.21 | заявка доводчик двери желт коматсу |  | 15min | 2024-05-14 09:00 A | 2024-05-14 09:15 A |  | 100% |  |  | start no earlier than 2024-05-14 09:00 | Шуранов Ю | 0.25h | 0.25h |
| 2196 | 7.22 | **ошибка 02а22 штабелер PS16N 414** |  | 0.12d | 2024-05-14 09:00 A | 2024-05-14 10:00 A |  | 100% |  |  |  |  | 1h | 1h |
| 2197 | 7.22.1 | составить рекламацию / вызов специалистов |  | 1h | 2024-05-14 09:00 A | 2024-05-14 10:00 A |  | 100% |  |  | start no earlier than 2024-05-14 09:00 | Шуранов Ю | 1h | 1h |
| 2198 | 7.23 | **неисправна кнопка стоп штабелер 5 цех** |  | 0.19d | 2024-05-14 09:00 A | 2024-05-14 10:30 A |  | 100% |  |  |  |  | 1.5h | 1.5h |
| 2199 | 7.23.1 | орг работы по замене калеса штабелера |  | 1h | 2024-05-14 09:00 A | 2024-05-14 10:00 A |  | 100% |  |  | start no earlier than 2024-05-14 09:00 | Шуранов Ю | 1h | 1h |
| 2200 | 7.23.2 | орг забор штабелера на ремонт гидроциондра. Договор с сервисной компанией о дате, обменть штабелер с 2 цеха |  | 30min | 2024-05-14 10:00 A | 2024-05-14 10:30 A | 2199 | 100% |  |  | start no earlier than 2024-05-14 09:00 | Шуранов Ю | 0.5h | 0.5h |
| 2201 | 7.24 | **ремонт стеклоочиститель вилочного** |  | 0.5d | 2024-05-14 09:00 A | 2024-05-14 13:00 A |  | 100% |  |  |  |  | 5h | 5h |
| 2202 | 7.24.1 | осмотр механизма чтто сломалось |  | 4h | 2024-05-14 09:00 A | 2024-05-14 13:00 A |  | 100% |  |  | start no earlier than 2024-05-14 09:00 | Шуранов Ю | 4h | 4h |
| 2203 | 7.24.2 | заявка на покупку стеклоочист |  | 1h | 2024-05-14 09:00 A | 2024-05-14 10:00 A |  | 100% |  |  | start no earlier than 2024-05-14 09:00 | Шуранов Ю | 1h | 1h |
| 2204 | 7.25 | купить ремень на генератор |  | 2h | 2024-05-14 09:00 A | 2024-05-14 11:00 A |  | 100% |  |  | start no earlier than 2024-05-14 09:00 | Шуранов Ю | 2h | 2h |
| 2205 | 8 | **Лаборатория** |  | 0.06d | 2026-04-20 09:00 A | 2026-04-20 09:30 A |  | 100% |  |  |  |  | 1h | 1h |
| 2206 | 8.1 | Отнести старый бульбулятор в архив |  | 30min | 2026-04-20 09:00 A | 2026-04-20 09:30 A |  | 100% |  |  | start no earlier than 2026-04-20 09:00 | Тимофеев В | 0.5h | 0.5h |
| 2207 | 8.2 | Отнести короб от нового бульбулятора тоже в архив |  | 30min | 2026-04-20 09:00 A | 2026-04-20 09:30 A |  | 100% |  |  | start no earlier than 2026-04-20 09:00 | Тимофеев В | 0.5h | 0.5h |
| 2208 | 9 | **слесарное помещение** |  | 78.88d? | 2026-06-11 09:00 A | 2026-09-22 17:00 |  | 88% | 9.17d? | 121.72d |  |  | 26.5h | 19h |
| 2209 | 9.1 | **уборка и сортировка. Приготовить, дневные проверят и продолжат** |  | 1.88d | 2026-09-21 09:00 A | 2026-09-22 17:00 |  | 78% | 0.42d | 121.72d |  |  | 13h | 7h |
| 2210 | 9.1.1 | освободить стеллаж для оперативного хранения с ФИО |  | 1h | 2026-09-22 16:00 A | 2026-09-22 17:00 A | 2213 | 100% |  |  | start no earlier than 2026-09-22 09:00 | Макаревич А | 1h | 1h |
| 2211 | 9.1.2 | куча №1 - не годное на выброс |  | 2h | 2026-09-22 09:00 A | 2026-09-22 11:00 A |  | 100% |  |  | start no earlier than 2026-09-22 09:00 | Макаревич А | 2h | 2h |
| 2212 | 9.1.3 | куча №2 - годное, но хранить нужно на дальних складах |  | 2h | 2026-09-22 11:00 A | 2026-09-22 13:00 A | 2211 | 100% |  |  | start no earlier than 2026-09-21 09:00 | Макаревич А | 2h | 2h |
| 2213 | 9.1.4 | куча №3 - не понятно где хранить. |  | 2h | 2026-09-22 14:00 A | 2026-09-22 16:00 A | 2212 | 100% |  |  | start no earlier than 2026-09-18 08:00 | Макаревич А | 2h | 2h |
| 2214 | 9.1.5 | сортировка и перемещение мусор / металлолм/ дальние стеллажи |  | 2h | 2026-09-21 09:00 | 2026-09-21 11:00 |  |  |  | 123.34d | start no earlier than 2026-09-21 09:00 | Некрасов А; Тимофеев В; Труфанов А | 6h |  |
| 2215 | 9.2 | отвезти паллет возле слесарки в синий | manual | 1h | 2026-08-30 09:00 A | 2026-08-30 10:00 A |  | 100% |  |  | start no earlier than 2026-08-30 09:00 | Бундин В | 1h | 1h |
| 2216 | 9.3 | заварить хомут от деко 5 ц. |  | 2h | 2026-07-02 09:00 A | 2026-07-02 11:00 A |  | 100% |  |  | start no earlier than 2026-07-02 09:00 | Тимофеев В | 2h | 2h |
| 2217 | 9.4 | доставить временно наш компрессор на 3 склад для обдува погрузчиков | manual | 1h | 2026-06-29 09:00 A | 2026-06-29 10:00 A |  | 100% |  |  | start no earlier than 2026-06-29 09:00 | Тимофеев В | 1h | 1h |
| 2218 | 9.5 | ремонт 2-х ручных запайщиков- запчасти на складе (нагревательные блоки, тены) | manual | 2h | 2026-06-27 09:00 A | 2026-06-27 11:00 A |  | 100% |  |  | start no earlier than 2026-06-27 09:00 | Дедов В | 2h | 2h |
| 2219 | 9.6 | оставляем порядок после своей смены в слесарке |  | 0.5h | 2026-06-12 09:00 | 2026-06-12 09:30 |  |  |  | 199.53d | start no earlier than 2026-06-12 09:00 | Дедов В; Бобренок В; Бундин В | 1.5h |  |
| 2220 | 9.7 | Проверка напольных весов, почему не работают, возможно отошел контакт |  | 2h | 2026-07-24 09:00 A | 2026-07-24 11:00 A |  | 100% |  |  | start no earlier than 2026-07-24 09:00 | Бундин В | 2h | 2h |
| 2221 | 9.8 | уборка |  | 0.25d? | 2026-06-11 09:00 A | 2026-06-11 11:00 A |  | 100% |  |  |  | Труфанов А | 2h | 2h |
| 2222 | 9.9 | проверить весы настольные (показывают вес больше, если получится калибровать) |  | 2h | 2026-06-11 09:00 A | 2026-06-11 11:00 A |  | 100% |  |  | start no earlier than 2026-06-11 09:00 | Дедов В | 2h | 2h |

| ID | WBS | Task | Type | Duration | Start | Finish | Predecessors | Complete | Remaining | Total slack | Free slack | Constraint | Resources | Work | Actual work |
| --- | --- | --- | --- | --- | --- | --- | --- | --- | --- | --- | --- | --- | --- | --- | --- |
| 2223 | 10 | **ЗИП ремонт** |  | 641.25d? | 2024-05-09 09:00 A | 2026-10-15 11:00 |  | 54% | 297.98d? | 104.34d |  |  |  | 834.67h | 397.33h |
| 2224 | 10.1 | Собрать редуктор питателя, который разобранный на верстаке |  | 2h | 2026-09-24 09:00 | 2026-09-24 11:00 |  |  |  | 120.34d |  | start no earlier than 2026-09-24 08:00 | Дедов В | 2h |  |
| 2225 | 10.2 | **Дефектовка двигателя от питателя прекондиционера/ прозвонить (возможно подготовить для сдачи на перемотку)** |  | 8.25d | 2026-09-04 09:00 A | 2026-09-13 11:00 |  | 50% | 4.12d | 131.34d |  |  |  | 4h | 2h |
| 2226 | 10.2.1 | разбрка тест |  | 1h | 2026-09-04 09:00 A | 2026-09-04 10:00 A |  | 100% |  |  |  | start no earlier than 2026-09-04 09:00 | Бобренок В | 1h | 1h |
| 2227 | 10.2.2 | тест 2 с редуктором |  | 1h | 2026-09-08 09:00 A | 2026-09-08 10:00 A |  | 100% |  |  |  | start no earlier than 2026-09-08 08:00 | Тимофеев В | 1h | 1h |
| 2228 | 10.2.3 | разборка ревизия |  | 2h | 2026-09-13 09:00 | 2026-09-13 11:00 |  |  |  | 131.34d |  | start no earlier than 2026-09-13 09:00 | Макаревич А | 2h |  |
| 2229 | 10.3 | **ремонт редутор печи №?** |  | 26.31d | 2026-09-05 09:00 A | 2026-10-05 11:30 |  | 52% | 12.53d | 112.28d |  |  |  | 5.25h | 2.75h |
| 2230 | 10.3.1 | дефектовка редуктора печи 2 цех, лежит в слесарке |  | 2h | 2026-09-05 09:00 A | 2026-09-05 11:00 A |  | 100% |  |  |  | start no earlier than 2026-09-05 09:00 | Макаревич А | 2h | 2h |
| 2231 | 10.3.2 | возможно ли установить тавотницу на подшипник червяка? |  | 15min | 2026-09-10 09:00 A | 2026-09-10 09:15 A |  | 100% |  |  |  | start no earlier than 2026-09-10 09:00 | Тимофеев В | 0.25h | 0.25h |
| 2232 | 10.3.3 | заказ шестерни червя в ЗИП - отправить курьера |  | 15min | 2026-09-09 09:00 A | 2026-09-09 09:15 A | 2230 | 100% |  |  |  | start no earlier than 2026-09-09 09:00 | Зорькин В | 0.25h | 0.25h |
| 2233 | 10.3.4 | контроль изг шетесиерен |  | 15min | 2026-09-19 09:15 A | 2026-09-19 09:30 A | 2232FS+10d | 100% |  |  |  | start no earlier than 2026-09-08 08:00 | Зорькин В | 0.25h | 0.25h |
| 2234 | 10.3.5 | заказ шестерни червя в ЗИП - отправить курьера |  | 15min | 2026-09-21 09:00 | 2026-09-21 09:15 | 2230 |  |  | 112.28d | 0d | start no earlier than 2026-09-21 09:00 | Зорькин В | 0.25h |  |
| 2235 | 10.3.6 | контроль изг шетесиерен |  | 15min | 2026-10-02 09:15 | 2026-10-02 09:30 | 2234FS+10d |  |  | 112.28d | 0d | start no earlier than 2026-09-08 08:00 | Зорькин В | 0.25h |  |
| 2236 | 10.3.7 | сборка редутор венец |  | 2h | 2026-10-05 09:30 | 2026-10-05 11:30 | 2233FS+1d, 2235FS+1d |  |  | 112.28d |  | start no earlier than 2026-09-20 09:00 | Макаревич А | 2h |  |
| 2237 | 10.4 | ремонт оборотные сетки-поддоны от печи от 2ц |  | 2h | 2026-09-13 09:00 | 2026-09-13 11:00 |  |  |  | 131.34d |  | start no earlier than 2026-09-13 09:00 | Макаревич А | 2h |  |
| 2238 | 10.5 | подготовить электродную группу для 2 цеха |  | 3h | 2026-08-25 09:00 A | 2026-08-25 12:00 A |  | 100% |  |  |  | start no earlier than 2026-08-25 08:00 | Бундин В | 3h | 3h |
| 2239 | 10.6 | пепенос трубы нерж с 3ц на синий склад |  | 1h | 2026-08-24 09:00 | 2026-08-24 10:00 |  |  |  | 148.47d |  | start no earlier than 2026-08-24 09:00 | Некрасов А; Тимофеев В | 2h |  |
| 2240 | 10.7 | ремонт электрод парогенертора для 2ц |  | 4h | 2026-08-18 09:00 A | 2026-08-18 13:00 A |  | 100% |  |  |  | start no earlier than 2026-08-18 09:00 | Бобренок В | 4h | 4h |
| 2241 | 10.8 | перевоз батареи свинец от погрузчика на синий склад |  | 30min | 2026-08-12 09:00 A | 2026-08-12 09:30 A |  | 100% |  |  |  | start no earlier than 2026-08-12 09:00 | Макаревич А | 0.5h | 0.5h |
| 2242 | 10.9 | **заточка ножей** |  | 6.03d | 2026-08-13 09:00 A | 2026-08-21 09:15 A |  | 100% |  |  |  |  |  | 0.5h | 0.5h |
| 2243 | 10.9.1 | разместить ЛТ70 курьеру, отметиь журнал |  | 15min | 2026-08-13 09:00 A | 2026-08-13 09:15 A |  | 100% |  |  |  | start no earlier than 2026-08-13 09:00 | Зорькин В | 0.25h | 0.25h |
| 2244 | 10.9.2 | контроль, орг забрать |  | 15min | 2026-08-21 09:00 A | 2026-08-21 09:15 A |  | 100% |  |  |  | start no earlier than 2026-08-21 09:00 | Шуранов Ю | 0.25h | 0.25h |
| 2245 | 10.10 | **ножевой узел для 1ц** |  | 0.03d | 2026-08-13 09:00 A | 2026-08-13 09:15 A |  | 100% |  |  |  |  |  | 0.25h | 0.25h |
| 2246 | 10.10.1 | контроль поставки |  | 15min | 2026-08-13 09:00 A | 2026-08-13 09:15 A |  | 100% |  |  |  | start no earlier than 2026-08-13 09:00 | Домоводов К | 0.25h | 0.25h |
| 2247 | 10.11 | подготовить электроды для парогенератора цех 1 |  | 4h | 2026-08-05 08:00 A | 2026-08-05 13:00 A |  | 100% |  |  |  | start no earlier than 2026-08-05 08:00 | Макаревич А | 4h | 4h |
| 2248 | 10.12 | восстановить голову насоса гидрализата (в слесарке) подписать | manual | 2h | 2026-08-01 09:00 A | 2026-08-01 11:00 A |  | 100% |  |  |  | start no earlier than 2026-08-01 09:00 | Бундин В | 2h | 2h |

| ID | WBS | Task | Type | Duration | Start | Finish | Predecessors | Complete | Actual start | Actual finish | Constraint | Resources | Work | Actual work |
| --- | --- | --- | --- | --- | --- | --- | --- | --- | --- | --- | --- | --- | --- | --- |
| 2249 | 10.13 | **восстановить сетку спечи (она в слесарке)** |  | 1d? | 2026-08-14 09:00 | 2026-08-14 18:00 |  | 100% | 2026-08-03 09:00 | 2026-08-03 18:00 |  |  | 8h | 8h |
| 2250 | 10.13.1 | заказать сверла по нерж. М5 и М6 |  | 1d? | 2026-08-03 09:00 A | 2026-08-03 18:00 A |  | 100% |  |  | start no earlier than 2026-08-03 08:00 | Шуранов Ю | 8h | 8h |
| 2251 | 10.14 | подготовить антиэлектроды по аналогии с нашими (все на складе) | manual | 5h | 2026-08-01 09:00 A | 2026-08-01 15:00 A |  | 100% |  |  | start no earlier than 2026-08-01 09:00 | Бундин В | 5h | 5h |
| 2252 | 10.15 | подготовить электродную группу для парогенератора |  | 3h | 2026-06-12 09:00 A | 2026-06-12 12:00 A |  | 100% |  |  | start no earlier than 2026-06-12 09:00 | Бундин В | 3h | 3h |
| 2253 | 10.16 | собрать 2 стула для ИТР |  | 2h | 2026-06-07 09:00 A | 2026-06-08 11:00 A |  | 100% |  |  | start no earlier than 2026-06-07 09:00 | Бобренок В | 2h | 2h |
| 2254 | 10.17 | **покрасить швейлеры возле слесарки(грунтовка, затем серый цвет)** |  | 0.25d | 2026-06-12 09:00 A | 2026-06-12 11:00 A |  | 100% |  |  |  | Бобренок В | 4h | 4h |
| 2255 | 10.17.1 | болгаркой убрать сварочные сопли и покрасить |  | 2h | 2026-06-12 09:00 A | 2026-06-12 11:00 A |  | 100% |  |  | start no earlier than 2026-06-12 09:00 | Бундин В | 2h | 2h |
| 2256 | 10.18 | подготовить фильтры для кондиционеров, замена фильтр ткани. Находятся в слесарке | manual | 2h | 2026-06-14 09:00 A | 2026-06-14 11:00 A |  | 100% |  |  | start no earlier than 2026-06-14 09:00 | Бундин В | 2h | 2h |
| 2257 | 10.19 | **заявка на фильеры от 02.06 1ц и 2ц** |  | 7.19d | 2026-06-02 09:00 A | 2026-06-11 10:30 A |  | 100% |  |  |  |  | 4.5h | 4.5h |
| 2258 | 10.19.1 | подготовить чертежи по ТЗ |  | 2h | 2026-06-02 09:00 A | 2026-06-02 11:00 A |  | 100% |  |  | start no earlier than 2026-06-02 09:00 | Домоводов К | 2h | 2h |
| 2259 | 10.19.2 | **партия 1** |  | 6.19d | 2026-06-03 09:00 A | 2026-06-11 10:30 A |  | 100% |  |  |  |  | 1.5h | 1.5h |
| 2260 | 10.19.2.1 | разместить токарю заварка фильер + шлифвка |  | 30min | 2026-06-03 09:00 A | 2026-06-03 09:30 A |  | 100% |  |  | start no earlier than 2026-06-03 08:00 | Шуранов Ю | 0.5h | 0.5h |
| 2261 | 10.19.2.2 | забрать заваренные / разместить на изготовление дюз |  | 30min | 2026-06-07 09:30 A | 2026-06-08 09:30 A | 2260FS+4d | 100% |  |  | start no earlier than 2026-06-03 08:00 | Шуранов Ю | 0.5h | 0.5h |
| 2262 | 10.19.2.3 | забрать готовые |  | 30min | 2026-06-11 10:00 A | 2026-06-11 10:30 A | 2261FS+4d | 100% |  |  | start no earlier than 2026-06-03 08:00 | Шуранов Ю | 0.5h | 0.5h |
| 2263 | 10.19.3 | **партия 2** |  | 3.12d | 2026-06-04 09:00 A | 2026-06-09 10:00 A |  | 100% |  |  |  |  | 1h | 1h |
| 2264 | 10.19.3.1 | разместить готовые балванки на прожиг отверстий |  | 30min | 2026-06-04 09:00 A | 2026-06-04 09:30 A |  | 100% |  |  | start no earlier than 2026-06-04 09:00 | Шуранов Ю | 0.5h | 0.5h |
| 2265 | 10.19.3.2 | забрать готовые |  | 30min | 2026-06-09 09:30 A | 2026-06-09 10:00 A | 2264FS+5d | 100% |  |  | start no earlier than 2026-06-03 08:00 | Шуранов Ю | 0.5h | 0.5h |
| 2266 | 10.20 | **зип тенов на печь 70 и 85 + шестерни питатель 70** |  | 30.06d | 2026-05-28 09:00 A | 2026-07-09 09:30 A |  | 100% |  |  |  |  | 0.75h | 0.75h |
| 2267 | 10.20.1 | запрос Настя, получить счет |  | 15min | 2026-05-28 09:00 A | 2026-05-28 09:15 A |  | 100% |  |  | start no earlier than 2026-05-28 09:00 | Домоводов К | 0.25h | 0.25h |
| 2268 | 10.20.2 | оплата |  | 15min | 2026-06-04 09:00 A | 2026-06-04 09:15 A | 2267FS+2d | 100% |  |  | start no earlier than 2026-06-04 09:00 | Домоводов К | 0.25h | 0.25h |
| 2269 | 10.20.3 | контроль поставки |  | 15min | 2026-07-09 09:15 A | 2026-07-09 09:30 A | 2268FS+30d | 100% |  |  | start no earlier than 2026-05-27 08:00 | Зорькин В | 0.25h | 0.25h |
| 2270 | 10.21 | подготовка к инвентаризации |  | 3h | 2026-05-26 09:00 A | 2026-05-26 12:00 A |  | 100% |  |  | start no earlier than 2026-05-26 09:00 | Бундин В | 3h | 3h |
| 2271 | 10.22 | посчитать и записать какие и какое количество автоматов и контакторов есть в слесарке |  | 1h | 2026-05-23 09:00 A | 2026-05-25 10:00 A |  | 100% |  |  | start no earlier than 2026-05-23 09:00 | Макаревич А | 1h | 1h |
| 2272 | 10.23 | передать весы (малые в 1 цех, большие в 5 цех) со слесарки |  | 1h | 2026-05-22 09:00 A | 2026-05-22 10:00 A |  | 100% |  |  | start no earlier than 2026-05-22 09:00 | Макаревич А | 1h | 1h |
| 2273 | 10.24 | проверить работает или нет двигатель с накопительного стола цех 1- Валентин покажет. |  | 1h | 2026-05-19 08:00 A | 2026-05-19 10:00 A |  | 100% |  |  | start no earlier than 2026-05-19 08:00 | Дедов В | 1h | 1h |
| 2274 | 10.25 | наточить ножи для ц.2 |  | 1h | 2026-05-19 09:00 A | 2026-05-19 10:00 A |  | 100% |  |  | start no earlier than 2026-05-19 09:00 | Тимофеев В | 1h | 1h |
| 2275 | 10.26 | подготовка к инвентаризации (посчитать какие и метраж кабеля в слесарке и желтом нашей половине) |  | 2h | 2026-05-24 09:00 A | 2026-05-25 11:00 A |  | 100% |  |  | start no earlier than 2026-05-24 09:00 | Дедов В | 2h | 2h |
| 2276 | 10.27 | подготовить рабочее место в слесарке для работы на кровле Олега |  | 1h | 2026-05-15 09:00 A | 2026-05-15 10:00 A |  | 100% |  |  | start no earlier than 2026-05-15 09:00 | Некрасов А; Труфанов А; Тимофеев В; Макаревич А | 4h | 4h |

| ID | WBS | Task | Duration | Start | Finish | Predecessors | Complete | Total slack | Free slack | Constraint | Resources | Work | Actual work |
| --- | --- | --- | --- | --- | --- | --- | --- | --- | --- | --- | --- | --- | --- |
| 2277 | 10.28 | **ремонт инсекютер с 1ц в слесарке. Повесить в цехе, зафиксировать в журнал мастера** | 0.12d | 2026-05-19 09:00 A | 2026-05-19 10:00 A |  | 100% |  |  |  |  | 1h | 1h |
| 2278 | 10.28.1 | взять светильник "антимуха" у Луговских и повесить на входе в корридор между раздевалками | 1h | 2026-05-19 09:00 A | 2026-05-19 10:00 A |  | 100% |  |  | start no earlier than 2026-05-19 09:00 | Дедов В | 1h | 1h |
| 2279 | 10.29 | **орг ремонт мотор с вращаюбщего барабана 1ц** | 0.16d | 2026-09-01 09:00 | 2026-09-01 10:15 |  |  | 142.44d |  |  |  | 1.25h |  |
| 2280 | 10.29.1 | подписать шильдик. На веревочке картонка / пластик | 15min | 2026-09-01 09:00 | 2026-09-01 09:15 |  |  | 142.44d | 0d | start no earlier than 2026-09-01 09:00 | Шуранов Ю | 0.25h |  |
| 2281 | 10.29.2 | орг ремонт | 1h | 2026-09-01 09:15 | 2026-09-01 10:15 | 2280 |  | 142.44d |  | start no earlier than 2026-09-01 09:00 | Шуранов Ю | 1h |  |
| 2282 | 10.30 | получить на складе резинки на двери прекондиционеров и выдать цех 1 и 2 | 1h | 2026-05-11 09:00 A | 2026-05-11 10:00 A |  | 100% |  |  | start no earlier than 2026-05-11 09:00 |  |  |  |
| 2283 | 10.31 | подготовить электродную группу для 1 цеха | 3h | 2026-05-11 09:00 A | 2026-05-11 12:00 A |  | 100% |  |  | start no earlier than 2026-05-11 09:00 | Бундин В | 3h | 3h |
| 2284 | 10.32 | на емкость нерж сделать сгон и поплавок | 4h | 2026-05-09 09:00 A | 2026-05-11 13:00 A |  | 100% |  |  | start no earlier than 2026-05-09 09:00 | Макаревич А | 4h | 4h |
| 2285 | 10.33 | отвезти термоодеяло с слесарки в синий склад | 1h | 2026-05-11 09:00 A | 2026-05-11 10:00 A |  | 100% |  |  | start no earlier than 2026-05-11 09:00 | Бундин В | 1h | 1h |
| 2286 | 10.34 | приехали дроселя для светильников, восстановить не рабочие | 4h | 2026-05-12 09:00 A | 2026-05-12 13:00 A |  | 100% |  |  | start no earlier than 2026-05-12 09:00 | Бундин В | 4h | 4h |
| 2287 | 10.35 | **орг ремонт мотор с конв №2 1 линия 1ц** | 0.25d | 2026-09-01 09:00 | 2026-09-01 11:00 |  |  | 142.34d |  |  |  | 2h |  |
| 2288 | 10.35.1 | подписать шильдик | 60min | 2026-09-01 09:00 | 2026-09-01 10:00 |  |  | 142.34d | 0d | start no earlier than 2026-09-01 09:00 | Шуранов Ю | 1h |  |
| 2289 | 10.35.2 | орг ремонт | 1h | 2026-09-01 10:00 | 2026-09-01 11:00 | 2288 |  | 142.34d |  | start no earlier than 2026-05-14 09:00 | Шуранов Ю | 1h |  |
| 2290 | 10.36 | сборка редуктор с шлюз питателя (фото в чате 14.05) | 3h | 2026-08-31 09:00 A | 2026-08-31 12:00 A |  | 100% |  |  | start no earlier than 2026-09-02 09:00 | Тимофеев В | 3h | 3h |
| 2291 | 10.37 | **собрать мотор-редуктор прекондиционера в слесарке (сальники на складе в лотках снизу подписаны)** | 0.12d | 2026-06-15 09:00 A | 2026-06-15 10:00 A |  | 100% |  |  |  | Бундин В | 3h | 3h |
| 2292 | 10.37.1 | транспортировка в синий склад | 1h | 2026-06-15 09:00 A | 2026-06-15 10:00 A |  | 100% |  |  | start no earlier than 2026-06-15 09:00 | Тимофеев В; Некрасов А | 2h | 2h |
| 2293 | 10.38 | **вскрыть листогиб** | 4.5d | 2026-05-09 09:00 A | 2026-05-15 13:00 A |  | 100% |  |  |  |  | 11.17h | 11.17h |
| 2294 | 10.38.1 | проверить работу листогиба (попробовать загнуть нерж) | 1h | 2026-05-09 09:00 A | 2026-05-11 10:00 A |  | 100% |  |  | start no earlier than 2026-05-09 09:00 | Макаревич А | 1h | 1h |
| 2295 | 10.38.2 | как удлинить ручки, предложение | 5min | 2026-05-13 09:00 A | 2026-05-13 09:05 A |  | 100% |  |  | start no earlier than 2026-05-13 09:00 | Труфанов А | 0.08h | 0.08h |
| 2296 | 10.38.3 | куда крепить стационарно. Синий склад /контейнер. Предложения. | 5min | 2026-05-13 09:00 A | 2026-05-13 09:05 A |  | 100% |  |  | start no earlier than 2026-05-13 09:00 | Труфанов А | 0.08h | 0.08h |
| 2297 | 10.38.4 | изготовить раму для крепления к полу | 4h | 2026-05-15 09:00 A | 2026-05-15 13:00 A |  | 100% |  |  | start no earlier than 2026-05-15 09:00 | Тимофеев В; Макаревич А | 8h | 8h |
| 2298 | 10.38.5 | усилить ручки | 1h | 2026-05-15 09:00 A | 2026-05-15 10:00 A |  | 100% |  |  | start no earlier than 2026-05-15 09:00 | Тимофеев В; Макаревич А | 2h | 2h |
| 2299 | 10.39 | вывезти питатель на синий склад | 1h | 2026-05-05 09:00 A | 2026-05-05 10:00 A |  | 100% |  |  | start no earlier than 2026-05-05 09:00 | Тимофеев В | 1h | 1h |
| 2300 | 10.40 | транспортировка гильз и шнеков на синий склад (уложить по приходам из китая) | 3h | 2026-05-05 09:00 A | 2026-05-05 12:00 A |  | 100% |  |  | start no earlier than 2026-05-05 09:00 | Тимофеев В; Бобренок В; Шуранов Ю | 9h | 9h |
| 2301 | 10.41 | найти на синем складе комплектующие для инвентаризации с Алексеем | 3h | 2026-05-05 09:00 A | 2026-05-05 12:00 A |  | 100% |  |  | start no earlier than 2026-05-05 08:00 | Шуранов Ю | 3h | 3h |
| 2302 | 10.42 | посчитать все валы от транспортеров, занести в таблицу учета | 4h | 2026-05-11 09:00 A | 2026-05-11 13:00 A |  | 100% |  |  | start no earlier than 2026-05-09 09:00 | Шуранов Ю | 4h | 4h |
| 2303 | 10.43 | посчитать сколько валов для транспортеров Теко в слесарке | 1h | 2026-04-30 09:00 A | 2026-04-30 10:00 A |  | 100% |  |  | start no earlier than 2026-04-30 09:00 | Шуранов Ю | 1h | 1h |
| 2304 | 10.44 | уборка остатки металл в контейнер | 1h | 2026-04-29 09:00 A | 2026-04-29 10:00 A |  | 100% |  |  | start no earlier than 2026-04-29 09:00 | Некрасов А; Тимофеев В; Труфанов А; Бундин В | 4h | 4h |

| ID | WBS | Task | Type | Duration | Start | Finish | Predecessors | Complete | Remaining | Total slack | Constraint | Resources | Work | Actual work |
| --- | --- | --- | --- | --- | --- | --- | --- | --- | --- | --- | --- | --- | --- | --- |
| 2305 | 10.45 | **ЗИП на ПГ антиэлектрод** |  | 33d? | 2026-05-13 09:00 A | 2026-06-26 18:00 A |  | 100% |  |  |  |  | 9.5h | 9.5h |
| 2306 | 10.45.1 | поиск в продаже труба нерж ф205 (проверить у Тимофеева диамтр) |  | 1h | 2026-05-13 09:00 A | 2026-05-13 10:00 A |  | 100% |  |  | start no earlier than 2026-05-13 09:00 | Зорькин В | 1h | 1h |
| 2307 | 10.45.2 | заявка |  | 15min | 2026-05-13 10:00 A | 2026-05-13 10:15 A | 2306 | 100% |  |  | start no earlier than 2026-04-24 08:00 | Зорькин В | 0.25h | 0.25h |
| 2308 | 10.45.3 | контроль доставки. Карабанов размещает у свои |  | 15min | 2026-05-19 09:00 A | 2026-05-19 09:15 A | 2307FS+5d | 100% |  |  | start no earlier than 2026-05-19 09:00 | Зорькин В | 0.25h | 0.25h |
| 2309 | 10.45.4 | монтаж |  | 1d? | 2026-06-26 09:00 A | 2026-06-26 18:00 A | 2308FS+2d | 100% |  |  | start no earlier than 2026-06-26 09:00 | Тимофеев В | 8h | 8h |
| 2310 | 10.46 | **ремонт шуруповерт макита** |  | 40d | 2026-04-19 09:00 A | 2026-06-14 11:00 A |  | 100% |  |  |  |  | 5h | 5h |
| 2311 | 10.46.1 | разобрать шуруповерт макита, выяснить с редуктором проблема или нет | manual | 2h | 2026-04-19 09:00 A | 2026-04-19 11:00 A |  | 100% |  |  | start no earlier than 2026-04-19 09:00 | Дедов В | 2h | 2h |
| 2312 | 10.46.2 | отправить фидео запрос о ремонте в сервисн центр |  | 1h | 2026-04-20 09:00 A | 2026-04-20 10:00 A |  | 100% |  |  | start no earlier than 2026-04-20 08:00 | Зорькин В | 1h | 1h |
| 2313 | 10.46.3 | конртроль / решение о списании | milestone | 0d | 2026-04-27 09:00 A | 2026-04-27 09:00 A |  | 100% |  |  | start no earlier than 2026-04-27 09:00 | Зорькин В |  |  |
| 2314 | 10.46.4 | попробовать собрать шуроповерт, находится в слесарке | manual | 2h | 2026-06-14 09:00 A | 2026-06-14 11:00 A |  | 100% |  |  | start no earlier than 2026-06-14 09:00 | Бундин В | 2h | 2h |
| 2315 | 10.47 | взять винты пота м6х25 и перекрутить на сетке для печи | manual | 1h | 2026-04-20 09:00 A | 2026-04-20 10:00 A |  | 100% |  |  | start no earlier than 2026-04-20 09:00 | Тимофеев В | 1h | 1h |
| 2316 | 10.48 | **шестерня питателя LT85** |  | 7.01d | 2026-04-08 09:00 A | 2026-04-17 09:05 |  | 94% | 0.44d | 239.58d |  |  | 1.33h | 1.25h |
| 2317 | 10.48.1 | **1. заказ с китая** |  | 7.01d | 2026-04-08 09:00 A | 2026-04-17 09:05 |  | 75% | 1.75d | 239.58d |  |  | 0.33h | 0.25h |
| 2318 | 10.48.1.1 | запрос / контроль |  | 15min | 2026-04-08 09:00 A | 2026-04-08 09:15 A |  | 100% |  |  | start no earlier than 2026-04-08 09:00 | Шуранов Ю | 0.25h | 0.25h |
| 2319 | 10.48.1.2 | контроль |  | 5min | 2026-04-17 09:00 | 2026-04-17 09:05 |  |  |  | 239.58d | start no earlier than 2026-04-17 09:00 | Шуранов Ю | 0.08h |  |
| 2320 | 10.48.2 | **2. изготовление по образцу** |  | 5.03d | 2026-04-08 09:00 A | 2026-04-15 09:15 A |  | 100% |  |  |  |  | 1h | 1h |
| 2321 | 10.48.2.1 | выяснить возможносить изготвления |  | 30min | 2026-04-08 09:00 A | 2026-04-08 09:30 A |  | 100% |  |  | start no earlier than 2026-04-08 09:00 | Зорькин В | 0.5h | 0.5h |
| 2322 | 10.48.2.2 | отправить курьера |  | 15min | 2026-04-08 09:30 A | 2026-04-08 09:45 A | 2321 | 100% |  |  | start no earlier than 2026-04-06 09:00 | Зорькин В | 0.25h | 0.25h |
| 2323 | 10.48.2.3 | контроль |  | 15min | 2026-04-15 09:00 A | 2026-04-15 09:15 A | 2322 | 100% |  |  | start no earlier than 2026-04-15 09:00 | Зорькин В | 0.25h | 0.25h |
| 2324 | 10.49 | проверить наличие лент в ЗИП перед утилизаций б/у |  | 2h | 2026-03-31 09:00 A | 2026-03-31 11:00 A |  | 100% |  |  | start no earlier than 2026-03-31 08:00 | Зорькин В | 2h | 2h |
| 2325 | 10.50 | соединители лент траснспортеры линий - проверить остаток |  | 30min | 2026-08-31 09:00 | 2026-08-31 09:30 |  |  |  | 143.53d | start no earlier than 2026-08-31 09:00 | Зорькин В | 0.5h |  |
| 2326 | 10.51 | **освободить место на син склад / перенос в новый контейнер** |  | 1.5d | 2026-03-30 08:00 A | 2026-03-31 13:00 A |  | 100% |  |  |  |  | 38h | 38h |
| 2327 | 10.51.1 | перенести метал, норию в контейнер с синего склада |  | 4h | 2026-03-30 09:00 A | 2026-03-30 13:00 A |  | 100% |  |  | start no earlier than 2026-03-30 09:00 | Бобренок В; Некрасов А; Тимофеев В | 12h | 12h |
| 2328 | 10.51.2 | сборка стеллаж хранения металла |  | 4h | 2026-03-30 08:00 A | 2026-03-30 13:00 A |  | 100% |  |  | start no earlier than 2026-03-30 08:00 | Некрасов А; Труфанов А; Тимофеев В | 10h | 10h |
| 2329 | 10.51.3 | монтаж стеллаж хранения металла |  | 4h | 2026-03-31 09:00 A | 2026-03-31 13:00 A |  | 100% |  |  | start no earlier than 2026-03-31 09:00 | Некрасов А; Труфанов А | 8h | 8h |
| 2330 | 10.51.4 | загрузка мусор в трактор дерево, отход |  | 4h | 2026-03-31 09:00 A | 2026-03-31 13:00 A |  | 100% |  |  | start no earlier than 2026-03-31 08:00 | Некрасов А; Труфанов А | 8h | 8h |
| 2331 | 10.52 | заточка ножей 2ц орг |  | 30min | 2026-03-25 09:00 A | 2026-03-25 09:30 A |  | 100% |  |  | start no earlier than 2026-03-25 08:00 | Зорькин В | 0.5h | 0.5h |
| 2332 | 10.53 | ремонт водонагреватель орг |  | 1h | 2026-03-23 09:00 A | 2026-03-23 10:00 A |  | 100% |  |  | start no earlier than 2026-03-23 09:00 | Шуранов Ю | 1h | 1h |
| 2333 | 10.54 | ремонт парогенератор орг |  | 1h | 2026-03-23 09:00 A | 2026-03-23 10:00 A |  | 100% |  |  | start no earlier than 2026-03-23 09:00 | Шуранов Ю | 1h | 1h |

| ID | WBS | Task | Type | Duration | Start | Finish | Predecessors | Complete | Remaining | Total slack | Free slack | Constraint | Resources | Work | Actual work |
| --- | --- | --- | --- | --- | --- | --- | --- | --- | --- | --- | --- | --- | --- | --- | --- |
| 2334 | 10.55 | **стеллаж для организации хранения металла** |  | 11.5d | 2026-03-23 09:00 A | 2026-04-07 13:00 A |  | 100% |  |  |  |  |  | 84h | 84h |
| 2335 | 10.55.1 | составить эскиз / расчет заявка металл |  | 4h | 2026-03-23 09:00 A | 2026-03-23 13:00 A |  | 100% |  |  |  | start no earlier than 2026-03-23 09:00 | Зорькин В | 4h | 4h |
| 2336 | 10.55.2 | доставка |  | 10d | 2026-03-23 14:00 A | 2026-04-06 13:00 A | 2335 | 100% |  |  |  | start no earlier than 2026-03-20 08:00 | Карабанов | 80h | 80h |
| 2337 | 10.55.3 | сборка |  | 2d | 2026-04-03 14:00 A | 2026-04-07 13:00 A | 2336 | 100% |  |  |  | start no earlier than 2026-03-20 08:00 |  |  |  |
| 2338 | 10.56 | установить крыльчатку мотор-редуктор смесителя / перенос в контейнер |  | 30min | 2026-08-31 09:00 A | 2026-08-31 09:30 A |  | 100% |  |  |  | start no earlier than 2026-09-02 09:00 | Тимофеев В | 0.5h | 0.5h |
| 2339 | 10.57 | **изготовить ножевой узел для 2ц** |  | 10.02d | 2026-03-17 09:00 A | 2026-03-31 09:10 A |  | 100% |  |  |  |  |  | 80.33h | 80.33h |
| 2340 | 10.57.1 | получить счет |  | 10min | 2026-03-17 09:00 A | 2026-03-17 09:10 A |  | 100% |  |  |  | start no earlier than 2026-03-17 08:00 | Домоводов К | 0.17h | 0.17h |
| 2341 | 10.57.2 | изготовление |  | 10d | 2026-03-17 09:10 A | 2026-03-31 09:10 A | 2340 | 100% |  |  |  | start no earlier than 2026-03-17 08:00 | Фрезер ЧПУ | 80h | 80h |
| 2342 | 10.57.3 | контроль |  | 5min | 2026-03-28 09:10 A | 2026-03-30 09:05 A | 2341FS+1d | 100% |  |  |  | start no earlier than 2026-03-17 08:00 | Зорькин В | 0.08h | 0.08h |
| 2343 | 10.57.4 | орг доставка |  | 5min | 2026-03-28 09:15 A | 2026-03-30 09:05 A | 2342 | 100% |  |  |  | start no earlier than 2026-03-17 08:00 | Зорькин В | 0.08h | 0.08h |
| 2344 | 10.58 | сгоревшие двигатели унести в контенер в коробку |  | 1h | 2026-03-15 09:00 A | 2026-03-16 10:00 A |  | 100% |  |  |  | start no earlier than 2026-03-15 09:00 | Бобренок В | 1h | 1h |
| 2345 | 10.59 | ремонт головы насоса нгш57 гидродлизат 2шт |  | 2h | 2026-03-16 09:00 A | 2026-03-16 11:00 A |  | 100% |  |  |  | start no earlier than 2026-03-16 09:00 | Труфанов А | 2h | 2h |
| 2346 | 10.60 | изготовить ножевой узел для 2ц | milestone | 0d | 2026-03-16 09:00 A | 2026-03-16 09:00 A |  | 100% |  |  |  | start no earlier than 2026-03-16 09:00 | Домоводов К |  |  |
| 2347 | 10.61 | по всем цехам обход, проверка обратный клпан бойлеры / настройка температуры . Составить список под замену |  | 2h | 2026-09-01 09:00 | 2026-09-01 11:00 |  |  |  | 142.34d |  | start no earlier than 2026-09-01 09:00 | Дедов В | 2h |  |
| 2348 | 10.62 | **ремонт датчик расхода пара с линия 3** |  | 32.04d | 2026-09-01 09:00 A | 2026-10-07 09:20 |  |  | 32.04d | 110.55d |  |  |  | 0.92h |  |
| 2349 | 10.62.1 | заявка взип |  | 15min | 2026-09-01 09:00 | 2026-09-01 09:15 |  |  |  | 117.48d | 0d | start no earlier than 2026-09-01 09:00 | Шуранов Ю | 0.25h |  |
| 2350 | 10.62.2 | орг отправить в ремонт |  | 20min | 2026-09-01 09:15 | 2026-09-01 09:35 | 2349 |  |  | 117.48d | 6.93d | start no earlier than 2026-03-12 08:00 | Шуранов Ю | 0.33h |  |
| 2351 | 10.62.3 | контроль | milestone | 0d | 2026-09-22 09:35 A | 2026-09-22 09:35 A | 2350FS+20d | 100% |  |  |  | start no earlier than 2026-04-17 09:00 | Зорькин В |  |  |
| 2352 | 10.62.4 | контроль | milestone | 0d | 2026-09-30 09:00 | 2026-09-30 09:00 | 2350FS+20d |  |  | 110.55d | 0d | start no earlier than 2026-09-30 09:00 | Зорькин В |  |  |
| 2353 | 10.62.5 | орг забрать сремонта |  | 20min | 2026-10-07 09:00 | 2026-10-07 09:20 | 2351FS+5d, 2352FS+5d |  |  | 110.55d |  | start no earlier than 2026-03-12 08:00 | Шуранов Ю | 0.33h |  |
| 2354 | 10.63 | реставрация вал с охладителя. Полполнить расход ЗИП |  | 1h | 2026-09-01 09:00 | 2026-09-01 10:00 |  |  |  | 142.47d |  | start no earlier than 2026-09-01 09:00 | Шуранов Ю | 1h |  |
| 2355 | 10.64 | ремонт датчик наличия сырья / собрать из 2х один |  | 3h | 2026-09-01 09:00 | 2026-09-01 12:00 |  |  |  | 142.22d |  | start no earlier than 2026-09-01 09:00 | Дедов В | 3h |  |
| 2356 | 10.65 | **ремонт бойлер с 5ц гардероб** |  | 7.04d | 2026-03-13 09:00 A | 2026-03-24 09:20 |  | 57% | 3.02d | 257.55d |  |  |  | 0.58h | 0.33h |
| 2357 | 10.65.1 | орг отправить в ремонт |  | 15min | 2026-03-13 09:00 A | 2026-03-13 09:15 A |  | 100% |  |  |  | start no earlier than 2026-03-13 09:00 | Шуранов Ю | 0.25h | 0.25h |
| 2358 | 10.65.2 | контроль доставка / оплата |  | 5min | 2026-03-23 09:00 A | 2026-03-23 09:05 A | 2357FS+5d | 100% |  |  |  | start no earlier than 2026-03-23 09:00 | Шуранов Ю | 0.08h | 0.08h |
| 2359 | 10.65.3 | орг доставка |  | 15min | 2026-03-24 09:05 | 2026-03-24 09:20 | 2358FS+1d |  |  | 257.55d |  | start no earlier than 2026-03-12 08:00 | Шуранов Ю | 0.25h |  |
| 2360 | 10.66 | диагностика двигателей и редукторов в слесарке. Подробности Шуранов по тлф |  | 2h | 2026-09-01 09:00 A | 2026-09-01 11:00 A |  | 100% |  |  |  | start no earlier than 2026-09-02 09:00 | Бундин В | 2h | 2h |
| 2361 | 10.67 | которые в коробке с них снять крыльчатки |  | 2h | 2026-09-01 09:00 A | 2026-09-01 11:00 A | 2360 | 100% |  |  |  | start no earlier than 2026-03-06 08:00 | Бундин В | 2h | 2h |
| 2362 | 10.68 | ножевой узел 2ц заменаить подшипники. У мастера |  | 1h | 2026-03-04 08:00 A | 2026-03-04 10:00 A |  | 100% |  |  |  | start no earlier than 2026-03-04 08:00 | Дедов В | 1h | 1h |

| ID | WBS | Task | Duration | Start | Finish | Predecessors | Complete | Remaining | Total slack | Free slack | Constraint | Resources | Work | Actual work |
| --- | --- | --- | --- | --- | --- | --- | --- | --- | --- | --- | --- | --- | --- | --- |
| 2363 | 10.69 | **ремонт электродов ПГ в ЗИП** | 2.75d | 2026-03-08 09:00 A | 2026-03-11 16:00 A |  | 100% |  |  |  |  |  | 12h | 12h |
| 2364 | 10.69.1 | 2шт - шт | 6h | 2026-03-08 09:00 A | 2026-03-09 16:00 A |  | 100% |  |  |  | start no earlier than 2026-03-08 09:00 | Макаревич А | 6h | 6h |
| 2365 | 10.69.2 | 1шт = 2ц | 6h | 2026-03-11 09:00 A | 2026-03-11 16:00 A |  | 100% |  |  |  | start no earlier than 2026-03-11 09:00 | Макаревич А | 6h | 6h |
| 2366 | 10.70 | промер изношенных шнеков, подготовить таблицу и инструкцию для делегировать | 1h | 2026-03-03 09:00 A | 2026-03-03 10:00 A |  | 100% |  |  |  | start no earlier than 2026-03-03 09:00 | Зорькин В | 1h | 1h |
| 2367 | 10.71 | заказ нутромер утерянные детали | 30min | 2026-03-06 09:00 A | 2026-03-06 09:30 A |  | 100% |  |  |  | start no earlier than 2026-03-06 09:00 | Зорькин В | 0.5h | 0.5h |
| 2368 | 10.72 | **стопорнное кольцо для валов шнеков** | 0.09d | 2026-03-02 09:00 A | 2026-03-02 09:45 A |  | 100% |  |  |  |  |  | 0.75h | 0.75h |
| 2369 | 10.72.1 | заявка снабжение | 15min | 2026-03-02 09:00 A | 2026-03-02 09:15 A |  | 100% |  |  |  | start no earlier than 2026-03-02 09:00 | Зорькин В | 0.25h | 0.25h |
| 2370 | 10.72.2 | заявка токарь | 15min | 2026-03-02 09:15 A | 2026-03-02 09:30 A | 2369 | 100% |  |  |  | start no earlier than 2026-02-27 08:00 | Зорькин В | 0.25h | 0.25h |
| 2371 | 10.72.3 | заявка кита | 15min | 2026-03-02 09:30 A | 2026-03-02 09:45 A | 2370 | 100% |  |  |  | start no earlier than 2026-02-27 08:00 | Зорькин В | 0.25h | 0.25h |
| 2372 | 10.73 | **быстрая замена шнеков - кондуктор для хранения и перемещения подготвленного ствола** | 3.25d | 2026-10-12 09:00 | 2026-10-15 11:00 |  |  |  | 104.34d |  |  |  | 20h |  |
| 2373 | 10.73.1 | проект кондуктора и траверсы перемещения ствола штабелером | 2h | 2026-10-12 09:00 | 2026-10-12 11:00 |  |  |  | 104.34d | 0d | start no earlier than 2026-10-12 09:00 | Тимофеев В; Бундин В | 4h |  |
| 2374 | 10.73.2 | сборка | 2d | 2026-10-13 11:00 | 2026-10-15 11:00 | 2373FS+1d |  |  | 104.34d |  | start no earlier than 2026-04-16 09:00 | Бобренок В | 16h |  |
| 2375 | 10.74 | **заявка шкив на вал прекондиционер + разрезная вставка + спец шпильки** | 0.12d | 2025-08-04 09:00 | 2025-08-04 10:00 |  |  |  | 423.47d |  |  |  | 1h |  |
| 2376 | 10.74.1 | подбор шкив / заявка | 1h | 2025-08-04 09:00 | 2025-08-04 10:00 |  |  |  | 423.47d |  | start no earlier than 2025-08-04 09:00 | Зорькин В | 1h |  |
| 2377 | 10.75 | **ремонт вал прекондиционер** | 12.02d | 2025-07-31 09:00 A | 2025-08-18 09:10 |  | 86% | 1.72d | 413.57d |  |  |  | 1.17h | 1h |
| 2378 | 10.75.1 | подготовить к отправке очистить | 1h | 2025-07-31 09:00 A | 2025-07-31 10:00 A |  | 100% |  |  |  | start no earlier than 2025-07-31 09:00 | Пинчук А | 1h | 1h |
| 2379 | 10.75.2 | орг курьера / отправить | 5min | 2025-08-04 09:00 | 2025-08-04 09:05 | 2378 |  |  | 413.57d | 0d | start no earlier than 2025-08-04 09:00 | Зорькин В | 0.08h |  |
| 2380 | 10.75.3 | контроль / забрать | 5min | 2025-08-18 09:05 | 2025-08-18 09:10 | 2379FS+10d |  |  | 413.57d |  | start no earlier than 2025-07-31 09:00 | Зорькин В | 0.08h |  |
| 2381 | 10.76 | **ремонт вал в барабана жир 2л** | 152.01d | 2025-08-04 09:00 A | 2026-03-04 09:05 |  | 50% | 76.01d | 271.58d |  |  |  | 0.17h | 0.08h |
| 2382 | 10.76.1 | отправить на ремонт | 5min | 2025-08-04 09:00 | 2025-08-04 09:05 |  |  |  | 423.58d |  | start no earlier than 2025-08-04 09:00 | Зорькин В | 0.08h |  |
| 2383 | 10.76.2 | контроль забрать | 5min | 2026-03-04 09:00 A | 2026-03-04 09:05 A | 2382FS+10d | 100% |  |  |  | start no earlier than 2026-03-04 09:00 | Зорькин В | 0.08h | 0.08h |
| 2384 | 10.77 | **заявка эл мотор шибера в ЗИП** | 0.01d | 2025-02-19 09:00 | 2025-02-19 09:05 |  |  |  | 541.58d |  |  |  | 0.08h |  |
| 2385 | 10.77.1 | контроль | 5min | 2025-02-19 09:00 | 2025-02-19 09:05 |  |  |  | 541.58d |  | start no earlier than 2025-02-19 09:00 | Шуранов Ю | 0.08h |  |
| 2386 | 10.78 | составить таблицу ЗИП наличия редукторов / где используется | 4h | 2025-02-21 09:00 | 2025-02-21 13:00 |  |  |  | 539.09d |  | start no earlier than 2025-02-21 09:00 | Тимофеев В; Шуранов Ю | 8h |  |
| 2387 | 10.79 | составить таблицу соответсвия номеров подшипников - где используется | 4h | 2025-02-21 09:00 | 2025-02-21 13:00 |  |  |  | 539.09d |  | start no earlier than 2025-02-21 09:00 | Тимофеев В; Шуранов Ю | 8h |  |
| 2388 | 10.80 | ремонт болгарки замена кнопки | 1h | 2024-10-21 09:00 A | 2024-10-21 10:00 A |  | 100% |  |  |  | start no earlier than 2024-10-21 09:00 | Зорькин В | 1h | 1h |
| 2389 | 10.81 | сборка редуктор LT70 замена пружинные шайбы | 1d? | 2024-09-29 09:00 A | 2024-09-30 18:00 A |  | 100% |  |  |  | start no earlier than 2024-09-29 09:00 | Макаревич А | 8h | 8h |

| ID | WBS | Task | Duration | Start | Finish | Complete | Constraint | Resources | Work | Actual work |
| --- | --- | --- | --- | --- | --- | --- | --- | --- | --- | --- |
| 2390 | 10.82 | **прорверить наличие остатков** | 0.01d | 2024-09-25 08:00 A | 2024-09-25 09:05 A | 100% |  |  | 2h | 2h |
| 2391 | 10.82.1 | Манжет (армированная 2,2-75*100*10 ГОСТ 8752-79) | 5min | 2024-09-25 08:00 A | 2024-09-25 09:05 A | 100% | start no earlier than 2024-09-25 08:00 | Дедов В | 0.08h | 0.08h |
| 2392 | 10.82.2 | Манжет (армированная 1,2-80*105*10) | 5min | 2024-09-25 08:00 A | 2024-09-25 09:05 A | 100% | start no earlier than 2024-09-25 08:00 | Дедов В | 0.08h | 0.08h |
| 2393 | 10.82.3 | Манжет (армированная 2,2-80*105*10 ГОСТ 8752-79) | 5min | 2024-09-25 08:00 A | 2024-09-25 09:05 A | 100% | start no earlier than 2024-09-25 08:00 | Дедов В | 0.08h | 0.08h |
| 2394 | 10.82.4 | Манжет (армированная 2,2-55*80*10 ГОСТ 8752-79) | 5min | 2024-09-25 08:00 A | 2024-09-25 09:05 A | 100% | start no earlier than 2024-09-25 08:00 | Дедов В | 0.08h | 0.08h |
| 2395 | 10.82.5 | Масло (Для швейных машин) | 0.01d | 2024-09-25 08:00 A | 2024-09-25 09:05 A | 100% | start no earlier than 2024-09-25 08:00 | Дедов В | 0.08h | 0.08h |
| 2396 | 10.82.6 | Наконечник (ТМЛ 16-10-6 медный луженый) | 0.01d | 2024-09-25 08:00 A | 2024-09-25 09:05 A | 100% | start no earlier than 2024-09-25 08:00 | Дедов В | 0.08h | 0.08h |
| 2397 | 10.82.7 | Наконечник (ТМЛ 10-8-5 медный луженый) | 0.01d | 2024-09-25 08:00 A | 2024-09-25 09:05 A | 100% | start no earlier than 2024-09-25 08:00 | Дедов В | 0.08h | 0.08h |
| 2398 | 10.82.8 | Подшипник (56006-2RS (180106)SKF (30*5*10)) | 0.01d | 2024-09-25 08:00 A | 2024-09-25 09:05 A | 100% | start no earlier than 2024-09-25 08:00 | Дедов В | 0.08h | 0.08h |
| 2399 | 10.82.9 | Подшипник (51410/ART) | 0.01d | 2024-09-25 08:00 A | 2024-09-25 09:05 A | 100% | start no earlier than 2024-09-25 08:00 | Дедов В | 0.08h | 0.08h |
| 2400 | 10.82.10 | Подшипник (UCF 208 (40)) | 0.01d | 2024-09-25 08:00 A | 2024-09-25 09:05 A | 100% | start no earlier than 2024-09-25 08:00 | Дедов В | 0.08h | 0.08h |
| 2401 | 10.82.11 | Подшипник (6203.LLU/2ASU1/NTN) | 0.01d | 2024-09-25 08:00 A | 2024-09-25 09:05 A | 100% | start no earlier than 2024-09-25 08:00 | Дедов В | 0.08h | 0.08h |
| 2402 | 10.82.12 | Подшипник (22212(53512) SKF (60*110*28)) | 0.01d | 2024-09-25 08:00 A | 2024-09-25 09:05 A | 100% | start no earlier than 2024-09-25 08:00 | Дедов В | 0.08h | 0.08h |
| 2403 | 10.82.13 | Подшипник (UC 204 (480204) (20х47х17/31)) | 0.01d | 2024-09-25 08:00 A | 2024-09-25 09:05 A | 100% | start no earlier than 2024-09-25 08:00 | Дедов В | 0.08h | 0.08h |
| 2404 | 10.82.14 | Подшипник (6906-2RS (30*47*9)) | 0.01d | 2024-09-25 08:00 A | 2024-09-25 09:05 A | 100% | start no earlier than 2024-09-25 08:00 | Дедов В | 0.08h | 0.08h |
| 2405 | 10.82.15 | Подшипник (6003-2RS (180103) (17*35*10)) | 0.01d | 2024-09-25 08:00 A | 2024-09-25 09:05 A | 100% | start no earlier than 2024-09-25 08:00 | Дедов В | 0.08h | 0.08h |
| 2406 | 10.82.16 | Подшипник (6203-2RS (180203) (17*40*12)) | 0.01d | 2024-09-25 08:00 A | 2024-09-25 09:05 A | 100% | start no earlier than 2024-09-25 08:00 | Дедов В | 0.08h | 0.08h |
| 2407 | 10.82.17 | Подшипник (6002 2RS, SKF (180102, 15*32*9)) | 0.01d | 2024-09-25 08:00 A | 2024-09-25 09:05 A | 100% | start no earlier than 2024-09-25 08:00 | Дедов В | 0.08h | 0.08h |
| 2408 | 10.82.18 | Провод ПЩ-4 | 0.01d | 2024-09-25 08:00 A | 2024-09-25 09:05 A | 100% | start no earlier than 2024-09-25 08:00 | Дедов В | 0.08h | 0.08h |
| 2409 | 10.82.19 | Ремень клиновый А-1400 | 0.01d | 2024-09-25 08:00 A | 2024-09-25 09:05 A | 100% | start no earlier than 2024-09-25 08:00 | Дедов В | 0.08h | 0.08h |
| 2410 | 10.82.20 | Ремень клиновый В (Б)-1320 | 0.01d | 2024-09-25 08:00 A | 2024-09-25 09:05 A | 100% | start no earlier than 2024-09-25 08:00 | Дедов В | 0.08h | 0.08h |
| 2411 | 10.82.21 | Реле (тепловое РТИ-3353 23-32А) | 0.01d | 2024-09-25 08:00 A | 2024-09-25 09:05 A | 100% | start no earlier than 2024-09-25 08:00 | Дедов В | 0.08h | 0.08h |
| 2412 | 10.82.22 | Шланг (для дозирующих насосов черного цвета 6,4х9,6 мм) | 0.01d | 2024-09-25 08:00 A | 2024-09-25 09:05 A | 100% | start no earlier than 2024-09-25 08:00 | Дедов В | 0.08h | 0.08h |
| 2413 | 10.82.23 | Труба гофрированная (ПВХ 25мм с протяжкой легкая серая) | 0.01d | 2024-09-25 08:00 A | 2024-09-25 09:05 A | 100% | start no earlier than 2024-09-25 08:00 | Дедов В | 0.08h | 0.08h |
| 2414 | 10.82.24 | Шпонка призматическая (DIN 6885 A 18х11х 90мм) | 0.01d | 2024-09-25 08:00 A | 2024-09-25 09:05 A | 100% | start no earlier than 2024-09-25 08:00 | Дедов В | 0.08h | 0.08h |

| ID | WBS | Task | Duration | Start | Finish | Predecessors | Complete | Remaining | Total slack | Free slack | Constraint | Resources | Work | Actual work |
| --- | --- | --- | --- | --- | --- | --- | --- | --- | --- | --- | --- | --- | --- | --- |
| 2415 | 10.83 | **прорверить остатки подшипников** | 0.01d | 2024-09-10 08:00 A | 2024-09-10 09:05 A |  | 100% |  |  |  |  |  | 1.17h | 1.17h |
| 2416 | 10.83.1 | 180101АС17/6 ГПЗ | 5min | 2024-09-10 08:00 A | 2024-09-10 09:05 A |  | 100% |  |  |  | start no earlier than 2024-09-10 08:00 | Дедов В | 0.08h | 0.08h |
| 2417 | 10.83.2 | 180202 (6202 2RS) (15*35*11) SKF | 0.01d | 2024-09-10 08:00 A | 2024-09-10 09:05 A |  | 100% |  |  |  | start no earlier than 2024-09-10 08:00 | Дедов В | 0.08h | 0.08h |
| 2418 | 10.83.3 | 180206 (6206 2RS) (30*62*16) HIKI | 0.01d | 2024-09-10 08:00 A | 2024-09-10 09:05 A |  | 100% |  |  |  | start no earlier than 2024-09-10 08:00 | Дедов В | 0.08h | 0.08h |
| 2419 | 10.83.4 | 22212.EAW33C3 / SNR | 0.01d | 2024-09-10 08:00 A | 2024-09-10 09:05 A |  | 100% |  |  |  | start no earlier than 2024-09-10 08:00 | Дедов В | 0.08h | 0.08h |
| 2420 | 10.83.5 | 51407/NEUTR | 0.01d | 2024-09-10 08:00 A | 2024-09-10 09:05 A |  | 100% |  |  |  | start no earlier than 2024-09-10 08:00 | Дедов В | 0.08h | 0.08h |
| 2421 | 10.83.6 | 6001 ZZ.CM | 0.01d | 2024-09-10 08:00 A | 2024-09-10 09:05 A |  | 100% |  |  |  | start no earlier than 2024-09-10 08:00 | Дедов В | 0.08h | 0.08h |
| 2422 | 10.83.7 | 6201.VVC3/ITJ | 0.01d | 2024-09-10 08:00 A | 2024-09-10 09:05 A |  | 100% |  |  |  | start no earlier than 2024-09-10 08:00 | Дедов В | 0.08h | 0.08h |
| 2423 | 10.83.8 | 6205LLU (NTN) | 0.01d | 2024-09-10 08:00 A | 2024-09-10 09:05 A |  | 100% |  |  |  | start no earlier than 2024-09-10 08:00 | Дедов В | 0.08h | 0.08h |
| 2424 | 10.83.9 | 6206. VVC3/ITJ | 0.01d | 2024-09-10 08:00 A | 2024-09-10 09:05 A |  | 100% |  |  |  | start no earlier than 2024-09-10 08:00 | Дедов В | 0.08h | 0.08h |
| 2425 | 10.83.10 | 686-2RS/ART | 0.01d | 2024-09-10 08:00 A | 2024-09-10 09:05 A |  | 100% |  |  |  | start no earlier than 2024-09-10 08:00 | Дедов В | 0.08h | 0.08h |
| 2426 | 10.83.11 | 7512 (32212)(60*110*24) | 0.01d | 2024-09-10 08:00 A | 2024-09-10 09:05 A |  | 100% |  |  |  | start no earlier than 2024-09-10 08:00 | Дедов В | 0.08h | 0.08h |
| 2427 | 10.83.12 | HK1210/NEUTR | 0.01d | 2024-09-10 08:00 A | 2024-09-10 09:05 A |  | 100% |  |  |  | start no earlier than 2024-09-10 08:00 | Дедов В | 0.08h | 0.08h |
| 2428 | 10.83.13 | UC 205 Neutr | 0.01d | 2024-09-10 08:00 A | 2024-09-10 09:05 A |  | 100% |  |  |  | start no earlier than 2024-09-10 08:00 | Дедов В | 0.08h | 0.08h |
| 2429 | 10.83.14 | UCFC 210 ASAHI | 0.01d | 2024-09-10 08:00 A | 2024-09-10 09:05 A |  | 100% |  |  |  | start no earlier than 2024-09-10 08:00 | Дедов В | 0.08h | 0.08h |
| 2430 | 10.84 | **создать реестр документации на оборудование** | 2d? | 2024-09-10 09:00 | 2024-09-11 18:00 |  |  |  | 655.59d |  |  |  | 8h |  |
| 2431 | 10.84.1 | опись документации в наличии, сортировка | 1d? | 2024-09-10 09:00 | 2024-09-10 18:00 |  |  |  | 655.59d | 0d | start no earlier than 2024-09-10 09:00 | Зорькин В | 8h |  |
| 2432 | 10.84.2 | оформление реестра наличия документации | 1d? | 2024-09-11 09:00 | 2024-09-11 18:00 | 2431 |  |  | 655.59d |  | start no earlier than 2024-09-06 08:00 |  |  |  |
| 2433 | 10.85 | **ремонт двигатель с шлюз питатель** | 0.02d | 2024-08-09 09:00 | 2024-08-09 09:10 |  |  |  | 679.57d |  |  |  | 0.17h |  |
| 2434 | 10.85.1 | контроль / орг курьер - | 10min | 2024-08-09 09:00 | 2024-08-09 09:10 |  |  |  | 679.57d |  | start no earlier than 2024-08-09 09:00 | Шуранов Ю | 0.17h |  |
| 2435 | 10.86 | **организовать хранение зап. частей для производства в одном месте, создать склад и нести полную материальную ответственность** | 18d? | 2024-05-09 09:00 A | 2024-06-03 18:00 |  | 15% | 15.3d? | 727.59d |  |  |  | 272h | 24h |
| 2436 | 10.86.1 | монтаж забор / ворота | 3d | 2024-05-09 09:00 A | 2024-05-13 18:00 A |  | 100% |  |  |  | start no earlier than 2024-05-09 09:00 | Макаревич А | 24h | 24h |
| 2437 | 10.86.2 | монтаж ворота, забор | 1d? | 2024-05-14 09:00 | 2024-05-14 18:00 | 2436 |  |  | 727.59d | 0d | start no earlier than 2024-05-13 09:00 | Некрасов А; Черепанов И | 16h |  |
| 2438 | 10.86.3 | подготови доски для стеллажей на 3 складе | 1d? | 2024-05-20 09:00 | 2024-05-20 18:00 |  |  |  | 737.59d |  | start no earlier than 2024-05-18 09:00 | КИнжекул | 8h |  |
| 2439 | 10.86.4 | переместить стеллажи на 2 этаж ГП + сборка | 1d? | 2024-05-15 09:00 | 2024-05-15 18:00 | 2437 |  |  | 734.59d | 7d | start no earlier than 2024-05-08 08:00 | Некрасов А; Черепанов И | 16h |  |
| 2440 | 10.86.5 | составить список всех позиций за забором для учета | 2d | 2024-05-15 09:00 | 2024-05-16 18:00 | 2437 |  |  | 727.59d | 0d | start no earlier than 2024-05-14 09:00 | Шуранов Ю | 16h |  |
| 2441 | 10.86.6 | состаить список ЗИП склад 3 цех | 2d | 2024-05-17 09:00 | 2024-05-20 18:00 | 2440 |  |  | 727.59d | 0d | start no earlier than 2024-05-08 09:00 | Шуранов Ю | 16h |  |
| 2442 | 10.86.7 | состаить список ЗИП склад слесарное помещение | 2d | 2024-05-21 09:00 | 2024-05-22 18:00 | 2441 |  |  | 727.59d | 0d | start no earlier than 2024-05-14 09:00 | Шуранов Ю | 16h |  |
| 2443 | 10.86.8 | составить список ЗИП Контейнер | 2d | 2024-05-23 09:00 | 2024-05-24 18:00 | 2442 |  |  | 727.59d | 0d | start no earlier than 2024-05-14 09:00 | Шуранов Ю | 16h |  |
| 2444 | 10.86.9 | перемещение ЗИП с 3 цеха на 2 этаж ГП | 2d | 2024-05-27 09:00 | 2024-05-28 18:00 | 2439, 2443 |  |  | 727.59d | 0d | start no earlier than 2024-05-14 09:00 | Шуранов Ю; Некрасов А; Черепанов И | 48h |  |
| 2445 | 10.86.10 | перемещение ЗИП с контейнера на 2 этаж ГП | 2d | 2024-05-29 09:00 | 2024-05-30 18:00 | 2444 |  |  | 727.59d | 0d | start no earlier than 2024-05-14 09:00 | Шуранов Ю; Некрасов А; Черепанов И | 48h |  |
| 2446 | 10.86.11 | перемещение ЗИП с слесарного помещения на 2 этаж ГП | 2d | 2024-05-31 09:00 | 2024-06-03 18:00 | 2445 |  |  | 727.59d |  | start no earlier than 2024-05-14 09:00 | Шуранов Ю; Некрасов А; Черепанов И | 48h |  |

| ID | WBS | Task | Type | Duration | Start | Finish | Predecessors | Complete | Remaining | Actual start | Total slack | Free slack | Constraint | Resources | Work | Actual work |
| --- | --- | --- | --- | --- | --- | --- | --- | --- | --- | --- | --- | --- | --- | --- | --- | --- |
| 2447 | 10.87 | **клапан эл магнитный для парогенератора на подачу воды** |  | 0.06d | 2025-01-16 09:00 | 2025-01-16 09:30 |  |  |  |  | 565.53d |  |  |  | 0.5h |  |
| 2448 | 10.87.1 | контролль остатков, заявка на катушку |  | 30min | 2025-01-16 09:00 | 2025-01-16 09:30 |  |  |  |  | 565.53d |  | start no earlier than 2025-01-16 09:00 | Шуранов Ю | 0.5h |  |
| 2449 | 10.88 | **вал с конвейера №1 разместить на ремонт** |  | 15.06d | 2024-05-14 09:00 | 2024-06-04 09:30 |  |  |  |  | 727.53d |  |  |  | 120.5h |  |
| 2450 | 10.88.1 | орг курьера |  | 15min | 2024-05-14 09:00 | 2024-05-14 09:15 |  |  |  |  | 727.53d | 0d | start no earlier than 2024-05-14 09:00 | Шуранов Ю | 0.25h |  |
| 2451 | 10.88.2 | ремонт |  | 15d | 2024-05-14 09:15 | 2024-06-04 09:15 | 2450 |  |  |  | 727.53d | 0d | start no earlier than 2024-05-08 08:00 | Подрядчик | 120h |  |
| 2452 | 10.88.3 | контроль, орг курьера забрать |  | 15min | 2024-06-04 09:15 | 2024-06-04 09:30 | 2451 |  |  |  | 727.53d |  | start no earlier than 2024-05-14 09:00 | Шуранов Ю | 0.25h |  |
| 2453 | 10.89 | подшипник LMK20.UU/FBJ или NEUTR - 4шт ТЕКО после замены |  | 10min | 2024-05-14 09:00 | 2024-05-14 09:10 |  |  |  |  | 742.57d |  | start no earlier than 2024-05-14 09:00 | Шуранов Ю | 0.17h |  |
| 2454 | 10.90 | UC204 подшипники |  | 10min | 2024-05-14 09:00 | 2024-05-14 09:10 |  |  |  |  | 742.57d |  | start no earlier than 2024-05-14 09:00 | Шуранов Ю | 0.17h |  |
| 2455 | 10.91 | сетка на дробилку 37квт 5 цех 0,5мм и 0,7 мм - заявка ЕВРОМЕД |  | 1h | 2024-05-14 09:00 | 2024-05-14 10:00 |  |  |  |  | 742.47d |  | start no earlier than 2024-05-14 09:00 | Шуранов Ю | 1h |  |
| 2456 | 11 | **ЗИП заказ (заявки)** |  | 4.02d | 2026-09-04 09:00 A | 2026-09-09 09:10 |  | 71% | 1.15d |  | 135.57d |  |  |  | 0.58h | 0.42h |
| 2457 | 11.1 | контактор для тельфера 5ц 24 переменка |  | 15min | 2026-09-04 09:00 A | 2026-09-04 09:15 A |  | 100% |  |  |  |  | start no earlier than 2026-09-04 09:00 | Зорькин В | 0.25h | 0.25h |
| 2458 | 11.2 | Наконечники штырьевые для сборки схем (получить инфу у Тимофеева) |  | 10min | 2026-09-09 09:00 | 2026-09-09 09:10 |  |  |  |  | 135.57d |  | start no earlier than 2026-09-09 09:00 | Зорькин В | 0.17h |  |
| 2459 | 11.3 | Газ в слесарку, закончился |  | 10min | 2026-09-07 09:00 A | 2026-09-07 09:10 A |  | 100% |  |  |  |  | start no earlier than 2026-09-07 09:00 | Зорькин В | 0.17h | 0.17h |
| 2460 | 12 | **ТО** |  | 772.25d? | 2023-12-28 09:00 A | 2026-12-04 11:00 |  | 41% | 459.27d? |  | 68.34d |  |  |  | 30550.2h | 16748.8h |
| 2461 | 12.1 | **1 цех** |  | 134.25d? | 2024-04-04 09:00 | 2024-10-09 11:00 |  | 54% | 61.54d? | 2023-12-28 09:00 |  |  |  |  | 5680.08h | 816.36h |
| 2462 | 12.1.1 | **Разобрать улитки с охладителя 2 линия, 4 улитки на печах и улитки циклонов - замена подшипников, каких нет сообщить** |  | 16.25d | 2026-09-07 09:00 A | 2026-09-23 11:00 |  | 95% | 0.79d |  | 121.34d |  |  |  | 22.5h | 21.5h |
| 2463 | 12.1.1.1 | очистка моторов шлюз питателей циклонов от пыли |  | 30min | 2026-09-11 09:00 A | 2026-09-11 09:30 A |  | 100% |  |  |  |  | start no earlier than 2026-09-11 08:00 | Бобренок В | 0.5h | 0.5h |
| 2464 | 12.1.1.2 | очистка центрального вала от налипей грязи через смотровое окно |  | 1h | 2026-09-11 09:00 A | 2026-09-11 10:00 A |  | 100% |  |  |  |  | start no earlier than 2026-09-11 08:00 | Бобренок В | 1h | 1h |
| 2465 | 12.1.1.3 | монтаж шильдиков на которые починил |  | 1h | 2026-09-15 09:00 | 2026-09-15 10:00 |  |  |  |  | 129.47d |  | start no earlier than 2026-09-15 09:00 | Бундин В | 1h |  |
| 2466 | 12.1.1.4 | вентилятор охладителя | manual | 4h | 2026-09-07 09:00 A | 2026-09-07 13:00 A |  | 100% |  |  |  |  |  | Бундин В | 4h | 4h |
| 2467 | 12.1.1.5 | линия 1 вентилятор печи 1 |  | 4h | 2026-09-08 09:00 A | 2026-09-08 13:00 A |  | 100% |  |  |  |  | start no earlier than 2026-09-08 09:00 | Бундин В | 4h | 4h |
| 2468 | 12.1.1.6 | линия 1 вентилятор печи 2 | manual | 4h | 2026-09-09 09:00 A | 2026-09-09 13:00 A |  | 100% |  |  |  |  |  | Бундин В | 4h | 4h |
| 2469 | 12.1.1.7 | линия 2 вентилятор циклона 1 | manual | 4h | 2026-09-09 14:00 A | 2026-09-09 18:00 A | 2468 | 100% |  |  |  |  |  | Бундин В | 4h | 4h |
| 2470 | 12.1.1.8 | линия 2 вентилятор циклона 2 | manual | 2h | 2026-09-23 09:00 A | 2026-09-23 11:00 A | 2469 | 100% |  |  |  |  |  | Бундин В; Некрасов А | 4h | 4h |
| 2471 | 12.1.2 | ТО ШУ печи №1 (замена кабеля, наконечников…) |  | 1h | 2026-08-27 09:00 | 2026-08-27 10:00 |  |  |  |  | 145.47d |  | start no earlier than 2026-08-27 09:00 | Тимофеев В | 1h |  |

| ID | WBS | Task | Duration | Start | Finish | Complete | Constraint | Resources | Work | Actual work |
| --- | --- | --- | --- | --- | --- | --- | --- | --- | --- | --- |
| 2472 | 12.1.3 | **приточная вентиляция** | 105.12d | 2026-03-04 09:00 A | 2026-07-29 10:00 A | 100% |  |  | 3h | 3h |
| 2473 | 12.1.3.1 | замена оба фильтра | 1h | 2026-03-04 09:00 A | 2026-03-04 10:00 A | 100% | start no earlier than 2026-03-04 08:00 | Труфанов А | 1h | 1h |
| 2474 | 12.1.3.2 | замена фильтра | 1h | 2026-04-15 09:00 A | 2026-04-15 10:00 A | 100% | start no earlier than 2026-04-15 09:00 | Труфанов А | 1h | 1h |
| 2475 | 12.1.3.3 | Замена фильтра | 1h | 2026-07-29 09:00 A | 2026-07-29 10:00 A | 100% | start no earlier than 2026-07-29 08:00 | Бундин В | 1h | 1h |
| 2476 | 12.1.4 | **техническая вода** | 55.06d | 2026-03-11 09:00 A | 2026-05-27 09:30 A | 100% |  |  | 1.33h | 1.33h |
| 2477 | 12.1.4.1 | проверка гидроаккумулятора | 10min | 2026-03-11 09:00 A | 2026-03-11 09:10 A | 100% | start no earlier than 2026-03-11 09:00 | Некрасов А | 0.17h | 0.17h |
| 2478 | 12.1.4.2 | замена фильтров | 10min | 2026-03-11 09:00 A | 2026-03-11 09:10 A | 100% | start no earlier than 2026-03-11 09:00 | Некрасов А | 0.17h | 0.17h |
| 2479 | 12.1.4.3 | замена фильтров | 30min | 2026-05-27 09:00 A | 2026-05-27 09:30 A | 100% | start no earlier than 2026-03-11 09:00 | Бундин В | 0.5h | 0.5h |
| 2480 | 12.1.4.4 | замена фильтров | 30min | 2026-03-12 09:00 A | 2026-03-12 09:30 A | 100% | start no earlier than 2026-03-12 09:00 | Бобренок В | 0.5h | 0.5h |
| 2481 | 12.1.5 | **линия 1** | 140.06d? | 2026-03-18 09:00 A | 2026-09-23 09:30 A | 100% |  |  | 24.25h | 24.25h |
| 2482 | 12.1.5.1 | **питатель экструдера** | 140.06d? | 2026-03-18 09:00 A | 2026-09-23 09:30 A | 100% |  |  | 10.5h | 10.5h |
| 2483 | 12.1.5.1.1 | замена подшипники | 1d? | 2026-04-08 09:00 A | 2026-04-08 18:00 A | 100% | start no earlier than 2026-04-08 09:00 | Тимофеев В | 8h | 8h |
| 2484 | 12.1.5.1.2 | контроль палстик втулки | 1h | 2026-05-13 09:00 A | 2026-05-13 10:00 A | 100% | start no earlier than 2026-05-13 09:00 | Бобренок В | 1h | 1h |
| 2485 | 12.1.5.1.3 | контроль шестерен привода, редуктора | 10min | 2026-03-18 09:00 A | 2026-03-18 09:10 A | 100% | start no earlier than 2026-03-18 09:00 | Труфанов А | 0.17h | 0.17h |
| 2486 | 12.1.5.1.4 | контроль состояние пластик втулки | 30min | 2026-06-02 09:00 A | 2026-06-02 09:30 A | 100% | start no earlier than 2026-06-02 09:00 | Некрасов А | 0.5h | 0.5h |
| 2487 | 12.1.5.1.5 | Ревизия питателя | 20min | 2026-07-29 09:00 A | 2026-07-29 09:20 A | 100% | start no earlier than 2026-07-29 08:00 | Бундин В | 0.33h | 0.33h |
| 2488 | 12.1.5.1.6 | Ревизия питателя, контроль состояния подшипников/втулки/шестерен | 30min | 2026-09-23 09:00 A | 2026-09-23 09:30 A | 100% | start no earlier than 2026-09-23 09:00 | Некрасов А | 0.5h | 0.5h |
| 2489 | 12.1.5.2 | **прекондицинер экструдера** | 100.03d | 2026-05-13 09:00 A | 2026-09-23 09:15 A | 100% |  |  | 0.75h | 0.75h |
| 2490 | 12.1.5.2.1 | контроль привода, подшипников | 15min | 2026-05-13 09:00 A | 2026-05-13 09:15 A | 100% | start no earlier than 2026-05-13 09:00 | Бобренок В | 0.25h | 0.25h |
| 2491 | 12.1.5.2.2 | контроль привода, подшипников | 15min | 2026-07-29 09:00 A | 2026-07-29 09:15 A | 100% | start no earlier than 2026-07-29 08:00 | Труфанов А | 0.25h | 0.25h |
| 2492 | 12.1.5.2.3 | контроль привода, подшипников | 15min | 2026-09-23 09:00 A | 2026-09-23 09:15 A | 100% | start no earlier than 2026-09-23 09:00 | Некрасов А | 0.25h | 0.25h |
| 2493 | 12.1.5.3 | **парогенератор** | 124.12d | 2026-04-08 09:00 A | 2026-09-22 10:00 A | 100% |  |  | 13h | 13h |
| 2494 | 12.1.5.3.1 | вскрытие электородов, чистка | 1h | 2026-05-13 09:00 A | 2026-05-13 10:00 A | 100% | start no earlier than 2026-05-13 09:00 | Бобренок В | 1h | 1h |
| 2495 | 12.1.5.3.2 | замена реле вкл насоса. (не вкл) | 2h | 2026-05-13 09:00 A | 2026-05-13 11:00 A | 100% | start no earlier than 2026-05-13 09:00 | Бобренок В | 2h | 2h |
| 2496 | 12.1.5.3.3 | замена гофротрубы / закрепить жестко | 2h | 2026-04-08 09:00 A | 2026-04-08 11:00 A | 100% | start no earlier than 2026-04-08 09:00 | Бобренок В | 2h | 2h |
| 2497 | 12.1.5.3.4 | чистка парогенератора, если нужно замена электродов | 2h | 2026-06-10 09:00 A | 2026-06-10 11:00 A | 100% | start no earlier than 2026-06-10 09:00 | Дедов В | 2h | 2h |
| 2498 | 12.1.5.3.5 | читска парогенератора, если нужно замена электродов | 2h | 2026-05-20 09:00 A | 2026-05-20 11:00 A | 100% | start no earlier than 2026-05-20 09:00 | Некрасов А | 2h | 2h |
| 2499 | 12.1.5.3.6 | читска парогенератора, если нужно замена электродов | 1h | 2026-06-02 09:00 A | 2026-06-02 10:00 A | 100% | start no earlier than 2026-06-02 09:00 | Тимофеев В | 1h | 1h |
| 2500 | 12.1.5.3.7 | вскрытие электородов, чистка | 1h | 2026-08-12 09:00 A | 2026-08-12 10:00 A | 100% | start no earlier than 2026-08-12 09:00 | Некрасов А | 1h | 1h |
| 2501 | 12.1.5.3.8 | вскрытие электородов, чистка (при остановке линии на мойку, если не остановилась, передать по смене Бундину) | 1h | 2026-09-22 09:00 A | 2026-09-22 10:00 A | 100% | start no earlier than 2026-09-22 09:00 | Макаревич А; Бундин В | 2h | 2h |

| ID | WBS | Task | Duration | Start | Finish | Complete | Remaining | Total slack | Constraint | Resources | Work | Actual work |
| --- | --- | --- | --- | --- | --- | --- | --- | --- | --- | --- | --- | --- |
| 2502 | 12.1.6 | **редуктор экструдера и маслянная станция** | 649.12d | 2024-04-04 09:00 A | 2026-09-23 10:00 | 43% | 370.16d | 121.47d |  |  | 44.33h | 21.33h |
| 2503 | 12.1.6.1 | чистка фильтра | 30min | 2026-06-02 09:00 A | 2026-06-02 09:30 A | 100% |  |  | start no earlier than 2026-06-02 09:00 | Тимофеев В | 0.5h | 0.5h |
| 2504 | 12.1.6.2 | муфта редутор-мотор | 15min | 2026-03-11 09:00 A | 2026-03-11 09:15 A | 100% |  |  | start no earlier than 2026-03-11 09:00 | Тимофеев В | 0.25h | 0.25h |
| 2505 | 12.1.6.3 | чистка фильтра | 30min | 2026-07-16 09:00 A | 2026-07-16 09:30 A | 100% |  |  | start no earlier than 2026-07-16 09:00 | Бобренок В | 0.5h | 0.5h |
| 2506 | 12.1.6.4 | тэны и термпоры шнеков- прортяжка | 30min | 2025-02-25 09:00 | 2025-02-25 09:30 |  |  | 537.53d | start no earlier than 2025-02-25 09:00 | Дедов В | 0.5h |  |
| 2507 | 12.1.6.5 | Чистка фильтра | 30min | 2026-07-29 08:00 A | 2026-07-29 09:30 A | 100% |  |  | start no earlier than 2026-07-29 08:00 | Тимофеев В | 0.5h | 0.5h |
| 2508 | 12.1.6.6 | тэны и термпоры шнеков- прортяжка | 30min | 2026-09-23 09:00 A | 2026-09-23 09:30 A | 100% |  |  | start no earlier than 2026-09-23 09:00 | Некрасов А | 0.5h | 0.5h |
| 2509 | 12.1.6.7 | Чистка фильтра | 30min | 2026-09-23 09:00 A | 2026-09-23 09:30 A | 100% |  |  | start no earlier than 2026-09-23 09:00 | Бундин В | 0.5h | 0.5h |
| 2510 | 12.1.6.8 | **шкаф управления экструдером** | 131.03d | 2026-03-31 09:00 A | 2026-09-23 09:15 A | 100% |  |  |  |  | 1.5h | 1.5h |
| 2511 | 12.1.6.8.1 | протяжка контактов | 30min | 2026-03-31 09:00 A | 2026-03-31 09:30 A | 100% |  |  | start no earlier than 2026-03-11 09:00 | Некрасов А | 0.5h | 0.5h |
| 2512 | 12.1.6.8.2 | частотные привода экструдера, ножей, питателя - продувка | 30min | 2026-05-27 09:00 A | 2026-05-27 09:30 A | 100% |  |  | start no earlier than 2026-05-27 09:00 | Бундин В | 0.5h | 0.5h |
| 2513 | 12.1.6.8.3 | частотные привода экструдера, ножей, питателя - продувка | 15min | 2026-07-29 09:00 A | 2026-07-29 09:15 A | 100% |  |  | start no earlier than 2026-07-29 08:00 | Труфанов А | 0.25h | 0.25h |
| 2514 | 12.1.6.8.4 | частотные привода экструдера, ножей, питателя - продувка | 15min | 2026-09-23 09:00 A | 2026-09-23 09:15 A | 100% |  |  | start no earlier than 2026-09-23 09:00 | Некрасов А | 0.25h | 0.25h |
| 2515 | 12.1.6.9 | **блок тэнов сушки** | 95.03d | 2026-05-20 09:00 A | 2026-09-23 09:15 | 83% | 15.84d | 121.56d |  |  | 1.5h | 1.25h |
| 2516 | 12.1.6.9.1 | ревизия, замена отгоревших жил, проверка токов | 1h | 2026-05-20 09:00 A | 2026-05-20 10:00 A | 100% |  |  | start no earlier than 2026-05-20 09:00 | Некрасов А | 1h | 1h |
| 2517 | 12.1.6.9.2 | ревизия/ проверка токов | 15min | 2026-08-26 09:00 | 2026-08-26 09:15 |  |  | 146.56d | start no earlier than 2026-08-26 09:00 | Некрасов А | 0.25h |  |
| 2518 | 12.1.6.9.3 | ревизия/ проверка токов | 15min | 2026-09-23 09:00 A | 2026-09-23 09:15 A | 100% |  |  | start no earlier than 2026-09-23 09:00 | Труфанов А | 0.25h | 0.25h |
| 2519 | 12.1.6.10 | **шкаф управления тэнами сушки** | 68.5d | 2026-06-10 09:00 A | 2026-09-11 13:00 | 11% | 61.29d | 133.09d |  |  | 4.75h | 0.5h |
| 2520 | 12.1.6.10.1 | протяжка контактов | 15min | 2026-06-10 09:00 | 2026-06-10 09:15 |  |  | 201.56d | start no earlier than 2026-06-10 09:00 | Дедов В | 0.25h |  |
| 2521 | 12.1.6.10.2 | замена неисправных жил | 4h | 2026-09-11 09:00 | 2026-09-11 13:00 |  |  | 133.09d | start no earlier than 2026-09-11 09:00 | Тимофеев В | 4h |  |
| 2522 | 12.1.6.10.3 | частотные привода экструдера, ножей, питателя - продувка | 30min | 2026-07-16 09:00 A | 2026-07-16 09:30 A | 100% |  |  | start no earlier than 2026-07-16 09:00 | Бобренок В | 0.5h | 0.5h |
| 2523 | 12.1.6.11 | конвейер №1 с печи в дрожировщик прорверка подшипники, реуктор | 30min | 2025-02-17 09:00 | 2025-02-17 09:30 |  |  | 543.53d | start no earlier than 2025-02-15 09:00 | Дедов В | 0.5h |  |
| 2524 | 12.1.6.12 | Осмотр, продувка, протяжка контактов | 20min | 2026-09-23 09:00 A | 2026-09-23 09:20 A | 100% |  |  | start no earlier than 2026-09-23 09:00 | Труфанов А | 0.33h | 0.33h |
| 2525 | 12.1.6.13 | **барабан смесительный дрожировка - прорверка подшипнки , реуктор** | 150.03d | 2026-03-04 08:00 A | 2026-09-23 09:15 A | 100% |  |  |  |  | 2.5h | 2.5h |
| 2526 | 12.1.6.13.1 | замена вал № 4 час | 2h | 2026-03-04 08:00 A | 2026-03-04 11:00 A | 100% |  |  | start no earlier than 2026-03-04 08:00 | Тимофеев В | 2h | 2h |
| 2527 | 12.1.6.13.2 | Дефектовка - проверить подачу, вибрации, посторонние шумы. | 15min | 2026-07-29 08:00 A | 2026-07-29 09:15 A | 100% |  |  | start no earlier than 2026-07-29 08:00 | Тимофеев В | 0.25h | 0.25h |
| 2528 | 12.1.6.13.3 | Дефектовка - проверить подачу, вибрации, посторонние шумы. | 15min | 2026-09-23 09:00 A | 2026-09-23 09:15 A | 100% |  |  | start no earlier than 2026-09-23 09:00 | Некрасов А | 0.25h | 0.25h |

| ID | WBS | Task | Duration | Start | Finish | Predecessors | Complete | Remaining | Actual start | Total slack | Free slack | Constraint | Resources | Work | Actual work |
| --- | --- | --- | --- | --- | --- | --- | --- | --- | --- | --- | --- | --- | --- | --- | --- |
| 2529 | 12.1.6.14 | **печь** | 0.25d | 2026-07-16 09:00 A | 2026-07-16 11:00 A |  | 100% |  |  |  |  |  |  | 7h | 7h |
| 2530 | 12.1.6.14.1 | проверка состояния сетки, ремонт шплинтов | 2h | 2026-07-16 09:00 A | 2026-07-16 11:00 A |  | 100% |  |  |  |  | start no earlier than 2026-07-16 09:00 | Бобренок В; Некрасов А; Труфанов А | 6h | 6h |
| 2531 | 12.1.6.14.2 | укоротить звено привода | 1h | 2026-07-16 09:00 A | 2026-07-16 10:00 A |  | 100% |  |  |  |  | start no earlier than 2026-07-16 09:00 | Некрасов А | 1h | 1h |
| 2532 | 12.1.6.15 | конвейер №2 с дрожировки в охладитель - проверка подшипники , редуктор | 30min | 2025-02-17 09:00 | 2025-02-17 09:30 |  |  |  |  | 543.53d |  | start no earlier than 2025-02-15 09:00 | Дедов В | 0.5h |  |
| 2533 | 12.1.6.16 | охладитель сеточный - смазка, натяжка цепи. Проверка редуктор | 1h | 2025-02-17 09:00 | 2025-02-17 10:00 |  |  |  |  | 543.47d |  | start no earlier than 2025-02-16 09:00 | Черепанов И | 1h |  |
| 2534 | 12.1.6.17 | вентиляторы обдува сушки | 2h | 2024-06-14 09:00 | 2024-06-14 11:00 |  |  |  |  | 719.34d |  | start no earlier than 2024-06-14 09:00 | ТО_2 | 2h |  |
| 2535 | 12.1.6.18 | смеситель СМ-500 | 2h | 2024-04-10 09:00 | 2024-04-10 11:00 |  |  |  |  | 766.09d | 0d | start no earlier than 2024-04-10 09:00 | ТО_1 | 2h |  |
| 2536 | 12.1.6.19 | шнек выгрузки смесителя | 2h | 2024-04-10 11:00 | 2024-04-10 13:00 | 2535 |  |  |  | 766.09d |  | start no earlier than 2024-01-03 09:00 | ТО_1 | 2h |  |
| 2537 | 12.1.6.20 | электромотор экструдера | 2h | 2024-04-04 09:00 | 2024-04-04 11:00 |  |  |  |  | 770.34d |  | start no earlier than 2024-03-08 09:00 | ТО_1 | 2h |  |
| 2538 | 12.1.6.21 | редуктор шнеков экструдера | 2h | 2024-04-04 09:00 | 2024-04-04 11:00 |  |  |  |  | 770.34d |  | start no earlier than 2024-01-26 09:00 | ТО_М | 2h |  |
| 2539 | 12.1.6.22 | чистка фильтр редутор шнеков | 1h | 2025-02-17 09:00 | 2025-02-17 10:00 |  |  |  |  | 543.47d |  | start no earlier than 2025-02-16 09:00 | Черепанов И | 1h |  |
| 2540 | 12.1.6.23 | пневотранспорт вентилятор | 2h | 2024-05-07 09:00 | 2024-05-07 11:00 |  |  |  |  | 747.34d |  | start no earlier than 2024-05-07 09:00 | ТО_1 | 2h |  |
| 2541 | 12.1.6.24 | пневотранспорт роторный питатель - проверка масла | 30min | 2025-02-17 09:00 | 2025-02-17 09:30 |  |  |  |  | 543.53d |  | start no earlier than 2025-02-16 09:00 | Черепанов И | 0.5h |  |
| 2542 | 12.1.6.25 | пневотранспорт роторный питатель - проверка масла | 30min | 2026-07-29 09:00 A | 2026-07-29 09:30 A |  | 100% |  |  |  |  | start no earlier than 2026-07-29 08:00 | Труфанов А | 0.5h | 0.5h |
| 2543 | 12.1.6.26 | привод сетки ПЕЧИ сушки - прорверка масла | 30min | 2025-02-17 09:00 | 2025-02-17 09:30 |  |  |  |  | 543.53d |  | start no earlier than 2025-02-16 09:00 | Черепанов И | 0.5h |  |
| 2544 | 12.1.6.27 | привод сетки ПЕЧИ сушки - прорверка масла | 30min | 2026-07-29 09:00 A | 2026-07-29 09:30 A |  | 100% |  |  |  |  | start no earlier than 2026-07-29 08:00 | Труфанов А | 0.5h | 0.5h |
| 2545 | 12.1.6.28 | насос подачи жира и смесительный узел, баки подогрева протяжка | 1h | 2025-02-17 09:00 | 2025-02-17 10:00 |  |  |  |  | 543.47d |  | start no earlier than 2025-02-15 09:00 | Дедов В | 1h |  |
| 2546 | 12.1.6.29 | дозатор сухой гидролизат - разборка, чистка, замена подшипников | 2h | 2026-08-18 09:00 A | 2026-08-18 11:00 A |  | 100% |  |  |  |  | start no earlier than 2026-08-18 09:00 | Бундин В | 2h | 2h |
| 2547 | 12.1.6.30 | проверка передаточн число редуктора/сравнить с 2л. Проверить остатки для замены на менее скоростной | 1h | 2026-08-20 09:00 | 2026-08-20 10:00 |  |  |  |  | 150.47d |  | start no earlier than 2026-08-20 09:00 | Макаревич А | 1h |  |
| 2548 | 12.1.6.31 | Осмотр цепи и сетки | 1h | 2026-07-29 09:00 A | 2026-07-29 10:00 A |  | 100% |  |  |  |  | start no earlier than 2026-07-29 08:00 | Труфанов А | 1h | 1h |
| 2549 | 12.1.6.32 | Контроль состояния сетки/цепи | 30min | 2026-09-23 09:00 A | 2026-09-23 09:30 A |  | 100% |  |  |  |  | start no earlier than 2026-09-23 09:00 | Некрасов А | 0.5h | 0.5h |
| 2550 | 12.1.6.33 | Смазка цепи (при наличии на складе) | 1h | 2026-09-23 09:00 A | 2026-09-23 10:00 A |  | 100% |  |  |  |  | start no earlier than 2026-09-23 09:00 | Некрасов А | 1h | 1h |
| 2551 | 12.1.7 | **линия 2** | 0.25d? | 2023-12-29 09:00 | 2023-12-29 11:00 |  | 72% | 0.07d? | 2024-04-10 09:00 |  |  |  |  | 37.5h | 27.25h |
| 2552 | 12.1.7.1 | **питатель экструдера** | 140.06d | 2026-03-18 09:00 A | 2026-09-23 09:30 A |  | 100% |  |  |  |  |  |  | 4h | 4h |
| 2553 | 12.1.7.1.1 | контроль состояние пластик втулки | 30min | 2026-06-02 09:00 A | 2026-06-02 09:30 A |  | 100% |  |  |  |  | start no earlier than 2026-06-02 09:00 | Некрасов А | 0.5h | 0.5h |
| 2554 | 12.1.7.1.2 | замена подшипники | 1h | 2026-04-08 09:00 A | 2026-04-08 10:00 A |  | 100% |  |  |  |  | start no earlier than 2026-04-08 09:00 |  |  |  |
| 2555 | 12.1.7.1.3 | замена шестеренок -взять у Веры на складе | 2h | 2026-05-20 09:00 A | 2026-05-20 11:00 A |  | 100% |  |  |  |  | start no earlier than 2026-05-20 09:00 | Бобренок В | 2h | 2h |
| 2556 | 12.1.7.1.4 | контроль пластик втулки | 30min | 2026-05-13 09:00 A | 2026-05-13 09:30 A |  | 100% |  |  |  |  | start no earlier than 2026-05-13 09:00 | Бобренок В | 0.5h | 0.5h |
| 2557 | 12.1.7.1.5 | контроль шестерен привода, редуктора | 10min | 2026-03-18 09:00 A | 2026-03-18 09:10 A |  | 100% |  |  |  |  | start no earlier than 2026-03-18 09:00 | Труфанов А | 0.17h | 0.17h |
| 2558 | 12.1.7.1.6 | Ревизия питателя | 20min | 2026-07-29 09:00 A | 2026-07-29 09:20 A |  | 100% |  |  |  |  | start no earlier than 2026-07-29 08:00 | Бундин В | 0.33h | 0.33h |
| 2559 | 12.1.7.1.7 | Ревизия питателя, контроль состояния подшипников/втулки/шестерен | 30min | 2026-09-23 09:00 A | 2026-09-23 09:30 A |  | 100% |  |  |  |  | start no earlier than 2026-09-23 09:00 | Бундин В | 0.5h | 0.5h |

| ID | WBS | Task | Duration | Start | Finish | Complete | Remaining | Total slack | Constraint | Resources | Work | Actual work |
| --- | --- | --- | --- | --- | --- | --- | --- | --- | --- | --- | --- | --- |
| 2560 | 12.1.7.2 | **прекондицинер экструдера** | 100.03d | 2026-05-13 09:00 A | 2026-09-23 09:15 A | 100% |  |  |  |  | 0.75h | 0.75h |
| 2561 | 12.1.7.2.1 | контроль привода, подшипников | 15min | 2026-05-13 09:00 A | 2026-05-13 09:15 A | 100% |  |  | start no earlier than 2026-05-13 09:00 | Бобренок В | 0.25h | 0.25h |
| 2562 | 12.1.7.2.2 | контроль привода, подшипников | 15min | 2026-07-29 09:00 A | 2026-07-29 09:15 A | 100% |  |  | start no earlier than 2026-07-29 08:00 | Труфанов А | 0.25h | 0.25h |
| 2563 | 12.1.7.2.3 | контроль привода, подшипников | 15min | 2026-09-23 09:00 A | 2026-09-23 09:15 A | 100% |  |  | start no earlier than 2026-09-23 09:00 | Бундин В | 0.25h | 0.25h |
| 2564 | 12.1.7.3 | **парогенератор** | 65.12d | 2026-05-13 09:00 A | 2026-08-12 10:00 A | 100% |  |  |  |  | 2h | 2h |
| 2565 | 12.1.7.3.1 | вскрытие электородов, чистка | 1h | 2026-05-13 09:00 A | 2026-05-13 10:00 A | 100% |  |  | start no earlier than 2026-05-13 09:00 | Бобренок В | 1h | 1h |
| 2566 | 12.1.7.3.2 | вскрытие электородов, чистка | 1h | 2026-08-12 09:00 A | 2026-08-12 10:00 A | 100% |  |  | start no earlier than 2026-08-12 09:00 | Некрасов А | 1h | 1h |
| 2567 | 12.1.7.4 | тэны и термпоры шнеков- прортяжка | 30min | 2024-04-10 09:00 | 2024-04-10 09:30 |  |  | 766.53d | start no earlier than 2024-04-10 09:00 | Черепанов И | 0.5h |  |
| 2568 | 12.1.7.5 | Чистка парогенератора | 1h | 2026-07-29 09:00 A | 2026-07-29 10:00 A | 100% |  |  | start no earlier than 2026-07-29 08:00 | Бундин В | 1h | 1h |
| 2569 | 12.1.7.6 | вскрытие электородов, чистка (при остановке линии на мойку, если не остановилась, передать по смене Бундину) | 1h | 2026-09-23 09:00 A | 2026-09-23 10:00 A | 100% |  |  | start no earlier than 2026-09-23 09:00 | Некрасов А | 1h | 1h |
| 2570 | 12.1.7.7 | **шкаф управления экструдером** | 145.03d | 2026-03-11 09:00 A | 2026-09-23 09:15 A | 100% |  |  |  |  | 1.75h | 1.75h |
| 2571 | 12.1.7.7.1 | протяжка контактов | 30min | 2026-03-11 09:00 A | 2026-03-11 09:30 A | 100% |  |  | start no earlier than 2026-03-11 09:00 | Некрасов А | 0.5h | 0.5h |
| 2572 | 12.1.7.7.2 | частотные привода экструдера, ножей, питателя - продувка | 30min | 2026-05-27 09:00 A | 2026-05-27 09:30 A | 100% |  |  | start no earlier than 2026-05-27 09:00 | Бундин В | 0.5h | 0.5h |
| 2573 | 12.1.7.7.3 | частотные привода экструдера, ножей, питателя - продувка | 15min | 2026-07-16 09:00 A | 2026-07-16 09:15 A | 100% |  |  | start no earlier than 2026-07-16 09:00 | Бобренок В | 0.25h | 0.25h |
| 2574 | 12.1.7.7.4 | частотные привода экструдера, ножей, питателя - продувка | 15min | 2026-07-29 09:00 A | 2026-07-29 09:15 A | 100% |  |  | start no earlier than 2026-07-29 08:00 | Труфанов А | 0.25h | 0.25h |
| 2575 | 12.1.7.7.5 | частотные привода экструдера, ножей, питателя - продувка | 15min | 2026-09-23 09:00 A | 2026-09-23 09:15 A | 100% |  |  | start no earlier than 2026-09-23 09:00 | Труфанов А | 0.25h | 0.25h |
| 2576 | 12.1.7.8 | **редуктор экструдера и маслянная станция** | 95.12d | 2026-05-20 09:00 A | 2026-09-23 10:00 A | 100% |  |  |  |  | 4.5h | 4.5h |
| 2577 | 12.1.7.8.1 | чистка фильтра | 30min | 2026-06-02 09:00 A | 2026-06-02 09:30 A | 100% |  |  | start no earlier than 2026-06-02 09:00 | Тимофеев В | 0.5h | 0.5h |
| 2578 | 12.1.7.8.2 | чистка фильтра | 30min | 2026-05-20 09:00 A | 2026-05-20 09:30 A | 100% |  |  | start no earlier than 2026-05-20 09:00 | Тимофеев В | 0.5h | 0.5h |
| 2579 | 12.1.7.8.3 | муфта редутор-мотор проверка состояния | 30min | 2026-05-27 09:00 A | 2026-05-27 09:30 A | 100% |  |  | start no earlier than 2026-05-27 09:00 | Тимофеев В | 0.5h | 0.5h |
| 2580 | 12.1.7.8.4 | чистка фильтра | 30min | 2026-07-16 09:00 A | 2026-07-16 09:30 A | 100% |  |  | start no earlier than 2026-07-16 09:00 | Бобренок В | 0.5h | 0.5h |
| 2581 | 12.1.7.8.5 | Чистка фильтра | 30min | 2026-07-29 08:00 A | 2026-07-29 09:30 A | 100% |  |  | start no earlier than 2026-07-29 08:00 | Тимофеев В | 0.5h | 0.5h |
| 2582 | 12.1.7.8.6 | Осмотр редуктор-двигатель, нехороший шум, проверить втулки МУВП/заменить | 1h | 2026-09-23 09:00 A | 2026-09-23 10:00 A | 100% |  |  | start no earlier than 2026-09-23 09:00 | Бундин В; Некрасов А | 2h | 2h |
| 2583 | 12.1.7.9 | **блок тэнов сушки - протяжка** | 95.62d? | 2026-05-20 09:00 A | 2026-09-23 15:00 | 67% | 31.88d? | 120.97d |  |  | 12h | 8h |
| 2584 | 12.1.7.9.1 | ревизия, замена отгоревших жил, проверка токов | 3h | 2026-05-20 09:00 A | 2026-05-20 12:00 A | 100% |  |  | start no earlier than 2026-05-20 09:00 | Бобренок В | 3h | 3h |
| 2585 | 12.1.7.9.2 | ревизия, замена отгоревших жил, проверка токов | 4h? | 2026-09-11 09:00 | 2026-09-11 13:00 |  |  | 133.09d | start no earlier than 2026-09-11 09:00 | Тимофеев В | 4h |  |
| 2586 | 12.1.7.9.3 | Полное ТО шкафа управления, замена всех отгоревших жил/клемм, протяжка контактов | 5h | 2026-09-23 09:00 A | 2026-09-23 15:00 A | 100% |  |  | start no earlier than 2026-09-23 09:00 | Труфанов А | 5h | 5h |

| ID | WBS | Task | Duration | Start | Finish | Complete | Remaining | Total slack | Constraint | Resources | Work | Actual work |
| --- | --- | --- | --- | --- | --- | --- | --- | --- | --- | --- | --- | --- |
| 2587 | 12.1.7.10 | **шкаф управления тэнами сушки** | 65.03d | 2026-05-20 09:00 A | 2026-08-19 09:15 | 83% | 10.84d | 151.56d |  |  | 1.5h | 1.25h |
| 2588 | 12.1.7.10.1 | протяжка контактов | 15min | 2026-05-20 09:00 A | 2026-05-20 09:15 A | 100% |  |  | start no earlier than 2026-05-20 09:00 | Бобренок В | 0.25h | 0.25h |
| 2589 | 12.1.7.10.2 | замена неисправных жил | 1h | 2026-05-20 09:00 A | 2026-05-20 10:00 A | 100% |  |  | start no earlier than 2026-05-20 09:00 | Бобренок В | 1h | 1h |
| 2590 | 12.1.7.10.3 | ревизия/ проверка токов | 15min | 2026-08-19 09:00 | 2026-08-19 09:15 |  |  | 151.56d | start no earlier than 2026-08-19 09:00 | Некрасов А | 0.25h |  |
| 2591 | 12.1.7.11 | конвейер №1 с печи в дрожировщик прорверка подшипники, реуктор | 30min | 2024-10-04 09:00 | 2024-10-04 09:30 |  |  | 639.53d | start no earlier than 2024-10-04 09:00 | Тимофеев В | 0.5h |  |
| 2592 | 12.1.7.12 | барабан смесительный дрожировка - прорверка подшипнки , реуктор | 30min | 2024-10-04 09:00 | 2024-10-04 09:30 |  |  | 639.53d | start no earlier than 2024-10-04 09:00 | Тимофеев В | 0.5h |  |
| 2593 | 12.1.7.13 | конвейер №2 с дрожировки в охладитель - проверка подшипники , редуктор | 30min | 2024-10-04 09:00 | 2024-10-04 09:30 |  |  | 639.53d | start no earlier than 2024-10-04 09:00 | Тимофеев В | 0.5h |  |
| 2594 | 12.1.7.14 | охладитель сеточный - смазка, натяжка цепи. Проверка редуктор | 1h | 2026-09-23 09:00 A | 2026-09-23 10:00 A | 100% |  |  | start no earlier than 2026-09-23 09:00 | Бундин В; Некрасов А | 2h | 2h |
| 2595 | 12.1.7.15 | вентиляторы обдува сушки | 2h | 2024-06-14 09:00 | 2024-06-14 11:00 |  |  | 719.34d | start no earlier than 2024-06-14 09:00 | ТО_2 | 2h |  |
| 2596 | 12.1.7.16 | дозатор сухой гидролизат - разборка, чистка, замена подшипников | 2h | 2026-08-20 09:00 | 2026-08-20 11:00 |  |  | 150.34d | start no earlier than 2026-08-20 09:00 | Макаревич А | 2h |  |
| 2597 | 12.1.7.17 | **Насос гидролизата** | 85.06d | 2026-04-01 09:00 A | 2026-07-29 09:30 A | 100% |  |  |  |  | 1h | 1h |
| 2598 | 12.1.7.17.1 | Дефектовка - проверить подачу, вибрации, посторонние шумы. | 30min | 2026-04-01 09:00 A | 2026-04-01 09:30 A | 100% |  |  | start no earlier than 2026-04-01 09:00 | Тимофеев В | 0.5h | 0.5h |
| 2599 | 12.1.7.17.2 | Дефектовка - проверить подачу, вибрации, посторонние шумы. | 30min | 2026-07-29 08:00 A | 2026-07-29 09:30 A | 100% |  |  | start no earlier than 2026-07-29 08:00 | Тимофеев В | 0.5h | 0.5h |
| 2600 | 12.1.8 | **Квадропак** | 121.12d | 2026-04-22 09:00 A | 2026-09-30 10:00 | 90% | 11.82d | 115.47d |  |  | 11.25h | 9.25h |
| 2601 | 12.1.8.1 | проверить резьбу крепления встряхивателя №1, закрепить | 1h | 2026-06-02 09:00 A | 2026-06-02 10:00 A | 100% |  |  | start no earlier than 2026-06-02 09:00 | Макаревич А | 1h | 1h |
| 2602 | 12.1.8.2 | Замена резинки на воздушном редукторе находящемся под мультиголовой (весы) | 1h | 2026-04-22 09:00 A | 2026-04-22 10:00 A | 100% |  |  | start no earlier than 2026-04-22 09:00 | Бундин В | 1h | 1h |
| 2603 | 12.1.8.3 | ТО узла пайки. Чистка тен/ревизия термоизолятора пневморедуктора | 1h | 2026-05-27 09:00 A | 2026-05-27 10:00 A | 100% |  |  | start no earlier than 2026-05-27 09:00 | Тимофеев В | 1h | 1h |
| 2604 | 12.1.8.4 | ревизия привод встряхивателя | 30min | 2026-05-27 09:00 A | 2026-05-27 09:30 A | 100% |  |  | start no earlier than 2026-05-27 09:00 | Тимофеев В | 0.5h | 0.5h |
| 2605 | 12.1.8.5 | ревизия протяжки кинематики низ / верх | 30min | 2026-05-27 09:00 A | 2026-05-27 09:30 A | 100% |  |  | start no earlier than 2026-05-27 09:00 | Тимофеев В | 0.5h | 0.5h |
| 2606 | 12.1.8.6 | ревизия вакуумный насос | 15min | 2026-05-27 09:00 A | 2026-05-27 09:15 A | 100% |  |  | start no earlier than 2026-05-27 09:00 | Тимофеев В | 0.25h | 0.25h |
| 2607 | 12.1.8.7 | замена вал выход | 4h | 2026-06-15 09:00 A | 2026-06-15 13:00 A | 100% |  |  | start no earlier than 2026-06-15 09:00 | Тимофеев В | 4h | 4h |
| 2608 | 12.1.8.8 | проверить пневмоцилиндр на встряхивателе, если нужно заменить | 1h | 2026-05-20 09:00 A | 2026-05-20 10:00 A | 100% |  |  | start no earlier than 2026-05-20 09:00 | Некрасов А | 1h | 1h |
| 2609 | 12.1.8.9 | Закрепить, подровнять, слесарные работы которые требуются | 1h | 2026-09-30 09:00 | 2026-09-30 10:00 |  |  | 115.47d | start no earlier than 2026-09-30 09:00 | Труфанов А; Некрасов А | 2h |  |
| 2610 | 12.1.9 | **Парогенератор** | 6.25d | 2026-06-02 09:00 A | 2026-06-10 11:00 A | 100% |  |  |  |  | 3h | 3h |
| 2611 | 12.1.9.1 | читска парогенератора, если нужно замена электродов | 2h | 2026-06-10 09:00 A | 2026-06-10 11:00 A | 100% |  |  | start no earlier than 2026-06-10 09:00 | Дедов В | 2h | 2h |
| 2612 | 12.1.9.2 | читска парогенератора, если нужно замена электродов | 1h | 2026-06-02 09:00 A | 2026-06-02 10:00 A | 100% |  |  | start no earlier than 2026-06-02 09:00 | Тимофеев В | 1h | 1h |

| ID | WBS | Task | Duration | Start | Finish | Complete | Remaining | Total slack | Constraint | Resources | Work | Actual work |
| --- | --- | --- | --- | --- | --- | --- | --- | --- | --- | --- | --- | --- |
| 2613 | 12.1.10 | **Дражжировка** | 0.25d | 2026-08-27 09:00 | 2026-08-27 11:00 |  |  | 145.34d |  |  | 2.42h |  |
| 2614 | 12.1.10.1 | Проверка подшипников на барабанах | 15min | 2026-08-27 09:00 | 2026-08-27 09:15 |  |  | 145.56d | start no earlier than 2026-08-27 09:00 | Тимофеев В | 0.25h |  |
| 2615 | 12.1.10.2 | Проверка фильтров | 10min | 2026-08-27 09:00 | 2026-08-27 09:10 |  |  | 145.57d | start no earlier than 2026-08-27 09:00 | Тимофеев В | 0.17h |  |
| 2616 | 12.1.10.3 | Ревизия насоса гидролизата | 2h | 2026-08-27 09:00 | 2026-08-27 11:00 |  |  | 145.34d | start no earlier than 2026-08-27 09:00 | Тимофеев В | 2h |  |
| 2617 | 12.1.11 | **жиротопка и насос перекачки жира** | 600.03d | 2024-04-10 09:00 A | 2026-07-29 09:15 | 25% | 450.02d | 166.56d |  |  | 1h | 0.25h |
| 2618 | 12.1.11.1 | блок тэнов -протяжка | 30min | 2024-04-10 09:00 | 2024-04-10 09:30 |  |  | 766.53d | start no earlier than 2024-04-10 08:00 | Тимофеев В | 0.5h |  |
| 2619 | 12.1.11.2 | насос, фильтр - осмотр, чистка | 15min | 2024-04-25 09:00 | 2024-04-25 09:15 |  |  | 755.56d | start no earlier than 2024-04-25 09:00 | Тимофеев В | 0.25h |  |
| 2620 | 12.1.11.3 | насос, фильтр - осмотр, чистка | 15min | 2026-07-29 09:00 A | 2026-07-29 09:15 A | 100% |  |  | start no earlier than 2026-07-29 08:00 | Труфанов А | 0.25h | 0.25h |
| 2621 | 12.1.12 | **упаковщкики** | 429.25d | 2025-02-14 09:00 A | 2026-09-30 11:00 | 14% | 367.93d | 115.34d |  |  | 28h | 4h |
| 2622 | 12.1.12.1 | упаковщик ТЕКО 0,4кг | 2h | 2025-02-16 09:00 A | 2025-02-17 11:00 A | 100% |  |  | start no earlier than 2025-02-16 09:00 | Дедов В | 2h | 2h |
| 2623 | 12.1.12.2 | упаковщик ТЕКО 0,4кг | 2h | 2026-08-26 09:00 | 2026-08-26 11:00 |  |  | 146.34d | start no earlier than 2026-08-26 09:00 | Тимофеев В | 2h |  |
| 2624 | 12.1.12.3 | упаковщик НОТИС | 2h | 2025-02-17 09:00 | 2025-02-17 11:00 |  |  | 543.34d | start no earlier than 2025-02-16 09:00 | Дедов В | 2h |  |
| 2625 | 12.1.12.4 | упаковщик ТЕКО 1.5кг | 2h | 2025-02-17 09:00 | 2025-02-17 11:00 |  |  | 543.34d | start no earlier than 2025-02-16 09:00 | Дедов В | 2h |  |
| 2626 | 12.1.12.5 | упаковщик КВАДРОПАК | 2h | 2025-02-17 09:00 | 2025-02-17 11:00 |  |  | 543.34d | start no earlier than 2025-02-16 09:00 | Дедов В | 2h |  |
| 2627 | 12.1.12.6 | нория и вибробункер КВАДРОПАК | 2h | 2025-02-17 09:00 | 2025-02-17 11:00 |  |  | 543.34d | start no earlier than 2025-02-16 09:00 | Дедов В | 2h |  |
| 2628 | 12.1.12.7 | запайщик 1 | 2h | 2025-02-17 09:00 | 2025-02-17 11:00 |  |  | 543.34d | start no earlier than 2025-02-17 09:00 | Дедов В | 2h |  |
| 2629 | 12.1.12.8 | запайщик 2 | 2h | 2025-02-17 09:00 | 2025-02-17 11:00 |  |  | 543.34d | start no earlier than 2025-02-17 09:00 | Дедов В | 2h |  |
| 2630 | 12.1.12.9 | конвейер гп ТЕКО 1,5 | 2h | 2025-02-14 09:00 | 2025-02-14 11:00 |  |  | 544.34d | start no earlier than 2025-02-14 09:00 | Макаревич А | 2h |  |
| 2631 | 12.1.12.10 | конвейер гп ТЕКО 0,4 | 2h | 2025-02-14 09:00 | 2025-02-14 11:00 |  |  | 544.34d | start no earlier than 2025-02-14 09:00 | Макаревич А | 2h |  |
| 2632 | 12.1.12.11 | накопительный стол 1,5 | 2h | 2025-02-17 09:00 | 2025-02-17 11:00 |  |  | 543.34d | start no earlier than 2025-02-15 09:00 | Макаревич А | 2h |  |
| 2633 | 12.1.12.12 | накопительный стол 0,4 | 2h | 2025-02-17 09:00 | 2025-02-17 11:00 |  |  | 543.34d | start no earlier than 2025-02-15 09:00 | Макаревич А | 2h |  |
| 2634 | 12.1.12.13 | Осмотр всех упаковщиков/транспортеров/накопительных столов/ всех щитков оборудования | 2h | 2026-07-29 09:00 A | 2026-07-29 11:00 A | 100% |  |  | start no earlier than 2026-07-29 08:00 | Бундин В | 2h | 2h |
| 2635 | 12.1.12.14 | Осмотр всех упаковщиков/транспортеров/накопительных столов/ всех щитков оборудования | 2h | 2026-09-30 09:00 | 2026-09-30 11:00 |  |  | 115.34d | start no earlier than 2026-09-30 09:00 | Тимофеев В | 2h |  |
| 2636 | 12.1.13 | **электрооборудование** | 627.12d? | 2024-04-04 09:00 A | 2026-08-31 10:00 | 12% | 553.35d? | 143.47d |  | ТО | 5496.49h | 701.19h |
| 2637 | 12.1.13.1 | ВРУ1 | 15min | 2026-05-20 09:00 | 2026-05-20 09:15 |  |  | 216.56d | start no earlier than 2026-05-20 09:00 | ТО; Тимофеев В | 0.5h |  |
| 2638 | 12.1.13.2 | ВРУ2 | 15min | 2026-05-20 09:00 | 2026-05-20 09:15 |  |  | 216.56d | start no earlier than 2026-05-20 09:00 | ТО; Тимофеев В | 0.5h |  |
| 2639 | 12.1.13.3 | ЩР1 экструдер | 15min | 2026-05-20 09:00 | 2026-05-20 09:15 |  |  | 216.56d | start no earlier than 2026-05-20 09:00 | ТО; Тимофеев В | 0.5h |  |
| 2640 | 12.1.13.4 | ЩР2 упаковка №1 | 15min | 2026-05-20 09:00 | 2026-05-20 09:15 |  |  | 216.56d | start no earlier than 2026-05-20 09:00 | ТО; Тимофеев В | 0.5h |  |
| 2641 | 12.1.13.5 | ЩР3 упаковка №2 | 15min | 2026-05-20 09:00 | 2026-05-20 09:15 |  |  | 216.56d | start no earlier than 2026-05-20 09:00 | ТО; Тимофеев В | 0.5h |  |
| 2642 | 12.1.13.6 | ЩР жиротопка и зона жиров | 1h | 2026-05-20 09:00 | 2026-05-20 10:00 |  |  | 216.47d | start no earlier than 2026-05-20 09:00 | ТО; Некрасов А | 2h |  |

| ID | WBS | Task | Duration | Start | Finish | Complete | Remaining | Total slack | Constraint | Resources | Work | Actual work |
| --- | --- | --- | --- | --- | --- | --- | --- | --- | --- | --- | --- | --- |
| 2643 | 12.1.13.7 | **Компрессор 1 цех** | 60.12d? | 2026-06-07 09:00 A | 2026-08-31 10:00 | 20% | 48.1d? | 143.47d |  | ТО | 483h | 112.4h |
| 2644 | 12.1.13.7.1 | продувка радиаторов осушителя и компрессора, слив конденсата | 1h | 2026-06-07 09:00 A | 2026-06-08 10:00 A | 100% |  |  | start no earlier than 2026-06-07 09:00 | Дедов В | 1h | 1h |
| 2645 | 12.1.13.7.2 | продувка радиаторов осушителя и компрессора, слив конденсата | 1h | 2026-08-29 09:00 A | 2026-08-31 10:00 A | 100% |  |  | start no earlier than 2026-08-29 09:00 | Дедов В | 1h | 1h |
| 2646 | 12.1.13.7.3 | <Новая задача> | 1d? | 2026-08-28 09:00 | 2026-08-28 18:00 |  |  | 143.59d | start no earlier than 2026-08-28 08:00 |  |  |  |
| 2647 | 12.1.13.8 | осушитель 1 цех | 2h | 2024-04-04 09:00 | 2024-04-04 11:00 |  |  | 770.34d | start no earlier than 2023-12-28 09:00 | ТО | 2h |  |
| 2648 | 12.1.13.9 | осушитель 1 цех/слить конденсат | 30min | 2026-07-29 09:00 | 2026-07-29 09:30 |  |  | 166.53d | start no earlier than 2026-07-29 08:00 | Бундин В | 0.5h |  |
| 2649 | 12.1.13.10 | бойлер 1 1 цех раковина | 2h | 2024-04-04 09:00 | 2024-04-04 11:00 |  |  | 770.34d | start no earlier than 2023-12-28 09:00 | ТО | 2h |  |
| 2650 | 12.1.13.11 | бойлер 2 1 цех раковина | 2h | 2024-04-04 09:00 | 2024-04-04 11:00 |  |  | 770.34d | start no earlier than 2023-12-28 09:00 | ТО | 2h |  |
| 2651 | 12.1.13.12 | бойлер 3 1 цех душ | 2h | 2024-04-04 09:00 | 2024-04-04 11:00 |  |  | 770.34d | start no earlier than 2023-12-28 09:00 | ТО | 2h |  |
| 2652 | 12.1.13.13 | насосная станция 1 цех | 2h | 2024-04-04 09:00 | 2024-04-04 11:00 |  |  | 770.34d | start no earlier than 2023-12-28 09:00 | ТО | 2h |  |
| 2653 | 12.1.13.14 | фильтр приточной вентиляции | 2h | 2024-04-04 09:00 | 2024-04-04 11:00 |  |  | 770.34d |  |  |  |  |
| 2654 | 12.1.13.15 | пульт управления вентиляцией, частототные приводы | 2h | 2024-04-04 09:00 | 2024-04-04 11:00 |  |  | 770.34d | start no earlier than 2023-12-28 09:00 | ТО | 2h |  |
| 2655 | 12.1.13.16 | кондиционер 1 продувка фильтров внутр / очистка наруж блок | 30min | 2026-06-02 09:00 A | 2026-06-02 09:30 A | 100% |  |  | start no earlier than 2026-06-02 09:00 | Некрасов А | 0.5h | 0.5h |
| 2656 | 12.1.13.17 | кондиционер 2 продувка фильтров внутр / очистка наруж блок | 30min | 2026-06-02 09:00 A | 2026-06-02 09:30 A | 100% |  |  | start no earlier than 2026-06-02 09:00 | Некрасов А | 0.5h | 0.5h |
| 2657 | 12.1.13.18 | кондиционер 3 продувка фильтров внутр / очистка наруж блок | 30min | 2026-06-02 09:00 A | 2026-06-02 09:30 A | 100% |  |  | start no earlier than 2026-06-02 09:00 | Некрасов А | 0.5h | 0.5h |
| 2658 | 12.1.13.19 | кондиционер 1 продувка фильтров внутр / очистка наруж блок (керхер взять у Мейхера) | 30min | 2026-06-10 09:00 | 2026-06-10 09:30 |  |  | 201.53d | start no earlier than 2026-06-10 09:00 | Некрасов А; Дедов В | 1h |  |
| 2659 | 12.1.13.20 | кондиционер 2 продувка фильтров внутр / очистка наруж блок (керхер взять у Мейхера) | 30min | 2026-06-10 09:00 | 2026-06-10 09:30 |  |  | 201.53d | start no earlier than 2026-06-10 09:00 | Некрасов А; Дедов В | 1h |  |
| 2660 | 12.1.13.21 | кондиционер 3 продувка фильтров внутр / очистка наруж блок (керхер взять у Мейхера) | 30min | 2026-06-10 09:00 | 2026-06-10 09:30 |  |  | 201.53d | start no earlier than 2026-06-10 09:00 | Некрасов А; Дедов В | 1h |  |
| 2661 | 12.1.14 | электроштабелер упаковка | 2h | 2023-12-28 09:00 | 2023-12-28 11:00 |  |  | 840.34d | start no earlier than 2023-12-28 09:00 | ТО | 2h |  |
| 2662 | 12.1.15 | электроштабелер навески | 2h | 2023-12-28 09:00 | 2023-12-28 11:00 |  |  | 840.34d | start no earlier than 2023-12-28 09:00 | ТО | 2h |  |
| 2663 | 12.2 | **2 цех** | 772.25d? | 2023-12-28 09:00 A | 2026-12-04 11:00 | 62% | 297.12d? | 68.34d |  |  | 18366.1h | 15025.8h |
| 2664 | 12.2.1 | обдув пыли с вентиляции и балки кровли зона жир + экструдер + упаковка | 3h | 2026-08-20 09:00 A | 2026-08-20 12:00 A | 100% |  |  | start no earlier than 2026-08-20 09:00 | Некрасов А; Тимофеев В | 6h | 6h |
| 2665 | 12.2.2 | **прекондицинер экструдера** | 640.03d? | 2024-04-18 09:00 A | 2026-09-24 09:15 | 98% | 14.38d? | 120.56d |  |  | 22.25h | 21.75h |
| 2666 | 12.2.2.1 | замена заднего подшипника ведомый вал | 8h | 2026-05-26 09:00 A | 2026-05-26 18:00 A | 100% |  |  | start no earlier than 2026-05-26 09:00 | Тимофеев В | 8h | 8h |
| 2667 | 12.2.2.2 | замена подшипников | 1h | 2024-04-18 09:00 A | 2024-04-18 10:00 A | 100% |  |  | start no earlier than 2024-04-18 08:00 | Тимофеев В | 1h | 1h |
| 2668 | 12.2.2.3 | Ревизия масла редуктора | 30min | 2024-04-18 09:00 A | 2024-04-18 09:30 A | 100% |  |  | start no earlier than 2024-04-18 08:00 | Тимофеев В | 0.5h | 0.5h |
| 2669 | 12.2.2.4 | контроль крепления лопаток | 30min | 2026-05-21 09:00 A | 2026-05-21 09:30 A | 100% |  |  | start no earlier than 2026-03-05 09:00 | Тимофеев В | 0.5h | 0.5h |
| 2670 | 12.2.2.5 | шприцевание подшипников | 1h | 2026-05-21 08:00 A | 2026-05-21 10:00 A | 100% |  |  | start no earlier than 2026-05-21 08:00 | Тимофеев В | 1h | 1h |
| 2671 | 12.2.2.6 | Ревизия масла редуктора | 15min | 2026-07-21 09:00 A | 2026-07-21 09:15 A | 100% |  |  | start no earlier than 2026-07-21 09:00 | Труфанов А | 0.25h | 0.25h |
| 2672 | 12.2.2.7 | шприцевание подшипников | 30min | 2026-07-21 09:00 A | 2026-07-21 09:30 A | 100% |  |  | start no earlier than 2026-07-21 09:00 | Труфанов А | 0.5h | 0.5h |
| 2673 | 12.2.2.8 | Осмотр подшипников | 15min | 2026-07-30 09:00 A | 2026-07-30 09:15 A | 100% |  |  | start no earlier than 2026-07-30 09:00 | Тимофеев В | 0.25h | 0.25h |
| 2674 | 12.2.2.9 | Осмотр подшипников | 1d? | 2026-08-06 09:00 A | 2026-08-06 18:00 A | 100% |  |  | start no earlier than 2026-08-06 09:00 | Бундин В | 8h | 8h |
| 2675 | 12.2.2.10 | Осмотр подшипников / смазка / по необходимости замена | 1h | 2026-08-13 09:00 A | 2026-08-13 10:00 A | 100% |  |  | start no earlier than 2026-08-13 09:00 | Некрасов А | 1h | 1h |
| 2676 | 12.2.2.11 | Осмотр подшипников / смазка | 15min | 2026-08-20 09:00 A | 2026-08-20 09:15 A | 100% |  |  | start no earlier than 2026-08-20 09:00 | Некрасов А | 0.25h | 0.25h |
| 2677 | 12.2.2.12 | Замена водяного фильтра на прекондиционере/парогенератор | 15min | 2026-09-03 09:00 A | 2026-09-03 09:15 A | 100% |  |  | start no earlier than 2026-09-03 09:00 | Труфанов А | 0.25h | 0.25h |
| 2678 | 12.2.2.13 | Осмотр подшипников / смазка | 15min | 2026-09-17 09:00 A | 2026-09-17 09:15 A | 100% |  |  | start no earlier than 2026-09-17 09:00 | Некрасов А | 0.25h | 0.25h |
| 2679 | 12.2.2.14 | Осмотр подшипников / смазка | 15min | 2026-09-24 09:00 | 2026-09-24 09:15 |  |  | 120.56d | start no earlier than 2026-09-24 09:00 | Некрасов А | 0.25h |  |
| 2680 | 12.2.2.15 | Ревизия масла редуктора | 15min | 2026-09-24 09:00 | 2026-09-24 09:15 |  |  | 120.56d | start no earlier than 2026-09-24 09:00 | Некрасов А | 0.25h |  |

| ID | WBS | Task | Duration | Start | Finish | Predecessors | Complete | Remaining | Total slack | Constraint | Resources | Work | Actual work |
| --- | --- | --- | --- | --- | --- | --- | --- | --- | --- | --- | --- | --- | --- |
| 2681 | 12.2.3 | **парогенератор** | 639d | 2024-04-18 10:00 A | 2026-09-23 10:00 |  | 94% | 36.51d | 121.47d |  |  | 18.5h | 17.5h |
| 2682 | 12.2.3.1 | читска | 1h | 2024-04-18 10:00 A | 2024-04-18 11:00 A |  | 100% |  |  | start no earlier than 2024-04-18 08:00 | Тимофеев В | 1h | 1h |
| 2683 | 12.2.3.2 | замена гильзы | 1h | 2024-04-18 10:00 A | 2024-04-18 11:00 A |  | 100% |  |  | start no earlier than 2024-04-18 08:00 | Тимофеев В | 1h | 1h |
| 2684 | 12.2.3.3 | чистка | 2h | 2026-03-05 09:30 A | 2026-03-05 11:30 A |  | 100% |  |  | start no earlier than 2026-03-04 09:00 | Бундин В | 2h | 2h |
| 2685 | 12.2.3.4 | прорвеп срабатывания защитного клапана | 10min | 2026-03-05 09:30 A | 2026-03-05 09:40 A |  | 100% |  |  | start no earlier than 2024-10-03 09:00 | Бундин В | 0.17h | 0.17h |
| 2686 | 12.2.3.5 | читска | 1h | 2026-03-19 09:00 A | 2026-03-19 10:00 A |  | 100% |  |  | start no earlier than 2026-03-19 09:00 | Тимофеев В | 1h | 1h |
| 2687 | 12.2.3.6 | чистка | 1h | 2026-03-12 09:00 A | 2026-03-12 10:00 A |  | 100% |  |  | start no earlier than 2026-03-12 09:00 | Бундин В; Тимофеев В | 2h | 2h |
| 2688 | 12.2.3.7 | чистка | 1h | 2026-05-14 09:00 A | 2026-05-14 10:00 A |  | 100% |  |  | start no earlier than 2026-05-14 09:00 | Некрасов А | 1h | 1h |
| 2689 | 12.2.3.8 | чистка | 2h | 2026-07-14 09:00 A | 2026-07-14 11:00 A |  | 100% |  |  | start no earlier than 2026-07-14 09:00 | Некрасов А | 2h | 2h |
| 2690 | 12.2.3.9 | Чистка | 1h | 2026-07-30 09:00 A | 2026-07-30 10:00 A |  | 100% |  |  | start no earlier than 2026-07-30 09:00 | Бундин В | 1h | 1h |
| 2691 | 12.2.3.10 | Чистка | 1h | 2026-08-06 09:00 A | 2026-08-06 10:00 A |  | 100% |  |  | start no earlier than 2026-08-06 09:00 | Тимофеев В | 1h | 1h |
| 2692 | 12.2.3.11 | Чистка | 1h | 2026-08-13 09:00 A | 2026-08-13 10:00 A |  | 100% |  |  | start no earlier than 2026-08-13 09:00 | Некрасов А | 1h | 1h |
| 2693 | 12.2.3.12 | Чистка | 1h | 2026-08-19 09:00 A | 2026-08-19 10:00 A |  | 100% |  |  | start no earlier than 2026-08-19 09:00 | Некрасов А | 1h | 1h |
| 2694 | 12.2.3.13 | Чистка | 1h | 2026-09-02 08:00 A | 2026-09-02 10:00 A |  | 100% |  |  | start no earlier than 2026-09-02 08:00 | Бобренок В | 1h | 1h |
| 2695 | 12.2.3.14 | Убрать грязь с парогенератора, привести в порядок внешний вид, где что отлеплено, прилепить | 20min | 2026-09-03 09:00 A | 2026-09-03 09:20 A |  | 100% |  |  | start no earlier than 2026-09-03 09:00 | Тимофеев В | 0.33h | 0.33h |
| 2696 | 12.2.3.15 | Чистка | 1h | 2026-09-09 09:00 A | 2026-09-09 10:00 A |  | 100% |  |  | start no earlier than 2026-09-09 08:00 | Тимофеев В | 1h | 1h |
| 2697 | 12.2.3.16 | Чистка | 1h | 2026-09-17 09:00 A | 2026-09-17 10:00 A |  | 100% |  |  | start no earlier than 2026-09-17 09:00 | Тимофеев В | 1h | 1h |
| 2698 | 12.2.3.17 | Чистка | 1h | 2026-09-23 09:00 | 2026-09-23 10:00 |  |  |  | 121.47d | start no earlier than 2026-09-23 09:00 | Дедов В | 1h |  |
| 2699 | 12.2.4 | **привод сетки ПЕЧИ сушки** | 692.25d | 2024-04-18 08:00 A | 2026-12-04 11:00 |  | 89% | 78.37d | 68.34d |  |  | 8.83h | 7.83h |
| 2700 | 12.2.4.1 | прорверка масла редуктор / натяжка цепи/ ремень | 30min | 2024-04-18 08:00 A | 2024-04-18 09:30 A |  | 100% |  |  | start no earlier than 2024-04-18 08:00 | Тимофеев В | 0.5h | 0.5h |
| 2701 | 12.2.4.2 | прорверка масла редуктор / натяжка цепи/ ремень | 30min | 2026-03-05 09:00 A | 2026-03-05 09:30 A |  | 100% |  |  | start no earlier than 2026-03-05 09:00 | Тимофеев В | 0.5h | 0.5h |
| 2702 | 12.2.4.3 | прорверка масла редуктор / натяжка цепи/ ремень | 30min | 2026-03-19 09:00 A | 2026-03-19 09:30 A |  | 100% |  |  | start no earlier than 2026-03-19 09:00 | Тимофеев В | 0.5h | 0.5h |
| 2703 | 12.2.4.4 | прорверка масла редуктор / натяжка цепи/ ремень/осмотр сетки | 30min | 2026-07-14 09:00 A | 2026-07-14 09:30 A |  | 100% |  |  | start no earlier than 2026-07-14 09:00 | Труфанов А | 0.5h | 0.5h |
| 2704 | 12.2.4.5 | прорверка масла редуктор / натяжка цепи/ ремень/осмотр сетки | 30min | 2026-07-30 09:00 A | 2026-07-30 09:30 A |  | 100% |  |  | start no earlier than 2026-07-30 09:00 | Труфанов А | 0.5h | 0.5h |
| 2705 | 12.2.4.6 | прорверка масла редуктор / натяжка цепи/ ремень/осмотр сетки | 20min | 2026-08-13 09:00 A | 2026-08-13 09:20 A |  | 100% |  |  | start no earlier than 2026-08-13 09:00 | Некрасов А | 0.33h | 0.33h |
| 2706 | 12.2.4.7 | прорверка масла редуктор / натяжка цепи/ ремень/осмотр сетки | 20min | 2026-08-20 09:00 A | 2026-08-20 09:20 A |  | 100% |  |  | start no earlier than 2026-08-20 09:00 | Некрасов А | 0.33h | 0.33h |
| 2707 | 12.2.4.8 | прорверка масла редуктор / натяжка цепи/ ремень/осмотр сетки | 20min | 2026-08-20 09:00 A | 2026-08-20 09:20 A |  | 100% |  |  | start no earlier than 2026-08-20 09:00 | Некрасов А | 0.33h | 0.33h |
| 2708 | 12.2.4.9 | прорверка масла редуктор / натяжка цепи/ ремень/осмотр сетки | 20min | 2026-09-09 09:00 A | 2026-09-09 09:20 A |  | 100% |  |  | start no earlier than 2026-09-09 08:00 | Бобренок В | 0.33h | 0.33h |
| 2709 | 12.2.4.10 | ремонт шестерни привода - наварить | 1h | 2026-09-16 09:00 A | 2026-09-16 10:00 A |  | 100% |  |  | start no earlier than 2026-09-16 09:00 | Бундин В | 1h | 1h |
| 2710 | 12.2.4.11 | смазка цепей пищ смазкой | 1h | 2026-09-16 09:00 A | 2026-09-16 10:00 A |  | 100% |  |  | start no earlier than 2026-09-16 09:00 | Бобренок В | 1h | 1h |
| 2711 | 12.2.4.12 | Снятие шестерен привода (отнести домоводову) | 2h | 2026-09-17 09:00 A | 2026-09-17 11:00 A |  | 100% |  |  | start no earlier than 2026-09-17 09:00 | Труфанов А | 2h | 2h |
| 2712 | 12.2.4.13 | смазка цепей пищ смазкой по графику 3 мес | 1h | 2026-12-04 10:00 | 2026-12-04 11:00 | 2710FS+3mo |  |  | 68.34d | start no earlier than 2026-09-16 09:00 | Бобренок В | 1h |  |

| ID | WBS | Task | Duration | Start | Finish | Complete | Remaining | Total slack | Constraint | Resources | Work | Actual work |
| --- | --- | --- | --- | --- | --- | --- | --- | --- | --- | --- | --- | --- |
| 2713 | 12.2.5 | **блок тэнов сушки** | 605.12d | 2024-04-18 08:00 A | 2026-08-13 10:00 A | 100% |  |  |  |  | 12h | 12h |
| 2714 | 12.2.5.1 | вскрыть все блоки | 1h | 2024-04-18 08:00 A | 2024-04-18 10:00 A | 100% |  |  | start no earlier than 2024-04-18 08:00 | Тимофеев В | 1h | 1h |
| 2715 | 12.2.5.2 | ревизия / замена критичных | 4h | 2024-04-18 09:00 A | 2024-04-18 13:00 A | 100% |  |  | start no earlier than 2024-04-18 08:00 | Некрасов А; Черепанов И | 8h | 8h |
| 2716 | 12.2.5.3 | ревизия | 1h | 2026-03-19 09:00 A | 2026-03-19 10:00 A | 100% |  |  | start no earlier than 2026-03-19 09:00 | Бундин В | 1h | 1h |
| 2717 | 12.2.5.4 | ревизия | 1h | 2026-05-14 09:00 A | 2026-05-14 10:00 A | 100% |  |  | start no earlier than 2026-05-14 09:00 | Труфанов А | 1h | 1h |
| 2718 | 12.2.5.5 | ревизия перемычек | 1h | 2026-08-13 09:00 A | 2026-08-13 10:00 A | 100% |  |  | start no earlier than 2026-08-13 09:00 | Некрасов А | 1h | 1h |
| 2719 | 12.2.6 | **смеситель СМ-1500** | 156.02d | 2026-03-05 09:00 A | 2026-10-01 09:10 | 98% | 3.55d | 114.57d |  |  | 7.33h | 7.17h |
| 2720 | 12.2.6.1 | контроль масла | 15min | 2026-03-05 09:00 A | 2026-03-05 09:15 A | 100% |  |  | start no earlier than 2026-03-05 09:00 | Тимофеев В | 0.25h | 0.25h |
| 2721 | 12.2.6.2 | контроль масла | 15min | 2026-03-05 09:00 A | 2026-03-05 09:15 A | 100% |  |  | start no earlier than 2026-03-05 09:00 | Некрасов А | 0.25h | 0.25h |
| 2722 | 12.2.6.3 | замена сальника | 4h | 2026-04-16 09:00 A | 2026-04-16 13:00 A | 100% |  |  | start no earlier than 2026-04-16 09:00 | Тимофеев В | 4h | 4h |
| 2723 | 12.2.6.4 | контроль масла | 15min | 2026-07-30 09:00 A | 2026-07-30 09:15 A | 100% |  |  | start no earlier than 2026-07-30 09:00 | Тимофеев В | 0.25h | 0.25h |
| 2724 | 12.2.6.5 | ревизия подшипникой красного смесителя, просыпается мука со стороны редуктора | 1h | 2026-08-13 09:00 A | 2026-08-13 10:00 A | 100% |  |  | start no earlier than 2026-08-13 09:00 | Тимофеев В | 1h | 1h |
| 2725 | 12.2.6.6 | ревизия подшипникой красного смесителя, просыпается мука со стороны редуктора | 1h | 2026-08-27 09:00 A | 2026-08-27 10:00 A | 100% |  |  | start no earlier than 2026-08-27 09:00 | Тимофеев В | 1h | 1h |
| 2726 | 12.2.6.7 | контроль масла | 15min | 2026-09-03 09:00 A | 2026-09-03 09:15 A | 100% |  |  | start no earlier than 2026-09-03 09:00 | Тимофеев В | 0.25h | 0.25h |
| 2727 | 12.2.6.8 | контроль масла | 10min | 2026-09-09 09:00 A | 2026-09-09 09:10 A | 100% |  |  | start no earlier than 2026-09-09 08:00 | Бобренок В | 0.17h | 0.17h |
| 2728 | 12.2.6.9 | Осмотр подшипников/контроль масла | 10min | 2026-10-01 09:00 | 2026-10-01 09:10 |  |  | 114.57d | start no earlier than 2026-10-01 09:00 | Тимофеев В | 0.17h |  |
| 2729 | 12.2.7 | **нория 2 выгрузки смесителя** | 150.5d | 2026-03-05 09:00 A | 2026-09-24 13:00 | 62% | 56.88d | 120.09d |  | ТО | 66.58h | 38.93h |
| 2730 | 12.2.7.1 | смазка подшипников | 30min | 2026-03-05 09:00 A | 2026-03-05 09:30 A | 100% |  |  | start no earlier than 2026-03-05 09:00 | Бундин В | 0.5h | 0.5h |
| 2731 | 12.2.7.2 | Осмотр подшипников/смазка по необходимости | 30min | 2026-07-30 09:00 A | 2026-07-30 09:30 A | 100% |  |  | start no earlier than 2026-07-30 09:00 | Бундин В | 0.5h | 0.5h |
| 2732 | 12.2.7.3 | ревизия крепления редуктора | 15min | 2026-03-05 09:00 A | 2026-03-05 09:15 A | 100% |  |  | start no earlier than 2026-03-05 09:00 | Бундин В | 0.25h | 0.25h |
| 2733 | 12.2.7.4 | ревизия ленты, обрезать нитки | 4h | 2026-03-26 09:00 A | 2026-03-26 13:00 A | 100% |  |  | start no earlier than 2026-03-26 09:00 | Тимофеев В | 4h | 4h |
| 2734 | 12.2.7.5 | вскрыть для чистки | 10min | 2026-05-19 09:00 A | 2026-05-19 09:10 A | 100% |  |  | start no earlier than 2026-05-21 09:00 | Труфанов А | 0.17h | 0.17h |
| 2735 | 12.2.7.6 | Вскрыть, осмотреть ленту (держится на одном ковше, закрепили на доп болты) | 30min | 2026-09-03 09:00 A | 2026-09-03 09:30 A | 100% |  |  | start no earlier than 2026-09-03 09:00 | Тимофеев В | 0.5h | 0.5h |
| 2736 | 12.2.7.7 | вскрыть для чистки, осмотреть ленту, закрыить после чистки | 10min | 2026-08-13 09:00 A | 2026-08-13 09:10 A | 100% |  |  | start no earlier than 2026-08-13 09:00 | Труфанов А | 0.17h | 0.17h |
| 2737 | 12.2.7.8 | Ревизия ленты, контроль соединения | 30min | 2026-09-17 09:00 A | 2026-09-17 09:30 A | 100% |  |  | start no earlier than 2026-09-17 09:00 | Тимофеев В | 0.5h | 0.5h |
| 2738 | 12.2.7.9 | ремонт стыка ленты | 4h | 2026-09-24 09:00 | 2026-09-24 13:00 |  |  | 120.09d | start no earlier than 2026-09-24 09:00 | Тимофеев В; Бундин В | 8h |  |

| ID | WBS | Task | Duration | Start | Finish | Complete | Remaining | Total slack | Constraint | Resources | Work | Actual work |
| --- | --- | --- | --- | --- | --- | --- | --- | --- | --- | --- | --- | --- |
| 2739 | 12.2.8 | **бункер-накопитель с шнековой разкгрузкой синий** | 100.12d | 2026-05-14 09:00 A | 2026-09-24 10:00 | 89% | 10.67d | 120.47d |  |  | 10.17h | 9.08h |
| 2740 | 12.2.8.1 | смазка подшипников, ревизия редуктора (нужно разбирать все для смазки). Задний | 4h | 2026-05-14 09:00 A | 2026-05-14 13:00 A | 100% |  |  | start no earlier than 2026-05-14 09:00 | Тимофеев В | 4h | 4h |
| 2741 | 12.2.8.2 | смазка подшипников, ревизия редуктора (нужно разбирать все для смазки). Передний | 4h | 2026-05-28 09:00 A | 2026-05-28 13:00 A | 100% |  |  | start no earlier than 2026-05-28 09:00 | Бундин В | 4h | 4h |
| 2742 | 12.2.8.3 | Осмотр редуктора со стороны мойки, скрипит | 1h | 2026-08-13 09:00 A | 2026-08-13 10:00 A | 100% |  |  | start no earlier than 2026-08-13 09:00 | Тимофеев В | 1h | 1h |
| 2743 | 12.2.8.4 | Осмотр | 5min | 2026-09-03 09:00 A | 2026-09-03 09:05 A | 100% |  |  | start no earlier than 2026-09-03 09:00 | Тимофеев В | 0.08h | 0.08h |
| 2744 | 12.2.8.5 | перенос датчика / доработать лопатки - что бы останавливался раньше, без спресовывания шнеком | 1h | 2026-09-24 09:00 | 2026-09-24 10:00 |  |  | 120.47d | start no earlier than 2026-09-24 09:00 | Труфанов А | 1h |  |
| 2745 | 12.2.8.6 | Осмотр | 5min | 2026-09-24 09:00 | 2026-09-24 09:05 |  |  | 120.58d | start no earlier than 2026-09-24 09:00 | Труфанов А | 0.08h |  |
| 2746 | 12.2.9 | **питатель экструдера** | 141.12d | 2026-03-26 09:00 A | 2026-10-01 10:00 | 94% | 7.84d | 114.47d |  |  | 22h | 21h |
| 2747 | 12.2.9.1 | замена сальников питателя, сыпит муку | 4h | 2026-07-22 09:00 A | 2026-07-22 13:00 A | 100% |  |  | start no earlier than 2026-07-22 09:00 | Труфанов А | 4h | 4h |
| 2748 | 12.2.9.2 | ревизия подшипников, редутора, привода. Разборка/сборка (нужно разбирать) | 1h | 2026-03-26 09:00 A | 2026-03-26 10:00 A | 100% |  |  | start no earlier than 2026-03-26 09:00 | Тимофеев В | 1h | 1h |
| 2749 | 12.2.9.3 | ревизия подшипников, редутора, привода. Разборка/сборка (нужно разбирать) | 1h | 2026-08-19 09:00 A | 2026-08-19 10:00 A | 100% |  |  | start no earlier than 2026-08-19 09:00 | Тимофеев В | 1h | 1h |
| 2750 | 12.2.9.4 | замена шетсерен и подшипников узла. Поставили новый комплект | 4h | 2026-04-03 08:00 A | 2026-04-03 13:00 A | 100% |  |  | start no earlier than 2026-04-03 08:00 | Тимофеев В | 4h | 4h |
| 2751 | 12.2.9.5 | ревизия шестерни мал редуктора | 1h | 2026-04-16 09:00 A | 2026-04-16 10:00 A | 100% |  |  | start no earlier than 2026-04-16 09:00 | Тимофеев В | 1h | 1h |
| 2752 | 12.2.9.6 | ревизия шестерни мал редуктора | 2h | 2026-08-13 09:00 A | 2026-08-13 11:00 A | 100% |  |  | start no earlier than 2026-08-13 09:00 | Некрасов А; Зорькин В | 4h | 4h |
| 2753 | 12.2.9.7 | ревизия шестерни мал редуктора | 2h | 2026-08-27 09:00 A | 2026-08-27 11:00 A | 100% |  |  | start no earlier than 2026-08-27 09:00 | Некрасов А; Зорькин В | 4h | 4h |
| 2754 | 12.2.9.8 | ревизия шестерен питателя | 1h | 2026-09-03 09:00 A | 2026-09-03 10:00 A | 100% |  |  | start no earlier than 2026-09-03 09:00 | Некрасов А | 1h | 1h |
| 2755 | 12.2.9.9 | Ревизия шестерен и подшипников | 1h | 2026-09-17 09:00 A | 2026-09-17 10:00 A | 100% |  |  | start no earlier than 2026-09-17 09:00 | Тимофеев В | 1h | 1h |
| 2756 | 12.2.9.10 | Ревизия шестерен и подшипников | 1h | 2026-10-01 09:00 | 2026-10-01 10:00 |  |  | 114.47d | start no earlier than 2026-10-01 09:00 | Тимофеев В | 1h |  |
| 2757 | 12.2.10 | **привод прекондиционера** | 143.04d | 2026-03-05 09:00 A | 2026-09-17 09:20 A | 100% |  |  |  |  | 9.5h | 9.5h |
| 2758 | 12.2.10.1 | проверка масла | 5min | 2026-03-05 09:00 A | 2026-03-05 09:05 A | 100% |  |  | start no earlier than 2026-03-05 09:00 | Тимофеев В | 0.08h | 0.08h |
| 2759 | 12.2.10.2 | контроль крепления шестерен | 5min | 2026-03-05 09:00 A | 2026-03-05 09:05 A | 100% |  |  | start no earlier than 2026-03-05 09:00 | Тимофеев В | 0.08h | 0.08h |
| 2760 | 12.2.10.3 | ревизия подшипников и стопорных винтов | 30min | 2026-03-05 09:00 A | 2026-03-05 09:30 A | 100% |  |  | start no earlier than 2026-03-05 09:00 | Бундин В | 0.5h | 0.5h |
| 2761 | 12.2.10.4 | Осмотр шестерён(стоит звон), подшипников, сальников | 30min | 2026-09-03 09:00 A | 2026-09-03 09:30 A | 100% |  |  | start no earlier than 2026-09-03 09:00 | Тимофеев В | 0.5h | 0.5h |
| 2762 | 12.2.10.5 | Замена подшипников кореных и передних | 4h | 2026-09-09 09:00 A | 2026-09-09 13:00 A | 100% |  |  | start no earlier than 2026-09-09 08:00 | Труфанов А; Некрасов А | 8h | 8h |
| 2763 | 12.2.10.6 | Осмотр подшипников, муфты, шестерен | 20min | 2026-09-17 09:00 A | 2026-09-17 09:20 A | 100% |  |  | start no earlier than 2026-09-17 09:00 | Некрасов А | 0.33h | 0.33h |

| ID | WBS | Task | Duration | Start | Finish | Predecessors | Complete | Remaining | Total slack | Constraint | Resources | Work | Actual work |
| --- | --- | --- | --- | --- | --- | --- | --- | --- | --- | --- | --- | --- | --- |
| 2764 | 12.2.11 | **мотор-редуктор привод шнеков** | 30.02d | 2026-08-20 09:00 A | 2026-09-24 09:10 |  | 19% | 24.39d | 120.57d |  |  | 2.67h | 0.5h |
| 2765 | 12.2.11.1 | замена масла | 2h | 2026-08-20 09:00 | 2026-08-20 11:00 |  |  |  | 150.34d | start no earlier than 2026-08-20 09:00 | Тимофеев В | 2h |  |
| 2766 | 12.2.11.2 | Проверка масла (долил уровень) | 10min | 2026-09-03 09:00 A | 2026-09-03 09:10 A |  | 100% |  |  | start no earlier than 2026-09-03 09:00 | Труфанов А | 0.17h | 0.17h |
| 2767 | 12.2.11.3 | Проверка масла | 10min | 2026-09-09 09:00 A | 2026-09-09 09:10 A |  | 100% |  |  | start no earlier than 2026-09-09 08:00 | Бобренок В | 0.17h | 0.17h |
| 2768 | 12.2.11.4 | Проверка масла | 10min | 2026-09-17 09:00 A | 2026-09-17 09:10 A |  | 100% |  |  | start no earlier than 2026-09-17 09:00 | Некрасов А | 0.17h | 0.17h |
| 2769 | 12.2.11.5 | Проверка масла | 10min | 2026-09-24 09:00 | 2026-09-24 09:10 |  |  |  | 120.57d | start no earlier than 2026-09-24 09:00 | Некрасов А | 0.17h |  |
| 2770 | 12.2.12 | **редуктор шнеков экструдера - проверка масла** | 423.03d | 2025-02-17 09:00 A | 2026-09-24 09:15 |  | 95% | 19.52d | 120.56d |  |  | 5.42h | 5.17h |
| 2771 | 12.2.12.1 | чистка фильтра редуктора | 15min | 2026-03-05 09:00 A | 2026-03-05 09:15 A |  | 100% |  |  | start no earlier than 2026-03-05 09:00 | Тимофеев В | 0.25h | 0.25h |
| 2772 | 12.2.12.2 | контоль цепи муфты привода | 5min | 2026-03-05 09:15 A | 2026-03-05 09:20 A | 2771, 2773, 2774, 2776, 2780, 2781 | 100% |  |  | start no earlier than 2026-03-04 08:00 | Тимофеев В | 0.08h | 0.08h |
| 2773 | 12.2.12.3 | чистка фильтра редуктора | 15min | 2026-03-19 09:00 A | 2026-03-19 09:15 A |  | 100% |  |  | start no earlier than 2026-03-19 09:00 | Тимофеев В | 0.25h | 0.25h |
| 2774 | 12.2.12.4 | чистка фильтра редуктора | 15min | 2026-06-18 09:00 A | 2026-06-18 09:15 A |  | 100% |  |  | start no earlier than 2026-06-18 09:00 | Тимофеев В | 0.25h | 0.25h |
| 2775 | 12.2.12.5 | чистка фильтра редуктора | 30min | 2026-08-06 08:00 A | 2026-08-06 09:30 A |  | 100% |  |  | start no earlier than 2026-08-06 08:00 | Тимофеев В | 0.5h | 0.5h |
| 2776 | 12.2.12.6 | чистка фильтра редуктора | 15min | 2026-07-14 09:00 A | 2026-07-14 09:15 A |  | 100% |  |  | start no earlier than 2026-07-14 09:00 | Бундин В | 0.25h | 0.25h |
| 2777 | 12.2.12.7 | тэны и термпоры шнеков | 2h | 2025-02-17 09:00 A | 2025-02-17 11:00 A |  | 100% |  |  | start no earlier than 2025-02-17 09:00 | Дедов В | 2h | 2h |
| 2778 | 12.2.12.8 | проверка масла | 5min | 2026-08-06 09:00 A | 2026-08-06 09:05 A |  | 100% |  |  | start no earlier than 2026-08-06 09:00 | Тимофеев В | 0.08h | 0.08h |
| 2779 | 12.2.12.9 | Проверка масла | 10min | 2026-07-30 09:00 A | 2026-07-30 09:10 A |  | 100% |  |  | start no earlier than 2026-07-30 09:00 | Бундин В | 0.17h | 0.17h |
| 2780 | 12.2.12.10 | чистка фильтра редуктора | 15min | 2026-08-13 09:00 A | 2026-08-13 09:15 A |  | 100% |  |  | start no earlier than 2026-08-13 09:00 | Тимофеев В | 0.25h | 0.25h |
| 2781 | 12.2.12.11 | чистка фильтра редуктора | 15min | 2026-08-20 09:00 A | 2026-08-20 09:15 A |  | 100% |  |  | start no earlier than 2026-08-20 09:00 | Тимофеев В | 0.25h | 0.25h |
| 2782 | 12.2.12.12 | Чистка фильтра | 15min | 2026-09-03 09:00 A | 2026-09-03 09:15 A |  | 100% |  |  | start no earlier than 2026-09-03 09:00 | Труфанов А | 0.25h | 0.25h |
| 2783 | 12.2.12.13 | Чистка фильтра | 15min | 2026-09-09 09:00 A | 2026-09-09 09:15 A |  | 100% |  |  | start no earlier than 2026-09-09 08:00 | Бобренок В | 0.25h | 0.25h |
| 2784 | 12.2.12.14 | Проверка масла | 5min | 2026-09-09 09:00 A | 2026-09-09 09:05 A |  | 100% |  |  | start no earlier than 2026-09-09 08:00 | Бобренок В | 0.08h | 0.08h |
| 2785 | 12.2.12.15 | Проверка масла/чистка фильтра | 15min | 2026-09-17 09:00 A | 2026-09-17 09:15 A |  | 100% |  |  | start no earlier than 2026-09-17 09:00 | Некрасов А | 0.25h | 0.25h |
| 2786 | 12.2.12.16 | Чистка фильтра | 15min | 2026-09-24 09:00 | 2026-09-24 09:15 |  |  |  | 120.56d | start no earlier than 2026-09-24 09:00 | Некрасов А | 0.25h |  |
| 2787 | 12.2.13 | **шкаф управления экструдером** | 156.02d | 2026-03-05 09:00 A | 2026-10-01 09:10 |  | 90% | 15.6d | 114.57d |  |  | 1.67h | 1.5h |
| 2788 | 12.2.13.1 | продувка частотного привода | 10min | 2026-03-05 09:00 A | 2026-03-05 09:10 A |  | 100% |  |  | start no earlier than 2026-03-05 09:00 | Труфанов А | 0.17h | 0.17h |
| 2789 | 12.2.13.2 | продувка частотного привода | 10min | 2026-08-06 09:00 A | 2026-08-06 09:10 A |  | 100% |  |  | start no earlier than 2026-08-06 09:00 | Бундин В | 0.17h | 0.17h |
| 2790 | 12.2.13.3 | уложить и закрепить провода | 5min | 2026-03-05 09:10 A | 2026-03-05 09:15 A | 2788, 2789, 2792, 2793, 2794, 2795 | 100% |  |  | start no earlier than 2026-03-04 08:00 | Труфанов А | 0.08h | 0.08h |
| 2791 | 12.2.13.4 | протяжка контактов | 5min | 2026-03-05 09:15 A | 2026-03-05 09:20 A | 2790 | 100% |  |  | start no earlier than 2026-03-04 08:00 | Труфанов А | 0.08h | 0.08h |
| 2792 | 12.2.13.5 | продувка частотного привода | 10min | 2026-03-19 09:00 A | 2026-03-19 09:10 A |  | 100% |  |  | start no earlier than 2026-03-19 09:00 | Дедов В | 0.17h | 0.17h |
| 2793 | 12.2.13.6 | продувка частотного привода | 10min | 2026-05-14 09:00 A | 2026-05-14 09:10 A |  | 100% |  |  | start no earlier than 2026-05-14 09:00 | Макаревич А | 0.17h | 0.17h |
| 2794 | 12.2.13.7 | продувка частотного привода | 10min | 2026-08-13 09:00 A | 2026-08-13 09:10 A |  | 100% |  |  | start no earlier than 2026-08-13 09:00 | Некрасов А | 0.17h | 0.17h |
| 2795 | 12.2.13.8 | продувка частотного привода | 10min | 2026-08-20 09:00 A | 2026-08-20 09:10 A |  | 100% |  |  | start no earlier than 2026-08-20 09:00 | Дедов В | 0.17h | 0.17h |
| 2796 | 12.2.13.9 | продувка частотного привода | 10min | 2026-09-03 09:00 A | 2026-09-03 09:10 A |  | 100% |  |  | start no earlier than 2026-09-03 09:00 | Труфанов А | 0.17h | 0.17h |
| 2797 | 12.2.13.10 | продувка частотного привода | 10min | 2026-09-17 09:00 A | 2026-09-17 09:10 A |  | 100% |  |  | start no earlier than 2026-09-17 09:00 | Некрасов А | 0.17h | 0.17h |
| 2798 | 12.2.13.11 | продувка частотного привода | 10min | 2026-10-01 09:00 | 2026-10-01 09:10 |  |  |  | 114.57d | start no earlier than 2026-10-01 09:00 | Некрасов А | 0.17h |  |

| ID | WBS | Task | Duration | Start | Finish | Complete | Remaining | Total slack | Constraint | Resources | Work | Actual work |
| --- | --- | --- | --- | --- | --- | --- | --- | --- | --- | --- | --- | --- |
| 2799 | 12.2.14 | **пневотранспорт роторный питатель** | 140.04d | 2026-03-19 09:00 A | 2026-09-24 09:20 | 44% | 78.42d | 120.55d |  |  | 6.17h | 1.83h |
| 2800 | 12.2.14.1 | замена на ЗИП / вывод на ремонт промывку | 2h | 2026-06-25 09:00 | 2026-06-25 11:00 |  |  | 190.34d | start no earlier than 2026-06-25 09:00 | Труфанов А; Некрасов А | 4h |  |
| 2801 | 12.2.14.2 | проверка масла - высок температурная смазка | 1h | 2026-03-19 09:00 A | 2026-03-19 10:00 A | 100% |  |  | start no earlier than 2026-03-19 09:00 | Труфанов А | 1h | 1h |
| 2802 | 12.2.14.3 | Ревизия узлов/масла | 30min | 2026-07-30 09:00 A | 2026-07-30 09:30 A | 100% |  |  | start no earlier than 2026-07-30 09:00 | Труфанов А | 0.5h | 0.5h |
| 2803 | 12.2.14.4 | Ревизия узлов/масла (смазку свежую набил) | 20min | 2026-09-03 09:00 A | 2026-09-03 09:20 A | 100% |  |  | start no earlier than 2026-09-03 09:00 | Труфанов А | 0.33h | 0.33h |
| 2804 | 12.2.14.5 | Ревизия узлов/масла. Очистка мотора от пыли | 20min | 2026-09-24 09:00 | 2026-09-24 09:20 |  |  | 120.55d | start no earlier than 2026-09-24 09:00 | Бундин В | 0.33h |  |
| 2805 | 12.2.15 | **печь - валы этажей, подшипники, цепи** | 146.12d | 2026-03-19 09:00 A | 2026-10-01 10:00 | 73% | 39.85d | 114.47d |  |  | 5.5h | 4h |
| 2806 | 12.2.15.1 | осмотр смазка | 30min | 2026-03-19 09:00 A | 2026-03-19 09:30 A | 100% |  |  | start no earlier than 2026-03-19 09:00 | Тимофеев В | 0.5h | 0.5h |
| 2807 | 12.2.15.2 | осмотр смазка сетки | 2h | 2026-05-14 09:00 A | 2026-05-14 11:00 A | 100% |  |  | start no earlier than 2026-05-14 09:00 | Макаревич А | 2h | 2h |
| 2808 | 12.2.15.3 | натяжка цепей | 30min | 2026-08-13 09:00 A | 2026-08-13 09:30 A | 100% |  |  | start no earlier than 2026-08-13 09:00 | Некрасов А | 0.5h | 0.5h |
| 2809 | 12.2.15.4 | натяжка цепей, контроль привода | 30min | 2026-09-03 09:00 A | 2026-09-03 09:30 A | 100% |  |  | start no earlier than 2026-09-03 09:00 | Труфанов А | 0.5h | 0.5h |
| 2810 | 12.2.15.5 | Контроль редуктора, осмотр, проверка масла | 30min | 2026-09-17 09:00 A | 2026-09-17 09:30 A | 100% |  |  | start no earlier than 2026-09-17 09:00 | Труфанов А | 0.5h | 0.5h |
| 2811 | 12.2.15.6 | Контроль редуктора, осмотр, проверка масла | 30min | 2026-09-24 09:00 | 2026-09-24 09:30 |  |  | 120.53d | start no earlier than 2026-09-24 09:00 | Некрасов А | 0.5h |  |
| 2812 | 12.2.15.7 | Смазка всех цепей (если не смазаны) | 1h | 2026-10-01 09:00 | 2026-10-01 10:00 |  |  | 114.47d | start no earlier than 2026-10-01 09:00 | Бобренок В | 1h |  |
| 2813 | 12.2.16 | **вентиляторы обдува сушки** | 150.25d? | 2026-03-05 09:00 A | 2026-09-24 11:00 | 10% | 135.22d? | 120.34d |  | ТО | 1206h | 10h |
| 2814 | 12.2.16.1 | чистка крыльчатки | 1d? | 2026-03-05 09:00 | 2026-03-05 18:00 |  |  | 269.59d | start no earlier than 2026-03-05 09:00 |  |  |  |
| 2815 | 12.2.16.2 | замена подшипников | 1d? | 2026-03-05 09:00 | 2026-03-05 18:00 |  |  | 269.59d | start no earlier than 2026-03-05 09:00 |  |  |  |
| 2816 | 12.2.16.3 | Осмотр, чистка | 2h | 2026-09-17 09:00 A | 2026-09-17 11:00 A | 100% |  |  | start no earlier than 2026-09-17 09:00 | Бобренок В | 2h | 2h |
| 2817 | 12.2.16.4 | Осмотр, очистка от пыли | 2h | 2026-09-24 09:00 | 2026-09-24 11:00 |  |  | 120.34d | start no earlier than 2026-09-24 09:00 | Некрасов А | 2h |  |
| 2818 | 12.2.17 | **шкаф управления тэнами сушки главный** | 150.25d | 2026-03-05 09:00 A | 2026-09-24 11:00 | 63% | 56.34d | 120.34d |  |  | 6.67h | 4.17h |
| 2819 | 12.2.17.1 | протяжка контактов, продувка шкафа, частотного привода | 10min | 2026-03-05 09:00 A | 2026-03-05 09:10 A | 100% |  |  | start no earlier than 2026-03-05 09:00 | Труфанов А | 0.17h | 0.17h |
| 2820 | 12.2.17.2 | протяжка контактов, продувка шкафа, частотного привода | 10min | 2026-07-14 09:00 A | 2026-07-14 09:10 A | 100% |  |  | start no earlier than 2026-07-14 09:00 | Некрасов А | 0.17h | 0.17h |
| 2821 | 12.2.17.3 | осмотср замена подгоревших кабелей | 30min | 2026-05-21 09:00 A | 2026-05-21 09:30 A | 100% |  |  | start no earlier than 2026-05-21 09:00 | Тимофеев В | 0.5h | 0.5h |
| 2822 | 12.2.17.4 | протяжка контактов, продувка шкафа, частотного привода | 30min | 2026-08-06 09:00 | 2026-08-06 09:30 |  |  | 160.53d | start no earlier than 2026-08-06 08:00 | Бундин В | 0.5h |  |
| 2823 | 12.2.17.5 | осмотср замена подгоревших кабелей | 30min | 2026-05-21 09:00 A | 2026-05-21 09:30 A | 100% |  |  | start no earlier than 2026-05-21 09:00 | Некрасов А | 0.5h | 0.5h |
| 2824 | 12.2.17.6 | продуть, протяжка контактов | 1h | 2026-05-21 08:00 A | 2026-05-21 10:00 A | 100% |  |  | start no earlier than 2026-05-21 08:00 | Тимофеев В | 1h | 1h |
| 2825 | 12.2.17.7 | осмотср замена подгоревших кабелей | 30min | 2026-07-14 09:00 A | 2026-07-14 09:30 A | 100% |  |  | start no earlier than 2026-07-14 09:00 | Труфанов А | 0.5h | 0.5h |
| 2826 | 12.2.17.8 | осмотср замена подгоревших кабелей | 1h | 2026-08-13 09:00 A | 2026-08-13 10:00 A | 100% |  |  | start no earlier than 2026-08-13 09:00 | Труфанов А | 1h | 1h |
| 2827 | 12.2.17.9 | продувка | 10min | 2026-09-03 09:00 A | 2026-09-03 09:10 A | 100% |  |  | start no earlier than 2026-09-03 09:00 | Труфанов А | 0.17h | 0.17h |
| 2828 | 12.2.17.10 | Продувка | 10min | 2026-09-17 09:00 A | 2026-09-17 09:10 A | 100% |  |  | start no earlier than 2026-09-17 09:00 | Некрасов А | 0.17h | 0.17h |
| 2829 | 12.2.17.11 | Продувка. Замена подогретых жил | 2h | 2026-09-24 09:00 | 2026-09-24 11:00 |  |  | 120.34d | start no earlier than 2026-09-24 09:00 | Труфанов А | 2h |  |

| ID | WBS | Task | Duration | Start | Finish | Complete | Remaining | Total slack | Constraint | Resources | Work | Actual work |
| --- | --- | --- | --- | --- | --- | --- | --- | --- | --- | --- | --- | --- |
| 2830 | 12.2.18 | **шкаф управления тэнами твердотельный** | 150.25d | 2026-03-05 09:00 A | 2026-09-24 11:00 | 43% | 85.86d | 120.34d |  |  | 3.5h | 1.5h |
| 2831 | 12.2.18.1 | продувка, протяжка | 10min | 2026-03-05 09:00 A | 2026-03-05 09:10 A | 100% |  |  | start no earlier than 2026-03-05 09:00 | Труфанов А | 0.17h | 0.17h |
| 2832 | 12.2.18.2 | продувка, протяжка | 10min | 2026-07-14 09:00 A | 2026-07-14 09:10 A | 100% |  |  | start no earlier than 2026-07-14 09:00 | Труфанов А | 0.17h | 0.17h |
| 2833 | 12.2.18.3 | продувка, протяжка | 10min | 2026-08-06 09:00 A | 2026-08-06 09:10 A | 100% |  |  | start no earlier than 2026-08-06 08:00 | Бундин В | 0.17h | 0.17h |
| 2834 | 12.2.18.4 | замена подгоревших кабелей | 30min | 2026-08-13 09:00 A | 2026-08-13 09:30 A | 100% |  |  | start no earlier than 2026-08-13 09:00 | Труфанов А | 0.5h | 0.5h |
| 2835 | 12.2.18.5 | продувка, протяжка | 10min | 2026-08-06 09:00 A | 2026-08-06 09:10 A | 100% |  |  | start no earlier than 2026-08-06 08:00 | Труфанов А | 0.17h | 0.17h |
| 2836 | 12.2.18.6 | продувка, протяжка | 10min | 2026-09-03 09:00 A | 2026-09-03 09:10 A | 100% |  |  | start no earlier than 2026-09-03 09:00 | Труфанов А | 0.17h | 0.17h |
| 2837 | 12.2.18.7 | Продувка | 10min | 2026-09-17 09:00 A | 2026-09-17 09:10 A | 100% |  |  | start no earlier than 2026-09-17 09:00 | Некрасов А | 0.17h | 0.17h |
| 2838 | 12.2.18.8 | Продувка. Замена подогретых жил | 2h | 2026-09-24 09:00 | 2026-09-24 11:00 |  |  | 120.34d | start no earlier than 2026-09-24 09:00 | Труфанов А | 2h |  |
| 2839 | 12.2.19 | **конвейер №1 с печи в дрожировщик** | 150.06d | 2026-03-05 09:00 A | 2026-09-24 09:30 | 84% | 24.33d | 120.53d |  |  | 3.08h | 2.58h |
| 2840 | 12.2.19.1 | ослабить ленту для чистки барабана / натяжка после чистки | 30min | 2026-03-05 09:00 A | 2026-03-05 09:30 A | 100% |  |  | start no earlier than 2026-03-05 09:00 | Тимофеев В | 0.5h | 0.5h |
| 2841 | 12.2.19.2 | ревизия люфтов, фиксации смазки подшипников | 30min | 2026-03-05 09:00 A | 2026-03-05 09:30 A | 100% |  |  | start no earlier than 2026-03-05 09:00 | Тимофеев В | 0.5h | 0.5h |
| 2842 | 12.2.19.3 | ослабить ленту для чистки барабана / натяжка после чистки | 10min | 2026-03-12 09:00 A | 2026-03-12 09:10 A | 100% |  |  | start no earlier than 2026-03-12 09:00 | Тимофеев В | 0.17h | 0.17h |
| 2843 | 12.2.19.4 | чистка ленты контроль операторов, если нужно ослаить | 15min | 2026-08-13 09:00 A | 2026-08-13 09:15 A | 100% |  |  | start no earlier than 2026-08-13 09:00 | Тимофеев В | 0.25h | 0.25h |
| 2844 | 12.2.19.5 | ревизия люфтов, фиксации смазки подшипников | 30min | 2026-09-03 09:00 A | 2026-09-03 09:30 A | 100% |  |  | start no earlier than 2026-09-03 09:00 | Тимофеев В | 0.5h | 0.5h |
| 2845 | 12.2.19.6 | ослабить ленту для чистки барабана / натяжка после чистки | 10min | 2026-09-03 09:00 A | 2026-09-03 09:10 A | 100% |  |  | start no earlier than 2026-09-03 09:00 | Тимофеев В | 0.17h | 0.17h |
| 2846 | 12.2.19.7 | ревизия люфтов, фиксации смазки подшипников | 30min | 2026-09-17 09:00 A | 2026-09-17 09:30 A | 100% |  |  | start no earlier than 2026-09-17 09:00 | Тимофеев В | 0.5h | 0.5h |
| 2847 | 12.2.19.8 | очистка валов и ленты / контроль крепления редуктора / состояния подшипника | 30min | 2026-09-24 09:00 | 2026-09-24 09:30 |  |  | 120.53d | start no earlier than 2026-09-24 09:00 | Тимофеев В | 0.5h |  |
| 2848 | 12.2.20 | **барабан смесительный дрожировка** | 714.02d | 2023-12-28 09:00 A | 2026-09-18 09:10 | 81% | 136.5d | 126.57d |  | ТО | 125.33h | 101.37h |
| 2849 | 12.2.20.1 | ревизия состяния валов, подшипников | 2h | 2026-02-25 09:00 A | 2026-02-25 11:00 A | 100% |  |  | start no earlier than 2026-02-25 09:00 | Тимофеев В | 2h | 2h |
| 2850 | 12.2.20.2 | ремонт вала временный. 11 час | 2h | 2026-02-25 09:00 A | 2026-02-25 11:00 A | 100% |  |  | start no earlier than 2026-02-25 09:00 | Тимофеев В | 2h | 2h |
| 2851 | 12.2.20.3 | замена подшипников мотора привода | 2h | 2026-02-25 09:00 A | 2026-02-25 11:00 A | 100% |  |  | start no earlier than 2026-02-25 09:00 | Тимофеев В | 2h | 2h |
| 2852 | 12.2.20.4 | заменаить вал дрожировки по стрелкам на 11час / после прихода с ремонта | 2h | 2026-04-30 09:00 A | 2026-04-30 11:00 A | 100% |  |  | start no earlier than 2026-04-30 09:00 | Тимофеев В | 2h | 2h |
| 2853 | 12.2.20.5 | насос подачи жира и смесительный узел, баки подогрева | 2h | 2023-12-28 09:00 | 2023-12-28 11:00 |  |  | 840.34d | start no earlier than 2023-12-28 09:00 | ТО | 2h |  |
| 2854 | 12.2.20.6 | Осмотр подшипников редукторов | 20min | 2026-07-30 09:00 A | 2026-07-30 09:20 A | 100% |  |  | start no earlier than 2026-07-30 09:00 | Труфанов А | 0.33h | 0.33h |
| 2855 | 12.2.20.7 | Осмотр подшипников редукторов | 15min | 2026-08-13 09:00 A | 2026-08-13 09:15 A | 100% |  |  | start no earlier than 2026-08-13 09:00 | Тимофеев В | 0.25h | 0.25h |
| 2856 | 12.2.20.8 | Осмотр подшипников редукторов | 15min | 2026-09-03 09:00 A | 2026-09-03 09:15 A | 100% |  |  | start no earlier than 2026-09-03 09:00 | Тимофеев В | 0.25h | 0.25h |
| 2857 | 12.2.20.9 | Осмотр соединений фитингов, трехходового крана бежит/не бежит | 10min | 2026-09-03 09:00 A | 2026-09-03 09:10 A | 100% |  |  | start no earlier than 2026-09-03 09:00 | Тимофеев В | 0.17h | 0.17h |
| 2858 | 12.2.20.10 | Осмотр соединений фитингов, трехходового крана бежит/не бежит | 10min | 2026-09-17 09:00 A | 2026-09-17 09:10 A | 100% |  |  | start no earlier than 2026-09-17 09:00 | Тимофеев В | 0.17h | 0.17h |
| 2859 | 12.2.20.11 | Осмотр соединений фитингов, трехходового крана бежит/не бежит | 10min | 2026-09-18 09:00 | 2026-09-18 09:10 |  |  | 126.57d | start no earlier than 2026-09-18 09:00 | Тимофеев В | 0.17h |  |

| ID | WBS | Task | Duration | Start | Finish | Complete | Remaining | Total slack | Constraint | Resources | Work | Actual work |
| --- | --- | --- | --- | --- | --- | --- | --- | --- | --- | --- | --- | --- |
| 2860 | 12.2.21 | **Узел подачи гидролизата** | 50.12d | 2026-07-14 09:00 A | 2026-09-17 10:00 A | 100% |  |  |  |  | 3.67h | 3.67h |
| 2861 | 12.2.21.1 | Дефектовка/ выяснить причу почему еле крутит/ устранить | 2h | 2026-07-14 09:00 A | 2026-07-14 11:00 A | 100% |  |  | start no earlier than 2026-07-14 09:00 | Бундин В | 2h | 2h |
| 2862 | 12.2.21.2 | осмотр цепи, редуктора, протяжка | 20min | 2026-08-13 09:00 A | 2026-08-13 09:20 A | 100% |  |  | start no earlier than 2026-08-13 09:00 | Тимофеев В | 0.33h | 0.33h |
| 2863 | 12.2.21.3 | Осмотр/ревизия насоса гидролизата, проверка всех соединений | 10min | 2026-09-03 09:00 A | 2026-09-03 09:10 A | 100% |  |  | start no earlier than 2026-09-03 09:00 | Тимофеев В | 0.17h | 0.17h |
| 2864 | 12.2.21.4 | Осмотр/ревизия насоса гидролизата, проверка всех соединений | 10min | 2026-09-17 09:00 A | 2026-09-17 09:10 A | 100% |  |  | start no earlier than 2026-09-17 09:00 | Тимофеев В | 0.17h | 0.17h |
| 2865 | 12.2.21.5 | перенос розеток со стола на раму | 1h | 2026-09-17 09:00 A | 2026-09-17 10:00 A | 100% |  |  | start no earlier than 2026-09-17 09:00 | Тимофеев В | 1h | 1h |
| 2866 | 12.2.22 | **конвейер №2 с дрожировки в охладитель** | 150.06d | 2026-03-05 09:00 A | 2026-09-24 09:30 | 84% | 23.69d | 120.53d |  |  | 3.17h | 2.67h |
| 2867 | 12.2.22.1 | ослабить ленту для чистки барабана / натяжка после чистки | 30min | 2026-03-05 09:00 A | 2026-03-05 09:30 A | 100% |  |  | start no earlier than 2026-03-05 09:00 | Тимофеев В | 0.5h | 0.5h |
| 2868 | 12.2.22.2 | ревизия люфтов, фиксации смазки подшипников | 30min | 2026-03-05 09:00 A | 2026-03-05 09:30 A | 100% |  |  | start no earlier than 2026-03-05 09:00 | Тимофеев В | 0.5h | 0.5h |
| 2869 | 12.2.22.3 | ослабить ленту для чистки барабана / натяжка после чистки | 10min | 2026-03-12 09:00 A | 2026-03-12 09:10 A | 100% |  |  | start no earlier than 2026-03-12 09:00 | Тимофеев В | 0.17h | 0.17h |
| 2870 | 12.2.22.4 | чистка ленты контроль операторов, если нужно ослаить | 15min | 2026-08-13 09:00 A | 2026-08-13 09:15 A | 100% |  |  | start no earlier than 2026-08-13 09:00 | Тимофеев В | 0.25h | 0.25h |
| 2871 | 12.2.22.5 | чистка ленты контроль операторов, если нужно ослаить | 15min | 2026-08-13 09:00 A | 2026-08-13 09:15 A | 100% |  |  | start no earlier than 2026-08-13 09:00 | Тимофеев В | 0.25h | 0.25h |
| 2872 | 12.2.22.6 | ослабить ленту для чистки барабана / натяжка после чистки | 30min | 2026-09-03 09:00 A | 2026-09-03 09:30 A | 100% |  |  | start no earlier than 2026-09-03 09:00 | Тимофеев В | 0.5h | 0.5h |
| 2873 | 12.2.22.7 | ревизия люфтов, фиксации смазки подшипников | 30min | 2026-09-17 09:00 A | 2026-09-17 09:30 A | 100% |  |  | start no earlier than 2026-09-17 09:00 | Тимофеев В | 0.5h | 0.5h |
| 2874 | 12.2.22.8 | ревизия люфтов, фиксации смазки подшипников | 30min | 2026-09-24 09:00 | 2026-09-24 09:30 |  |  | 120.53d | start no earlier than 2026-09-24 09:00 | Тимофеев В | 0.5h |  |
| 2875 | 12.2.23 | **охладитель сеточный** | 640.25d? | 2024-04-18 09:00 A | 2026-09-24 11:00 | 49% | 329.54d? | 120.34d |  |  | 17.67h | 14h |
| 2876 | 12.2.23.1 | ревизия осей сетки, замена шплинтов | 2h | 2024-04-18 09:00 A | 2024-04-18 11:00 A | 100% |  |  | start no earlier than 2024-04-18 08:00 | Некрасов А; Черепанов И | 4h | 4h |
| 2877 | 12.2.23.2 | ревизия привода - масло, ремень (не проверено масло) | 10min | 2026-03-19 09:00 A | 2026-03-19 09:10 A | 100% |  |  | start no earlier than 2026-03-05 09:00 | Тимофеев В | 0.17h | 0.17h |
| 2878 | 12.2.23.3 | ревизия привода - масло, ремень (не проверено масло) | 10min | 2026-07-14 09:00 | 2026-07-14 09:10 |  |  | 177.57d | start no earlier than 2026-07-14 09:00 | Некрасов А | 0.17h |  |
| 2879 | 12.2.23.4 | ревизия состояния сетки | 2h | 2026-07-14 09:00 A | 2026-07-14 11:00 A | 100% |  |  | start no earlier than 2026-07-14 08:00 | Некрасов А | 2h | 2h |
| 2880 | 12.2.23.5 | ревизия состояния сетки | 1h | 2026-07-30 09:00 A | 2026-07-30 10:00 A | 100% |  |  | start no earlier than 2026-07-30 09:00 | Бундин В | 1h | 1h |
| 2881 | 12.2.23.6 | ревизия состояния сетки | 1d? | 2026-08-20 09:00 | 2026-08-20 18:00 |  |  | 149.59d | start no earlier than 2026-08-20 09:00 |  |  |  |
| 2882 | 12.2.23.7 | контроль натяжки цепей | 20min | 2026-03-05 09:00 A | 2026-03-05 09:20 A | 100% |  |  | start no earlier than 2026-03-05 09:00 | Бундин В | 0.33h | 0.33h |
| 2883 | 12.2.23.8 | текущий ремонт силиконовых уплотнений | 30min | 2026-03-05 09:00 A | 2026-03-05 09:30 A | 100% |  |  | start no earlier than 2026-03-05 09:00 | Бундин В | 0.5h | 0.5h |
| 2884 | 12.2.23.9 | осмотр ремней, натяжка цепей, ремонт силиконовых отбортовок | 1h | 2026-05-14 09:00 A | 2026-05-14 10:00 A | 100% |  |  | start no earlier than 2026-05-14 09:00 | Макаревич А | 1h | 1h |
| 2885 | 12.2.23.10 | осмотр ремней, натяжка цепей, ремонт силиконовых отбортовок | 1h | 2026-07-14 09:00 A | 2026-07-14 10:00 A | 100% |  |  | start no earlier than 2026-07-14 09:00 | Некрасов А | 1h | 1h |
| 2886 | 12.2.23.11 | осмотр ремней, натяжка цепей, ремонт силиконовых отбортовок | 1h | 2026-07-30 09:00 A | 2026-07-30 10:00 A | 100% |  |  | start no earlier than 2026-07-30 09:00 | Бундин В | 1h | 1h |
| 2887 | 12.2.23.12 | осмотр ремней, натяжка цепей, ремонт силиконовых отбортовок | 1h | 2026-08-20 09:00 A | 2026-08-20 10:00 A | 100% |  |  | start no earlier than 2026-08-20 09:00 | Труфанов А; Некрасов А | 2h | 2h |
| 2888 | 12.2.23.13 | осмотр ремней, натяжка цепей, ремонт силиконовых отбортовок | 1h | 2026-08-20 09:00 A | 2026-08-20 10:00 A | 100% |  |  | start no earlier than 2026-08-20 09:00 | Дедов В | 1h | 1h |
| 2889 | 12.2.23.14 | Ревизия сетки, контроль роспуска, подогнуть, где что можно, что бы не зацепилось | 1h | 2026-09-24 09:00 | 2026-09-24 10:00 |  |  | 120.47d | start no earlier than 2026-09-24 09:00 | Труфанов А | 1h |  |
| 2890 | 12.2.23.15 | Смазка подшипников привод охладителя | 30min | 2026-09-24 09:00 | 2026-09-24 09:30 |  |  | 120.53d | start no earlier than 2026-09-24 09:00 | Труфанов А | 0.5h |  |
| 2891 | 12.2.23.16 | Смазка всех цепей | 2h | 2026-09-24 09:00 | 2026-09-24 11:00 |  |  | 120.34d | start no earlier than 2026-09-24 09:00 | Труфанов А | 2h |  |

| ID | WBS | Task | Duration | Start | Finish | Predecessors | Complete | Remaining | Total slack | Free slack | Constraint | Resources | Work | Actual work |
| --- | --- | --- | --- | --- | --- | --- | --- | --- | --- | --- | --- | --- | --- | --- |
| 2892 | 12.2.24 | **конвейер 3 с охладителя в упаковку** | 42.03d | 2026-08-12 09:00 A | 2026-10-01 09:15 |  | 80% | 8.41d | 114.56d |  |  | ТО | 337.5h | 97.19h |
| 2893 | 12.2.24.1 | ослабить ленту для чистки барабана / натяжка после чистки | 15min | 2026-08-12 09:00 A | 2026-08-12 09:15 A |  | 100% |  |  |  | start no earlier than 2026-08-12 09:00 | Тимофеев В | 0.25h | 0.25h |
| 2894 | 12.2.24.2 | ревизия люфтов, фиксации, смазки подшипников | 15min | 2026-08-12 09:00 A | 2026-08-12 09:15 A |  | 100% |  |  |  | start no earlier than 2026-08-12 09:00 | Тимофеев В | 0.25h | 0.25h |
| 2895 | 12.2.24.3 | ослабить ленту для чистки барабана / натяжка после чистки | 15min | 2026-09-03 09:00 A | 2026-09-03 09:15 A |  | 100% |  |  |  | start no earlier than 2026-09-03 09:00 | Макаревич А | 0.25h | 0.25h |
| 2896 | 12.2.24.4 | ревизия люфтов, фиксации, смазки подшипников | 15min | 2026-09-17 09:00 A | 2026-09-17 09:15 A |  | 100% |  |  |  | start no earlier than 2026-09-17 09:00 | Некрасов А | 0.25h | 0.25h |
| 2897 | 12.2.24.5 | ревизия люфтов, фиксации, смазки подшипников | 15min | 2026-10-01 09:00 | 2026-10-01 09:15 |  |  |  | 114.56d |  | start no earlier than 2026-10-01 09:00 | Некрасов А | 0.25h |  |
| 2898 | 12.2.25 | **упаковка** | 720.12d | 2023-12-28 09:00 A | 2026-09-24 10:00 |  | 92% | 55.39d | 120.47d |  |  | ТО | 5101h | 4708.61h |
| 2899 | 12.2.25.1 | НОТИС 1 | 2h | 2023-12-28 09:00 A | 2023-12-28 11:00 A |  | 100% |  |  |  | start no earlier than 2023-12-28 09:00 | ТО | 2h | 2h |
| 2900 | 12.2.25.2 | НОТИС 2 | 2h | 2023-12-28 09:00 A | 2023-12-28 11:00 A |  | 100% |  |  |  | start no earlier than 2023-12-28 09:00 | ТО | 2h | 2h |
| 2901 | 12.2.25.3 | запайщик 1 | 2h | 2026-06-18 09:00 A | 2026-06-18 11:00 A |  | 100% |  |  |  | start no earlier than 2026-06-18 09:00 | Труфанов А | 2h | 2h |
| 2902 | 12.2.25.4 | запайщик 2 | 2h | 2026-06-18 09:00 A | 2026-06-18 11:00 A |  | 100% |  |  |  | start no earlier than 2026-06-18 09:00 | Труфанов А | 2h | 2h |
| 2903 | 12.2.25.5 | запайщик 1 проверка перемычек/тефлона замена при необходимости | 2h | 2026-09-03 09:00 A | 2026-09-03 11:00 A |  | 100% |  |  |  | start no earlier than 2026-09-03 09:00 | Макаревич А | 2h | 2h |
| 2904 | 12.2.25.6 | запайщик 1 проверка перемычек/тефлона замена при необходимости | 2h | 2026-09-03 09:00 A | 2026-09-03 11:00 A |  | 100% |  |  |  | start no earlier than 2026-09-03 09:00 | Макаревич А | 2h | 2h |
| 2905 | 12.2.25.7 | запайщик 1 и 2 проверка перемычек/тефлона замена при необходимости | 1h | 2026-09-24 09:00 | 2026-09-24 10:00 |  |  |  | 120.47d |  | start no earlier than 2026-09-24 09:00 | Некрасов А | 1h |  |
| 2906 | 12.2.26 | **квадропак** | 36.25d | 2026-08-12 09:00 A | 2026-09-24 11:00 |  | 18% | 29.66d | 120.34d |  |  |  | 5.5h | 1h |
| 2907 | 12.2.26.1 | смазка вращающиющихся механизмов | 30min | 2026-09-24 09:00 | 2026-09-24 09:30 |  |  |  | 120.41d | 0d | start no earlier than 2026-09-24 09:00 | Бундин В | 0.5h |  |
| 2908 | 12.2.26.2 | протяжка креплений поворотных лап захвата | 30min | 2026-09-24 09:30 | 2026-09-24 10:00 | 2907 |  |  | 120.41d | 0d | start no earlier than 2026-03-05 09:00 | Бундин В | 0.5h |  |
| 2909 | 12.2.26.3 | чистка вала ленты выгрзного транспортера | 30min | 2026-09-24 10:00 | 2026-09-24 10:30 | 2908 |  |  | 120.41d |  | start no earlier than 2026-03-31 08:00 | Бундин В | 0.5h |  |
| 2910 | 12.2.26.4 | осмотр приводной системы нории / смазка | 30min | 2026-08-12 09:00 | 2026-08-12 09:30 |  |  |  | 156.53d |  | start no earlier than 2026-08-12 09:00 | Тимофеев В | 0.5h |  |
| 2911 | 12.2.26.5 | осмотр приводной системы нории / смазка | 30min | 2026-08-20 09:00 | 2026-08-20 09:30 |  |  |  | 150.53d |  | start no earlier than 2026-08-20 09:00 | Бобренок В | 0.5h |  |
| 2912 | 12.2.26.6 | осмотр приводной системы нории / смазка | 30min | 2026-09-03 09:00 A | 2026-09-03 09:30 A |  | 100% |  |  |  | start no earlier than 2026-09-03 09:00 | Макаревич А | 0.5h | 0.5h |
| 2913 | 12.2.26.7 | протяжка креплений поворотных лап захвата | 30min | 2026-09-03 09:00 A | 2026-09-03 09:30 A |  | 100% |  |  |  | start no earlier than 2026-09-03 09:00 | Макаревич А | 0.5h | 0.5h |
| 2914 | 12.2.26.8 | снимать ковши для доступка к подшинику, нуждающего в смазке( сообщил Некрасов) | 2h | 2026-09-24 09:00 | 2026-09-24 11:00 |  |  |  | 120.34d |  | start no earlier than 2026-09-24 09:00 | Некрасов А | 2h |  |
| 2915 | 12.2.27 | **БЕСТРОМ** | 720.25d | 2023-12-28 09:00 A | 2026-09-24 11:00 |  | 70% | 218.44d | 120.34d |  |  | ТО | 1100.83h | 70.33h |
| 2916 | 12.2.27.1 | чистка тен с демантожем | 2.5h | 2026-03-05 09:00 A | 2026-03-05 11:30 A |  | 100% |  |  |  | start no earlier than 2026-03-05 09:00 | Бундин В | 2.5h | 2.5h |
| 2917 | 12.2.27.2 | ослабить ленту для чистки барабана / натяжка после чистки | 10min | 2026-03-12 09:00 A | 2026-03-12 09:10 A |  | 100% |  |  |  | start no earlier than 2026-03-12 09:00 | Бундин В | 0.17h | 0.17h |
| 2918 | 12.2.27.3 | чистка тенов | 1h | 2026-05-14 09:00 A | 2026-05-14 10:00 A |  | 100% |  |  |  | start no earlier than 2026-05-14 09:00 | Макаревич А | 1h | 1h |
| 2919 | 12.2.27.4 | чистка тенов | 2h | 2026-07-14 09:00 | 2026-07-14 11:00 |  |  |  | 177.34d |  | start no earlier than 2026-07-14 09:00 | Бундин В | 2h |  |
| 2920 | 12.2.27.5 | конвейер и вибробункер БЕСТРОМ | 2h | 2023-12-28 09:00 | 2023-12-28 11:00 |  |  |  | 840.34d |  | start no earlier than 2023-12-28 09:00 | ТО | 2h |  |
| 2921 | 12.2.27.6 | бестром чистка тен, проверка тефлона, роликов (согласовать с мастером) | 2h | 2026-07-08 09:00 A | 2026-07-08 11:00 A |  | 100% |  |  |  | start no earlier than 2026-07-08 09:00 | Бобренок В | 2h | 2h |
| 2922 | 12.2.27.7 | бестром чистка тен, проверка тефлона, роликов (согласовать с мастером) | 1h | 2026-07-30 09:00 A | 2026-07-30 10:00 A |  | 100% |  |  |  | start no earlier than 2026-07-30 09:00 | Тимофеев В | 1h | 1h |
| 2923 | 12.2.27.8 | бестром чистка тен, проверка тефлона, роликов (согласовать с мастером) | 1h | 2026-08-13 09:00 A | 2026-08-13 10:00 A |  | 100% |  |  |  | start no earlier than 2026-08-13 09:00 | Тимофеев В | 1h | 1h |
| 2924 | 12.2.27.9 | бестром чистка тен, проверка тефлона, роликов (согласовать с мастером) | 1h | 2026-08-20 09:00 A | 2026-08-20 10:00 A |  | 100% |  |  |  | start no earlier than 2026-08-20 09:00 | Дедов В | 1h | 1h |
| 2925 | 12.2.27.10 | бестром чистка тен, проверка тефлона, роликов (согласовать с мастером) | 1h | 2026-09-03 09:00 A | 2026-09-03 10:00 A |  | 100% |  |  |  | start no earlier than 2026-09-03 09:00 | Макаревич А | 1h | 1h |
| 2926 | 12.2.27.11 | Замена линейного подшипника ISKRA KH2030-PP (согласование с Домоводовым) не делали, все норм там) | 2h | 2026-09-03 09:00 A | 2026-09-03 11:00 A |  | 100% |  |  |  | start no earlier than 2026-09-03 09:00 | Макаревич А | 2h | 2h |
| 2927 | 12.2.27.12 | ослабить ленту для чистки барабана / натяжка после чистки | 10min | 2026-09-10 09:00 | 2026-09-10 09:10 |  |  |  | 134.57d |  | start no earlier than 2026-09-10 09:00 | Макаревич А | 0.17h |  |
| 2928 | 12.2.27.13 | Замена поролоновой губки на горизонтальных тенах запайки пакетов | 30min | 2026-09-17 09:00 A | 2026-09-17 09:30 A |  | 100% |  |  |  | start no earlier than 2026-09-17 09:00 | Бобренок В | 0.5h | 0.5h |
| 2929 | 12.2.27.14 | Чистка ТЭНов | 2h | 2026-09-16 09:00 A | 2026-09-16 11:00 A |  | 100% |  |  |  | start no earlier than 2026-09-16 08:00 | Бундин В | 2h | 2h |
| 2930 | 12.2.27.15 | Чистка ТЭНов | 2h | 2026-09-24 09:00 | 2026-09-24 11:00 |  |  |  | 120.34d |  | start no earlier than 2026-09-24 09:00 | Бундин В | 2h |  |

| ID | WBS | Task | Duration | Start | Finish | Complete | Remaining | Total slack | Constraint | Resources | Work | Actual work |
| --- | --- | --- | --- | --- | --- | --- | --- | --- | --- | --- | --- | --- |
| 2931 | 12.2.28 | **электрооборудование** | 700.02d? | 2023-12-28 09:00 A | 2026-09-03 09:10 |  | 696.66d? | 140.57d |  |  | 69.33h | 0.33h |
| 2932 | 12.2.28.1 | ВРУ3 | 30min | 2024-10-03 09:00 | 2024-10-03 09:30 |  |  | 640.53d | start no earlier than 2024-10-03 09:00 | Тимофеев В | 0.5h |  |
| 2933 | 12.2.28.2 | ВРУ4 | 2h | 2023-12-28 09:00 | 2023-12-28 11:00 |  |  | 840.34d | start no earlier than 2023-12-28 09:00 | ТО | 2h |  |
| 2934 | 12.2.28.3 | ВРУ5 | 2h | 2023-12-28 09:00 | 2023-12-28 11:00 |  |  | 840.34d | start no earlier than 2023-12-28 09:00 | ТО | 2h |  |
| 2935 | 12.2.28.4 | ВРУ6 | 2h | 2023-12-28 09:00 | 2023-12-28 11:00 |  |  | 840.34d | start no earlier than 2023-12-28 09:00 | ТО | 2h |  |
| 2936 | 12.2.28.5 | ЩР4 у печи | 2h | 2023-12-28 09:00 | 2023-12-28 11:00 |  |  | 840.34d | start no earlier than 2023-12-28 09:00 | ТО | 2h |  |
| 2937 | 12.2.28.6 | ЩО1 у печи | 30min | 2024-10-03 09:00 | 2024-10-03 09:30 |  |  | 640.53d | start no earlier than 2024-10-03 09:00 | Тимофеев В | 0.5h |  |
| 2938 | 12.2.28.7 | ЩР5 у жиротопки | 2h | 2023-12-28 09:00 | 2023-12-28 11:00 |  |  | 840.34d | start no earlier than 2023-12-28 09:00 | ТО | 2h |  |
| 2939 | 12.2.28.8 | ЩР6 упаковка стна жир | 2h | 2023-12-28 09:00 | 2023-12-28 11:00 |  |  | 840.34d | start no earlier than 2023-12-28 09:00 | ТО | 2h |  |
| 2940 | 12.2.28.9 | ЩР7 упаковка колонна | 2h | 2023-12-28 09:00 | 2023-12-28 11:00 |  |  | 840.34d | start no earlier than 2023-12-28 09:00 | ТО | 2h |  |
| 2941 | 12.2.28.10 | ЩР8 склад навесок | 2h | 2023-12-28 09:00 | 2023-12-28 11:00 |  |  | 840.34d | start no earlier than 2023-12-28 09:00 | ТО | 2h |  |
| 2942 | 12.2.28.11 | ЩР9 2 этаж | 2h | 2023-12-28 09:00 | 2023-12-28 11:00 |  |  | 840.34d | start no earlier than 2023-12-28 09:00 | ТО | 2h |  |
| 2943 | 12.2.28.12 | электрокотел 1 - 2 цех | 2h | 2023-12-28 09:00 | 2023-12-28 11:00 |  |  | 840.34d | start no earlier than 2023-12-28 09:00 | ТО | 2h |  |
| 2944 | 12.2.28.13 | электрокотел 2 - 2 цех | 1d? | 2023-12-28 09:00 | 2023-12-28 18:00 |  |  | 839.59d | start no earlier than 2023-12-28 09:00 | ТО | 8h |  |
| 2945 | 12.2.28.14 | электрокотел 3 - 2 цех | 1d? | 2023-12-28 09:00 | 2023-12-28 18:00 |  |  | 839.59d | start no earlier than 2023-12-28 09:00 | ТО | 8h |  |
| 2946 | 12.2.28.15 | бойлер 4 2 цех раковина | 1d? | 2023-12-28 09:00 | 2023-12-28 18:00 |  |  | 839.59d | start no earlier than 2023-12-28 09:00 | ТО | 8h |  |
| 2947 | 12.2.28.16 | бойлер 5 2 цех душ М | 1d? | 2023-12-28 09:00 | 2023-12-28 18:00 |  |  | 839.59d | start no earlier than 2023-12-28 09:00 | ТО | 8h |  |
| 2948 | 12.2.28.17 | бойлер 6 2 цех душ Ж | 1d? | 2023-12-28 09:00 | 2023-12-28 18:00 |  |  | 839.59d | start no earlier than 2023-12-28 09:00 | ТО | 8h |  |
| 2949 | 12.2.28.18 | насос санитарный | 1d? | 2023-12-28 09:00 | 2023-12-28 18:00 |  |  | 839.59d | start no earlier than 2023-12-28 09:00 | ТО | 8h |  |
| 2950 | 12.2.28.19 | ЩР4 у печи продувка | 10min | 2026-09-03 09:00 A | 2026-09-03 09:10 A | 100% |  |  | start no earlier than 2026-09-03 09:00 | Труфанов А | 0.17h | 0.17h |
| 2951 | 12.2.28.20 | ЩО1 у печи продувка | 10min | 2026-09-03 09:00 A | 2026-09-03 09:10 A | 100% |  |  | start no earlier than 2026-09-03 09:00 | Труфанов А | 0.17h | 0.17h |
| 2952 | 12.2.29 | **Компрессор 2 цех** | 33.06d | 2026-08-06 09:00 A | 2026-09-17 09:30 | 99% | 0d | 0d |  | ТО | 4h | 4h |
| 2953 | 12.2.29.1 | продувка фильтров | 30min | 2026-08-06 09:00 A | 2026-08-06 09:30 A | 100% |  |  | start no earlier than 2026-08-06 09:00 | Тимофеев В | 0.5h | 0.5h |
| 2954 | 12.2.29.2 | слив конденсат с осушителя | 30min | 2026-08-06 09:00 A | 2026-08-06 09:30 A | 100% |  |  | start no earlier than 2026-08-06 09:00 | Тимофеев В | 0.5h | 0.5h |
| 2955 | 12.2.29.3 | слив конденсат с осушителя | 30min | 2026-08-20 09:00 A | 2026-08-20 09:30 A | 100% |  |  | start no earlier than 2026-08-20 09:00 | Дедов В | 0.5h | 0.5h |
| 2956 | 12.2.29.4 | продувка фильтров | 30min | 2026-08-29 09:00 A | 2026-08-31 09:30 A | 100% |  |  | start no earlier than 2026-08-29 09:00 | Макаревич А | 0.5h | 0.5h |
| 2957 | 12.2.29.5 | слив конденсат с осушителя | 30min | 2026-08-29 09:00 A | 2026-08-31 09:30 A | 100% |  |  | start no earlier than 2026-08-29 09:00 | Макаревич А | 0.5h | 0.5h |
| 2958 | 12.2.29.6 | слив конденсат с осушителя | 30min | 2026-08-29 09:00 A | 2026-08-31 09:30 A | 100% |  |  | start no earlier than 2026-08-29 09:00 | Макаревич А | 0.5h | 0.5h |
| 2959 | 12.2.29.7 | слив конденсат с осушителя | 30min | 2026-09-03 09:00 A | 2026-09-03 09:30 A | 100% |  |  | start no earlier than 2026-09-03 09:00 | Макаревич А | 0.5h | 0.5h |
| 2960 | 12.2.29.8 | продувка фильтров (дать размеры фильтра) | 30min | 2026-09-17 09:00 A | 2026-09-17 09:30 A | 100% |  |  | start no earlier than 2026-09-17 09:00 | Труфанов А | 0.5h | 0.5h |

| ID | WBS | Task | Duration | Start | Finish | Complete | Remaining | Total slack | Constraint | Resources | Work | Actual work |
| --- | --- | --- | --- | --- | --- | --- | --- | --- | --- | --- | --- | --- |
| 2961 | 12.2.30 | **насосная станция 2 цех** | 130.06d | 2026-03-05 09:00 A | 2026-09-03 09:30 A | 100% |  |  |  |  | 1h | 1h |
| 2962 | 12.2.30.1 | замена фильтров | 30min | 2026-03-05 09:00 A | 2026-03-05 09:30 A | 100% |  |  | start no earlier than 2026-03-05 09:00 | Тимофеев В | 0.5h | 0.5h |
| 2963 | 12.2.30.2 | замена фильтров | 30min | 2026-09-03 09:00 A | 2026-09-03 09:30 A | 100% |  |  | start no earlier than 2026-09-03 09:00 | Труфанов А | 0.5h | 0.5h |
| 2964 | 12.2.31 | **приточнго-вытяжная венгтиляция и смесительный узел** | 120.06d | 2026-04-16 09:00 A | 2026-09-24 09:30 | 67% | 40.02d | 120.53d |  |  | 2.5h | 2h |
| 2965 | 12.2.31.1 | замена фильтра | 1h | 2026-04-16 09:00 A | 2026-04-16 10:00 A | 100% |  |  | start no earlier than 2026-04-16 09:00 | Труфанов А; Некрасов А | 2h | 2h |
| 2966 | 12.2.31.2 | Осмотр состояния фильтра приточки/замена | 30min | 2026-09-24 09:00 | 2026-09-24 09:30 |  |  | 120.53d | start no earlier than 2026-09-24 09:00 | Труфанов А | 0.5h |  |
| 2967 | 12.2.32 | **кондиционер 1** | 640.04d? | 2024-04-18 09:00 A | 2026-09-24 09:20 | 97% | 19.4d? | 120.55d |  | ТО | 5070.33h | 4826.66h |
| 2968 | 12.2.32.1 | чистка фильтра | 1h | 2024-04-18 09:00 A | 2024-04-18 10:00 A | 100% |  |  | start no earlier than 2024-04-18 08:00 | Черепанов И; Некрасов А | 2h | 2h |
| 2969 | 12.2.32.2 | чистка фильтра | 20min | 2026-03-05 09:00 A | 2026-03-05 09:20 A | 100% |  |  | start no earlier than 2026-03-05 09:00 | Некрасов А; Бундин В | 0.67h | 0.67h |
| 2970 | 12.2.32.3 | чистка фильтров | 1d? | 2026-06-25 09:00 A | 2026-06-25 18:00 A | 100% |  |  | start no earlier than 2026-06-25 09:00 | Тимофеев В; Дедов В | 16h | 16h |
| 2971 | 12.2.32.4 | чистка фильтров | 20min | 2026-07-14 09:00 A | 2026-07-14 09:20 A | 100% |  |  | start no earlier than 2026-07-14 09:00 | Некрасов А; Бундин В | 0.67h | 0.67h |
| 2972 | 12.2.32.5 | чистка фильтров | 20min | 2026-08-13 09:00 A | 2026-08-13 09:20 A | 100% |  |  | start no earlier than 2026-08-13 09:00 | Некрасов А; Труфанов А | 0.67h | 0.67h |
| 2973 | 12.2.32.6 | чистка фильтров | 20min | 2026-09-03 09:00 A | 2026-09-03 09:20 A | 100% |  |  | start no earlier than 2026-09-03 09:00 | Некрасов А; Тимофеев В | 0.67h | 0.67h |
| 2974 | 12.2.32.7 | чистка фильтров | 20min | 2026-09-17 09:00 A | 2026-09-17 09:20 A | 100% |  |  | start no earlier than 2026-09-17 09:00 | Тимофеев В; Бобренок В | 0.67h | 0.67h |
| 2975 | 12.2.32.8 | чистка фильтров | 20min | 2026-09-24 09:00 | 2026-09-24 09:20 |  |  | 120.55d | start no earlier than 2026-09-24 09:00 | Тимофеев В; Бундин В | 0.67h |  |
| 2976 | 12.2.33 | **кондиционер 2** | 640.04d? | 2024-04-18 09:00 A | 2026-09-24 09:20 | 97% | 18.55d? | 120.55d |  | ТО | 5071.5h | 4982.67h |
| 2977 | 12.2.33.1 | чистка фильтров | 1d? | 2026-06-25 09:00 A | 2026-06-25 18:00 A | 100% |  |  | start no earlier than 2026-06-25 09:00 | Тимофеев В; Дедов В | 16h | 16h |
| 2978 | 12.2.33.2 | чистка фильтра | 1h | 2024-04-18 09:00 A | 2024-04-18 10:00 A | 100% |  |  | start no earlier than 2024-04-18 08:00 | Черепанов И; Некрасов А | 2h | 2h |
| 2979 | 12.2.33.3 | чистка фильтра | 20min | 2026-03-05 09:00 A | 2026-03-05 09:20 A | 100% |  |  | start no earlier than 2026-03-05 09:00 | Некрасов А; Бундин В | 0.67h | 0.67h |
| 2980 | 12.2.33.4 | чистка фильтров | 20min | 2026-07-14 09:00 A | 2026-07-14 09:20 A | 100% |  |  | start no earlier than 2026-07-14 09:00 | Некрасов А; Бундин В | 0.67h | 0.67h |
| 2981 | 12.2.33.5 | чистка фильтров | 20min | 2026-08-13 09:00 A | 2026-08-13 09:20 A | 100% |  |  | start no earlier than 2026-08-13 09:00 | Некрасов А; Труфанов А | 0.67h | 0.67h |
| 2982 | 12.2.33.6 | чистка фильтров | 20min | 2026-08-13 09:00 A | 2026-08-13 09:20 A | 100% |  |  | start no earlier than 2026-08-13 09:00 | Некрасов А; Труфанов А | 0.67h | 0.67h |
| 2983 | 12.2.33.7 | чистка фильтров | 20min | 2026-09-03 09:00 A | 2026-09-03 09:20 A | 100% |  |  | start no earlier than 2026-09-03 09:00 | Некрасов А; Тимофеев В | 0.67h | 0.67h |
| 2984 | 12.2.33.8 | чистка фильтров | 30min | 2026-09-17 09:00 A | 2026-09-17 09:30 A | 100% |  |  | start no earlier than 2026-09-17 09:00 | Тимофеев В; Бобренок В | 1h | 1h |
| 2985 | 12.2.33.9 | чистка фильтров | 20min | 2026-09-24 09:00 | 2026-09-24 09:20 |  |  | 120.55d | start no earlier than 2026-09-24 09:00 | Тимофеев В; Бундин В | 0.67h |  |

| ID | WBS | Task | Type | Duration | Start | Finish | Complete | Remaining | Total slack | Constraint | Resources | Work | Actual work |
| --- | --- | --- | --- | --- | --- | --- | --- | --- | --- | --- | --- | --- | --- |
| 2986 | 12.2.34 | **кондиционер 3** |  | 150.04d | 2026-03-05 09:00 A | 2026-09-24 09:20 | 86% | 21.43d | 120.55d |  |  | 4.67h | 4h |
| 2987 | 12.2.34.1 | чистка фильтра |  | 20min | 2026-03-05 09:00 A | 2026-03-05 09:20 A | 100% |  |  | start no earlier than 2026-03-05 09:00 | Некрасов А; Бундин В | 0.67h | 0.67h |
| 2988 | 12.2.34.2 | чистка фильтров |  | 20min | 2026-07-14 09:00 A | 2026-07-14 09:20 A | 100% |  |  | start no earlier than 2026-07-14 09:00 | Некрасов А; Бундин В | 0.67h | 0.67h |
| 2989 | 12.2.34.3 | чистка фильтров |  | 20min | 2026-08-13 09:00 A | 2026-08-13 09:20 A | 100% |  |  | start no earlier than 2026-08-13 09:00 | Некрасов А; Труфанов А | 0.67h | 0.67h |
| 2990 | 12.2.34.4 | чистка фильтров |  | 20min | 2026-08-13 09:00 A | 2026-08-13 09:20 A | 100% |  |  | start no earlier than 2026-08-13 09:00 | Некрасов А; Труфанов А | 0.67h | 0.67h |
| 2991 | 12.2.34.5 | чистка фильтров |  | 20min | 2026-09-03 09:00 A | 2026-09-03 09:20 A | 100% |  |  | start no earlier than 2026-09-03 09:00 | Некрасов А; Тимофеев В | 0.67h | 0.67h |
| 2992 | 12.2.34.6 | чистка фильтров |  | 20min | 2026-09-17 09:00 A | 2026-09-17 09:20 A | 100% |  |  | start no earlier than 2026-09-17 09:00 | Тимофеев В; Бобренок В | 0.67h | 0.67h |
| 2993 | 12.2.34.7 | чистка фильтров |  | 20min | 2026-09-24 09:00 | 2026-09-24 09:20 |  |  | 120.55d | start no earlier than 2026-09-24 09:00 | Тимофеев В; Бундин В | 0.67h |  |
| 2994 | 12.2.35 | **электроштабелер** |  | 2.38d | 2026-08-11 09:00 A | 2026-08-13 12:00 A | 100% |  |  |  | ТО | 22.25h | 22.25h |
| 2995 | 12.2.35.1 | **хруст в колесе устранить** |  | 2.38d | 2026-08-11 09:00 A | 2026-08-13 12:00 A | 100% |  |  |  |  | 3.25h | 3.25h |
| 2996 | 12.2.35.1.1 | хруст с правой стороны штабелера- ревизия, скорее всего подшипник (экструдер). Осмотр, доложить | manual | 15min | 2026-08-11 09:00 A | 2026-08-11 09:15 A | 100% |  |  | start no earlier than 2026-08-11 09:00 | Тимофеев В | 0.25h | 0.25h |
| 2997 | 12.2.35.1.2 | ремонт замена подшипник колесо штабелер |  | 3h | 2026-08-13 09:00 A | 2026-08-13 12:00 A | 100% |  |  | start no earlier than 2026-08-13 09:00 | Тимофеев В | 3h | 3h |
| 2998 | 12.2.36 | **Лаборатория** |  | 0.25d | 2026-09-18 09:00 A | 2026-09-18 11:00 A | 100% |  |  |  |  | 2h | 2h |
| 2999 | 12.2.36.1 | Прочистка дистилятора/ТО, очистка накипи, инструкция смотреть в лаборатории |  | 2h | 2026-09-18 09:00 A | 2026-09-18 11:00 A | 100% |  |  | start no earlier than 2026-09-18 09:00 | Бобренок В | 2h | 2h |
| 3000 | 12.3 | **3 цех** |  | 1d? | 2023-12-28 09:00 | 2023-12-28 18:00 |  |  | 839.59d |  | ТО | 88h |  |
| 3001 | 12.3.1 | **электрооборудование** |  | 1d? | 2023-12-28 09:00 | 2023-12-28 18:00 |  |  | 839.59d |  | ТО | 48h |  |
| 3002 | 12.3.1.1 | ВРУ7 |  | 1d? | 2023-12-28 09:00 | 2023-12-28 18:00 |  |  | 839.59d | start no earlier than 2023-12-28 09:00 | ТО | 8h |  |
| 3003 | 12.3.1.2 | ОЩР |  | 1d? | 2023-12-28 09:00 | 2023-12-28 18:00 |  |  | 839.59d | start no earlier than 2023-12-28 09:00 | ТО | 8h |  |
| 3004 | 12.3.1.3 | электрокотел 4 - 3 цех |  | 1d? | 2023-12-28 09:00 | 2023-12-28 18:00 |  |  | 839.59d | start no earlier than 2023-12-28 09:00 | ТО | 8h |  |
| 3005 | 12.3.1.4 | электрокотел 5 - 3 цех |  | 1d? | 2023-12-28 09:00 | 2023-12-28 18:00 |  |  | 839.59d | start no earlier than 2023-12-28 09:00 | ТО | 8h |  |
| 3006 | 12.3.1.5 | электрокотел 6 - 3 цех |  | 1d? | 2023-12-28 09:00 | 2023-12-28 18:00 |  |  | 839.59d | start no earlier than 2023-12-28 09:00 | ТО | 8h |  |
| 3007 | 12.3.2 | электроштабелер 1 |  | 1d? | 2023-12-28 09:00 | 2023-12-28 18:00 |  |  | 839.59d | start no earlier than 2023-12-28 09:00 | ТО | 8h |  |
| 3008 | 12.3.3 | электроштабелер 2 |  | 1d? | 2023-12-28 09:00 | 2023-12-28 18:00 |  |  | 839.59d | start no earlier than 2023-12-28 09:00 | ТО | 8h |  |
| 3009 | 12.3.4 | вилочный погрузчик 1 |  | 1d? | 2023-12-28 09:00 | 2023-12-28 18:00 |  |  | 839.59d | start no earlier than 2023-12-28 09:00 | ТО | 8h |  |
| 3010 | 12.3.5 | вилочный погрузчик 2 |  | 1d? | 2023-12-28 09:00 | 2023-12-28 18:00 |  |  | 839.59d | start no earlier than 2023-12-28 09:00 | ТО | 8h |  |

| ID | WBS | Task | Type | Duration | Start | Finish | Complete | Remaining | Total slack | Constraint | Resources | Work | Actual work |
| --- | --- | --- | --- | --- | --- | --- | --- | --- | --- | --- | --- | --- | --- |
| 3011 | 12.4 | **5 цех** |  | 656.25d? | 2023-12-28 09:00 A | 2026-07-03 11:00 | 10% | 593.75d? | 184.34d |  | ТО | 6302h | 906.67h |
| 3012 | 12.4.1 | насосная станция 5 цех |  | 1d? | 2023-12-28 09:00 | 2023-12-28 18:00 |  |  | 839.59d | start no earlier than 2023-12-28 09:00 | ТО | 8h |  |
| 3013 | 12.4.2 | растариватель |  | 1d? | 2023-12-28 09:00 | 2023-12-28 18:00 |  |  | 839.59d | start no earlier than 2023-12-28 09:00 | ТО | 8h |  |
| 3014 | 12.4.3 | **шнек 1 растариватель-смеситель** |  | 65.25d | 2026-04-03 09:00 A | 2026-07-03 11:00 | 67% | 21.75d | 0d |  | ТО | 492h | 342.67h |
| 3015 | 12.4.3.1 | замена подшипник нижний | manual | 2h | 2026-04-03 09:00 A | 2026-04-03 11:00 A | 100% |  |  |  | Некрасов А; Труфанов А | 4h | 4h |
| 3016 | 12.4.3.2 | ревизия подшипник верхний - не снимается.ревизия - все ок, мазка | manual | 2h | 2026-04-03 09:00 A | 2026-04-03 11:00 A | 100% |  |  |  | Некрасов А; Труфанов А | 4h | 4h |
| 3017 | 12.4.3.3 | осмотр износа, смазка | manual | 2h | 2026-07-03 09:00 | 2026-07-03 11:00 |  |  |  |  | Тимофеев В | 2h |  |
| 3018 | 12.4.4 | смеситель СМ1500 |  | 1d? | 2023-12-28 09:00 | 2023-12-28 18:00 |  |  | 839.59d | start no earlier than 2023-12-28 09:00 | ТО | 8h |  |
| 3019 | 12.4.5 | **шнек 2 смеситель -дробилка** |  | 68.5d? | 2026-03-24 09:00 A | 2026-06-26 13:00 | 67% | 22.83d? | 189.09d |  | ТО | 440h | 64h |
| 3020 | 12.4.5.1 | ремонт вала, т.к съело посадку на верх подшипник |  | 1d? | 2026-03-24 09:00 A | 2026-03-24 18:00 A | 100% |  |  | start no earlier than 2026-03-24 09:00 | Труфанов А; Некрасов А | 16h | 16h |
| 3021 | 12.4.5.2 | осмотр износа |  | 4h | 2026-06-26 09:00 | 2026-06-26 13:00 |  |  | 189.09d | start no earlier than 2026-06-26 09:00 | Тимофеев В | 4h |  |
| 3022 | 12.4.6 | **дробилка ДМС3** |  | 0.5d | 2026-05-11 09:00 | 2026-05-11 13:00 |  |  | 223.09d |  | ТО | 8h |  |
| 3023 | 12.4.6.1 | замена подшипник буксы сторона мотора |  | 4h | 2026-05-11 09:00 | 2026-05-11 13:00 |  |  | 223.09d | start no earlier than 2026-05-10 09:00 | Бундин В | 4h |  |
| 3024 | 12.4.7 | шнек 3 дробилка-накопитель |  | 1d? | 2023-12-28 09:00 | 2023-12-28 18:00 |  |  | 839.59d | start no earlier than 2023-12-28 09:00 | ТО | 8h |  |
| 3025 | 12.4.8 | дробилка 11квт |  | 1d? | 2023-12-28 09:00 | 2023-12-28 18:00 |  |  | 839.59d | start no earlier than 2023-12-28 09:00 | ТО | 8h |  |
| 3026 | 12.4.9 | дробилка 7,5квт |  | 1d? | 2023-12-28 09:00 | 2023-12-28 18:00 |  |  | 839.59d | start no earlier than 2023-12-28 09:00 | ТО | 8h |  |
| 3027 | 12.4.10 | вибросито А |  | 1d? | 2023-12-28 09:00 | 2023-12-28 18:00 |  |  | 839.59d | start no earlier than 2023-12-28 09:00 | ТО | 8h |  |
| 3028 | 12.4.11 | вибросито Б |  | 1d? | 2023-12-28 09:00 | 2023-12-28 18:00 |  |  | 839.59d | start no earlier than 2023-12-28 09:00 | ТО | 8h |  |
| 3029 | 12.4.12 | **электрооборудование** |  | 1d? | 2023-12-28 09:00 | 2023-12-28 18:00 |  |  | 839.59d |  | ТО | 48h |  |
| 3030 | 12.4.12.1 | ВРУ7 |  | 1d? | 2023-12-28 09:00 | 2023-12-28 18:00 |  |  | 839.59d | start no earlier than 2023-12-28 09:00 | ТО | 8h |  |
| 3031 | 12.4.12.2 | ЩР2 |  | 1d? | 2023-12-28 09:00 | 2023-12-28 18:00 |  |  | 839.59d | start no earlier than 2023-12-28 09:00 | ТО | 8h |  |
| 3032 | 12.4.12.3 | котельная газовая 5 цех |  | 1d? | 2023-12-28 09:00 | 2023-12-28 18:00 |  |  | 839.59d | start no earlier than 2023-12-28 09:00 | ТО | 8h |  |
| 3033 | 12.4.12.4 | бойлеры душ |  | 1d? | 2023-12-28 09:00 | 2023-12-28 18:00 |  |  | 839.59d | start no earlier than 2023-12-28 09:00 | ТО | 8h |  |
| 3034 | 12.4.12.5 | вентилятор вытяжной в дробилке |  | 1d? | 2023-12-28 09:00 | 2023-12-28 18:00 |  |  | 839.59d | start no earlier than 2023-12-28 09:00 | ТО | 8h |  |

| ID | WBS | Task | Type | Duration | Start | Finish | Complete | Remaining | Total slack | Constraint | Resources | Work | Actual work |
| --- | --- | --- | --- | --- | --- | --- | --- | --- | --- | --- | --- | --- | --- |
| 3035 | 12.5 | **адм корпус** |  | 1d? | 2023-12-28 09:00 | 2023-12-28 18:00 |  |  | 839.59d |  | ТО | 24h |  |
| 3036 | 12.5.1 | бойлер туалет |  | 1d? | 2023-12-28 09:00 | 2023-12-28 18:00 |  |  | 839.59d | start no earlier than 2023-12-28 09:00 | ТО | 8h |  |
| 3037 | 12.5.2 | ОЩР |  | 1d? | 2023-12-28 09:00 | 2023-12-28 18:00 |  |  | 839.59d | start no earlier than 2023-12-28 09:00 | ТО | 8h |  |
| 3038 | 12.6 | **склад упаковки** |  | 1d? | 2023-12-28 09:00 | 2023-12-28 18:00 |  |  | 839.59d |  | ТО | 32h |  |
| 3039 | 12.6.1 | **электрооборудование** |  | 1d? | 2023-12-28 09:00 | 2023-12-28 18:00 |  |  | 839.59d |  | ТО | 24h |  |
| 3040 | 12.6.1.1 | ЩО и ЩР |  | 1d? | 2023-12-28 09:00 | 2023-12-28 18:00 |  |  | 839.59d | start no earlier than 2023-12-28 09:00 | ТО | 8h |  |
| 3041 | 12.6.1.2 | санитарный насос |  | 1d? | 2023-12-28 09:00 | 2023-12-28 18:00 |  |  | 839.59d | start no earlier than 2023-12-28 09:00 | ТО | 8h |  |
| 3042 | 12.7 | **цех наполнителей** |  | 1d? | 2023-12-28 09:00 | 2023-12-28 18:00 |  |  | 839.59d |  | ТО | 56h |  |
| 3043 | 12.7.1 | ЩО и ЩР |  | 1d? | 2023-12-28 09:00 | 2023-12-28 18:00 |  |  | 839.59d | start no earlier than 2023-12-28 09:00 | ТО | 8h |  |
| 3044 | 12.7.2 | комппрессор |  | 1d? | 2023-12-28 09:00 | 2023-12-28 18:00 |  |  | 839.59d | start no earlier than 2023-12-28 09:00 | ТО | 8h |  |
| 3045 | 12.7.3 | конвейер загрузки |  | 1d? | 2023-12-28 09:00 | 2023-12-28 18:00 |  |  | 839.59d | start no earlier than 2023-12-28 09:00 | ТО | 8h |  |
| 3046 | 12.7.4 | дозатор НОТИС |  | 1d? | 2023-12-28 09:00 | 2023-12-28 18:00 |  |  | 839.59d | start no earlier than 2023-12-28 09:00 | ТО | 8h |  |
| 3047 | 12.7.5 | запайщик |  | 1d? | 2023-12-28 09:00 | 2023-12-28 18:00 |  |  | 839.59d | start no earlier than 2023-12-28 09:00 | ТО | 8h |  |
| 3048 | 12.7.6 | вилочный погрузчик тойота |  | 1d? | 2023-12-28 09:00 | 2023-12-28 18:00 |  |  | 839.59d | start no earlier than 2023-12-28 09:00 | ТО | 8h |  |
| 3049 | 12.8 | Установка розетки под литийионный аккумклятор 3-х фазный, установить рядом с существующей ВРУ |  | 2h | 2026-07-08 09:00 | 2026-07-08 11:00 |  |  | 181.34d | start no earlier than 2026-07-08 08:00 | Бундин В | 2h |  |
| 3050 | 13 | **синий склад** |  | 110.38d | 2026-05-07 09:00 A | 2026-09-30 12:00 | 48% | 57.82d | 115.22d |  |  | 21h | 10h |
| 3051 | 13.1 | установить на место крышки вентиляторов |  | 1h | 2026-08-17 09:00 A | 2026-08-17 10:00 A | 100% |  |  | start no earlier than 2026-08-17 09:00 | Бобренок В | 1h | 1h |
| 3052 | 13.2 | монтаж включателя света с улицы, возле вход. Двери |  | 3h | 2026-09-30 09:00 | 2026-09-30 12:00 |  |  | 115.22d | start no earlier than 2026-09-30 09:00 | Бобренок В | 3h |  |
| 3053 | 13.3 | расширить проем вверху для проезда погрузчиков, врезаются | manual | 1d | 2026-09-21 09:00 | 2026-09-21 18:00 |  |  |  | start no earlier than 2026-09-21 09:00 | Олег | 8h |  |
| 3054 | 13.4 | замерить диаметр крыльчатки двигателя экструдера, инфу передать мне |  | 1h | 2026-06-13 09:00 A | 2026-06-15 10:00 A | 100% |  |  | start no earlier than 2026-06-13 09:00 | Бобренок В | 1h | 1h |
| 3055 | 13.5 | найти амперметры 30А и 150А (сказать кол-во) |  | 2h | 2026-06-10 09:00 A | 2026-06-10 11:00 A | 100% |  |  | start no earlier than 2026-06-10 09:00 | Труфанов А | 2h | 2h |
| 3056 | 13.6 | Навести порядок на входе в синий склад |  | 2h | 2026-07-23 09:00 A | 2026-07-23 11:00 A | 100% |  |  | start no earlier than 2026-07-24 09:00 | Бундин В | 2h | 2h |
| 3057 | 13.7 | проверить и подписать все материалы в синем складе с Алексеем |  | 4h | 2026-05-07 09:00 A | 2026-05-07 13:00 A | 100% |  |  | start no earlier than 2026-05-07 09:00 | Шуранов Ю | 4h | 4h |
| 3058 | 14 | **хим лаб** |  | 652.25d? | 2024-01-11 08:00 A | 2026-07-13 11:00 A | 100% |  |  |  |  | 71.75h | 71.75h |
| 3059 | 14.1 | замена кран РР |  | 2h | 2026-07-13 09:00 A | 2026-07-13 11:00 A | 100% |  |  | start no earlier than 2026-07-13 09:00 | Тимофеев В | 2h | 2h |
| 3060 | 14.2 | ремонт термоконтроллера - замена реле / перепаять с сзоны ALARM |  | 1h | 2026-06-09 09:00 A | 2026-06-09 10:00 A | 100% |  |  | start no earlier than 2026-06-09 09:00 | Дедов В | 1h | 1h |

| ID | WBS | Task | Duration | Start | Finish | Predecessors | Complete | Constraint | Resources | Work | Actual work |
| --- | --- | --- | --- | --- | --- | --- | --- | --- | --- | --- | --- |
| 3061 | 14.3 | **усилить питание хим лаб, что бы не отключался автомат при вкл быт приборов** | 0.12d | 2026-05-29 09:00 A | 2026-05-29 10:00 A |  | 100% |  |  | 2h | 2h |
| 3062 | 14.3.1 | переключение питания хим лаб на отдельный ШУ | 1h | 2026-05-29 09:00 A | 2026-05-29 10:00 A |  | 100% | start no earlier than 2026-05-29 09:00 | Некрасов А; Бобренок В | 2h | 2h |
| 3063 | 14.4 | **ремонт бойлер вода - ПУН** | 10.25d | 2026-05-14 08:00 A | 2026-05-28 11:00 A |  | 100% |  |  | 4.75h | 4.75h |
| 3064 | 14.4.1 | замена из ЗИП | 1h | 2026-05-14 08:00 A | 2026-05-14 10:00 A |  | 100% | start no earlier than 2026-05-14 08:00 | Тимофеев В | 1h | 1h |
| 3065 | 14.4.2 | диагностика неисправности. Бойлер в слесарне | 1h | 2026-05-14 08:00 A | 2026-05-14 10:00 A |  | 100% | start no earlier than 2026-05-14 08:00 | Бобренок В | 1h | 1h |
| 3066 | 14.4.3 | заявка предохарнитель | 30min | 2026-05-15 09:00 A | 2026-05-15 09:30 A | 3065 | 100% | start no earlier than 2026-05-15 08:00 | Шуранов Ю | 0.5h | 0.5h |
| 3067 | 14.4.4 | контроль поставки | 15min | 2026-05-22 09:30 A | 2026-05-22 09:45 A | 3066FS+7d | 100% | start no earlier than 2026-05-15 08:00 | Шуранов Ю | 0.25h | 0.25h |
| 3068 | 14.4.5 | заменить на бойлере в слесарке термостата WY-S37A | 2h | 2026-05-28 09:00 A | 2026-05-28 11:00 A |  | 100% | start no earlier than 2026-05-28 09:00 | Тимофеев В | 2h | 2h |
| 3069 | 14.5 | **ремонт дистилятор** | 31d? | 2026-04-27 09:00 A | 2026-06-08 18:00 A |  | 100% |  |  | 17h | 17h |
| 3070 | 14.5.1 | заявка тен | 1h | 2026-04-27 09:00 A | 2026-04-27 10:00 A |  | 100% | start no earlier than 2026-04-27 09:00 | Шуранов Ю | 1h | 1h |
| 3071 | 14.5.2 | доставка | 1d? | 2026-06-05 09:00 A | 2026-06-05 18:00 A | 3070 | 100% | finish no earlier than 2026-06-05 18:00 | Карабанов | 8h | 8h |
| 3072 | 14.5.3 | замена. Больше не выбиывает | 1d? | 2026-06-05 18:00 A | 2026-06-08 18:00 A | 3071 | 100% | start no earlier than 2026-05-13 09:00 | Тимофеев В | 8h | 8h |
| 3073 | 14.6 | **ремонт АКВ_шесть** | 30d? | 2026-04-27 09:00 A | 2026-06-05 18:00 A |  | 100% |  |  | 11h | 11h |
| 3074 | 14.6.1 | заявка тен | 1h | 2026-04-27 09:00 A | 2026-04-27 10:00 A |  | 100% | start no earlier than 2026-04-27 09:00 | Шуранов Ю | 1h | 1h |
| 3075 | 14.6.2 | доставка | 1d? | 2026-06-05 09:00 A | 2026-06-05 18:00 A | 3074 | 100% | finish no earlier than 2026-06-05 18:00 | Карабанов | 8h | 8h |
| 3076 | 14.6.3 | замена | 2h | 2026-05-24 09:00 A | 2026-05-25 11:00 A |  | 100% | start no earlier than 2026-05-24 09:00 | Дедов В | 2h | 2h |
| 3077 | 14.7 | проверить прибор | 1d? | 2026-05-06 09:00 A | 2026-05-06 18:00 A |  | 100% | start no earlier than 2026-05-06 08:00 | Шуранов Ю | 8h | 8h |
| 3078 | 14.8 | датчик температуры ?? Заявка | 1d? | 2026-04-27 09:00 A | 2026-04-27 18:00 A |  | 100% | start no earlier than 2026-04-27 08:00 | Шуранов Ю | 8h | 8h |
| 3079 | 14.9 | дистилятор отключается ?? Заявка | 1d? | 2026-04-27 09:00 A | 2026-04-27 18:00 A |  | 100% | start no earlier than 2026-04-27 08:00 | Шуранов Ю | 8h | 8h |
| 3080 | 14.10 | перенос старый прибор в архив 5ц | 30min | 2026-04-20 09:00 A | 2026-04-20 09:30 A |  | 100% | start no earlier than 2026-04-20 08:00 | Кладовщики | 0.5h | 0.5h |
| 3081 | 14.11 | замена 2 вентилятора | 4h | 2024-01-16 08:00 A | 2024-01-16 13:00 A |  | 100% | start no earlier than 2024-01-16 08:00 | Бобренок В | 4h | 4h |
| 3082 | 14.12 | ремонт соленоид | 2h | 2024-01-16 08:00 A | 2024-01-16 11:00 A |  | 100% | start no earlier than 2024-01-16 08:00 | Тимофеев В | 2h | 2h |
| 3083 | 14.13 | ремонт вытяжка №2 диагностика вентилятор | 30min | 2024-01-11 08:00 A | 2024-01-11 09:30 A |  | 100% | start no earlier than 2024-01-11 08:00 | Дедов В | 0.5h | 0.5h |
| 3084 | 14.14 | замена насос " агрегат | 1h | 2024-01-11 08:00 A | 2024-01-11 10:00 A |  | 100% | start no earlier than 2024-01-11 08:00 | Дедов В | 1h | 1h |
| 3085 | 14.15 | замена тен по доставке | 2h | 2026-03-17 09:00 A | 2026-03-17 11:00 A |  | 100% | start no earlier than 2026-03-17 09:00 | Макаревич А | 2h | 2h |

| ID | WBS | Task | Duration | Start | Finish | Predecessors | Complete | Remaining | Total slack | Constraint | Resources | Work | Actual work |
| --- | --- | --- | --- | --- | --- | --- | --- | --- | --- | --- | --- | --- | --- |
| 3086 | 15 | **цех наполнителей** | 194.12d | 2025-07-14 09:00 A | 2026-04-10 10:00 A |  | 100% |  |  |  |  | 10h | 10h |
| 3087 | 15.1 | взять со склада АКБ и клеммы заменить на погрузчике, старый АКБ отдать на 2 этаж склад | 1h | 2026-04-10 09:00 A | 2026-04-10 10:00 A |  | 100% |  |  | start no earlier than 2026-04-10 09:00 | Тимофеев В | 1h | 1h |
| 3088 | 15.2 | поменять пневмоцилиндр на нотис | 1h | 2026-04-09 09:00 A | 2026-04-09 10:00 A |  | 100% |  |  | start no earlier than 2026-04-10 09:00 | Тимофеев В | 1h | 1h |
| 3089 | 15.3 | проверить дист. Воду в АКБ погрузчика | 1h | 2026-04-01 09:00 A | 2026-04-01 10:00 A |  | 100% |  |  | start no earlier than 2026-04-01 09:00 | Тимофеев В | 1h | 1h |
| 3090 | 15.4 | просверлить больше, нарезать резьбу для крепления стола запайщика, резьба сорвана | 1h | 2026-03-20 09:00 A | 2026-03-20 10:00 A |  | 100% |  |  | start no earlier than 2026-03-20 09:00 | Бундин В | 1h | 1h |
| 3091 | 15.5 | ремонт компрессор. Проверка конденсаторов/не запускается мотор. Ключь у кладовщиков | 4h | 2025-07-14 09:00 A | 2025-07-14 13:00 A |  | 100% |  |  | start no earlier than 2025-07-14 09:00 | Бобренок В | 4h | 4h |
| 3092 | 15.6 | ТО компрессор / конвейер / запайщик | 2h | 2026-03-09 09:00 A | 2026-03-09 11:00 A |  | 100% |  |  | start no earlier than 2026-03-09 09:00 | Тимофеев В | 2h | 2h |
| 3093 | 16 | **офис** | 932.25d? | 2023-03-10 09:00 A | 2026-09-28 11:00 |  | 97% | 26.04d? | 117.34d |  |  | 225.67h | 215.17h |
| 3094 | 16.1 | монтаж полочка Курдюмова продожить | 1h | 2026-09-22 09:00 A | 2026-09-22 10:00 A |  | 100% |  |  | start no earlier than 2026-09-22 09:00 | Тимофеев В | 1h | 1h |
| 3095 | 16.2 | **Ремонт бойлера** | 13.25d? | 2026-09-08 09:00 A | 2026-09-21 11:00 A |  | 100% |  |  |  |  | 7h | 7h |
| 3096 | 16.2.1 | Заявка тэна | 1d? | 2026-09-08 09:00 A | 2026-09-08 18:00 A |  | 100% |  |  | start no earlier than 2026-09-08 09:00 |  |  |  |
| 3097 | 16.2.2 | контроль доставка | 1d? | 2026-09-14 09:00 A | 2026-09-14 18:00 A |  | 100% |  |  | start no earlier than 2026-09-14 09:00 |  |  |  |
| 3098 | 16.2.3 | Повесить отремонтированный бойлер обратно в офис - проверить работу | 1h | 2026-09-18 09:00 A | 2026-09-18 10:00 A |  | 100% |  |  | start no earlier than 2026-09-18 09:00 | Тимофеев В | 1h | 1h |
| 3099 | 16.2.4 | устранить утечку / монтаж | 2h | 2026-09-21 09:00 A | 2026-09-21 11:00 A |  | 100% |  |  | start no earlier than 2026-09-21 09:00 | Некрасов А; Труфанов А | 4h | 4h |
| 3100 | 16.2.5 | Замена ТЭНа на бойлере, который в слесарке, получить на складе упаковки | 1h | 2026-09-16 09:00 A | 2026-09-16 10:00 A |  | 100% |  |  | start no earlier than 2026-09-16 08:00 | Бундин В | 1h | 1h |
| 3101 | 16.2.6 | Дефектовка бойлера, лежит в слесарке, проверка ТЭНов и анода, показывал кз по тэнам | 1h | 2026-09-14 09:00 A | 2026-09-14 10:00 A |  | 100% |  |  | start no earlier than 2026-09-14 08:00 | Макаревич А | 1h | 1h |
| 3102 | 16.3 | демонтаж шурупы с наличиников | 10min | 2026-07-10 09:00 A | 2026-07-10 09:10 A |  | 100% |  |  | start no earlier than 2026-07-10 09:00 | Тимофеев В | 0.17h | 0.17h |
| 3103 | 16.4 | взять на складе ламочку Е27 малого размера и поменять в муж. Туалете и закрыть плафоном | 1h | 2026-06-29 09:00 A | 2026-06-29 10:00 A |  | 100% |  |  | start no earlier than 2026-06-29 09:00 | Тимофеев В | 1h | 1h |
| 3104 | 16.5 | собрать аккуратно стеллаж для Буслаева (стеллаж на складе у Веры, подписан буквами ГД, мечковская) | 3h | 2026-06-13 09:00 A | 2026-06-15 12:00 A |  | 100% |  |  | start no earlier than 2026-06-13 09:00 | Бобренок В | 3h | 3h |
| 3105 | 16.6 | посмотреть что с розеткой у Ширяевой в кабинете | 1h | 2026-06-22 09:00 A | 2026-06-22 10:00 A |  | 100% |  |  | start no earlier than 2026-06-22 09:00 | Тимофеев В | 1h | 1h |
| 3106 | 16.7 | бухгалтерия настройка язычка двери, что бы дверь закрывалась без усилия | 1h | 2026-05-28 09:00 A | 2026-05-28 10:00 A |  | 100% |  |  | start no earlier than 2026-05-28 09:00 | Тимофеев В | 1h | 1h |
| 3107 | 16.8 | **полка мебельная** | 25.12d | 2026-05-18 09:00 A | 2026-06-22 10:00 A |  | 100% |  |  |  |  | 1.5h | 1.5h |
| 3108 | 16.8.1 | заявка крепеж | 15min | 2026-05-18 09:00 A | 2026-05-18 09:15 A |  | 100% |  |  | start no earlier than 2026-05-18 09:00 | Шуранов Ю | 0.25h | 0.25h |
| 3109 | 16.8.2 | контроль доставка | 15min | 2026-05-27 09:15 A | 2026-05-27 09:30 A | 3108FS+7d | 100% |  |  | start no earlier than 2026-05-15 08:00 | Шуранов Ю | 0.25h | 0.25h |
| 3110 | 16.8.3 | крепеж полки у Юли в кабинете (уголки на складе) | 1h | 2026-06-22 09:00 A | 2026-06-22 10:00 A | 3109 | 100% |  |  | start no earlier than 2026-06-22 09:00 | Тимофеев В | 1h | 1h |
| 3111 | 16.9 | монтаж диплом на стену нач хим лаб | 30min | 2026-05-15 09:00 A | 2026-05-15 09:30 A |  | 100% |  |  | start no earlier than 2026-05-15 09:00 | Тимофеев В | 0.5h | 0.5h |
| 3112 | 16.10 | монтаж розеток в серверной продолжить | 2h | 2026-04-23 09:00 A | 2026-04-23 11:00 A |  | 100% |  |  | start no earlier than 2026-04-23 09:00 | Тимофеев В; Бобренок В | 4h | 4h |
| 3113 | 16.11 | ремонт стул в столовая, спинка | 1h | 2026-04-21 09:00 A | 2026-04-21 10:00 A |  | 100% |  |  | start no earlier than 2026-04-21 09:00 | Тимофеев В | 1h | 1h |

| ID | WBS | Task | Duration | Start | Finish | Complete | Remaining | Total slack | Constraint | Resources | Work | Actual work |
| --- | --- | --- | --- | --- | --- | --- | --- | --- | --- | --- | --- | --- |
| 3114 | 16.12 | **полочка под пк** | 0.12d | 2026-06-26 09:00 A | 2026-06-26 10:00 A | 100% |  |  |  | Тимофеев В | 2h | 2h |
| 3115 | 16.12.1 | замер | 1h | 2026-06-26 09:00 A | 2026-06-26 10:00 A | 100% |  |  | start no earlier than 2026-06-26 09:00 | Тимофеев В | 1h | 1h |
| 3116 | 16.13 | прикрутить декоративную пластину на ручке в столовой | 1h | 2026-04-15 09:00 A | 2026-04-15 10:00 A | 100% |  |  | start no earlier than 2026-04-17 08:00 | Макаревич А | 1h | 1h |
| 3117 | 16.14 | монтаж розеток 4 шт. в серверной | 2h | 2026-04-15 09:00 A | 2026-04-15 11:00 A | 100% |  |  | start no earlier than 2026-04-17 08:00 | Макаревич А | 2h | 2h |
| 3118 | 16.15 | протянуть кабель UTP от кабинета Курдюмовой до переговорки | 2h | 2026-04-17 08:00 A | 2026-04-17 11:00 A | 100% |  |  | start no earlier than 2026-04-17 08:00 | Тимофеев В; Некрасов А | 4h | 4h |
| 3119 | 16.16 | убрать шнурок у Курдюмовой в кабинете | 1h | 2026-04-17 08:00 A | 2026-04-17 10:00 A | 100% |  |  | start no earlier than 2026-04-17 08:00 | Тимофеев В | 1h | 1h |
| 3120 | 16.17 | ремонт кровля над каб Курдюмовой | 20d | 2026-06-15 09:00 A | 2026-07-10 18:00 A | 100% |  |  | start no earlier than 2026-06-15 09:00 | Олег | 160h | 160h |
| 3121 | 16.18 | ремонт крепеж пано каб продаж | 1h | 2026-03-24 08:00 A | 2026-03-24 10:00 A | 100% |  |  | start no earlier than 2026-03-24 08:00 | Тимофеев В | 1h | 1h |
| 3122 | 16.19 | крепить розетку для проектора | 2h | 2025-04-09 09:00 A | 2025-04-09 11:00 A | 100% |  |  | start no earlier than 2025-04-09 09:00 | Тимофеев В | 2h | 2h |
| 3123 | 16.20 | упорядочить кабеля под тв | 2h | 2025-04-09 09:00 A | 2025-04-09 11:00 A | 100% |  |  | start no earlier than 2025-04-09 09:00 | Некрасов А | 2h | 2h |
| 3124 | 16.21 | выбивает автомат у Монича, нет селективности, замена автоматов. Ремонт освещения корридор | 4h | 2026-09-25 09:00 | 2026-09-25 13:00 |  |  | 119.09d | start no earlier than 2026-09-25 09:00 | Тимофеев В; Дедов В | 8h |  |
| 3125 | 16.22 | монтаж ключница для пожарной двери 2 и 3 этаж | 1h | 2026-03-16 09:00 A | 2026-03-16 10:00 A | 100% |  |  | start no earlier than 2026-03-16 09:00 | Тимофеев В | 1h | 1h |
| 3126 | 16.23 | замена регистр отопления нач снабжения | 2h | 2026-09-28 09:00 | 2026-09-28 11:00 |  |  | 117.34d | start no earlier than 2026-09-28 09:00 | Некрасов А | 2h |  |
| 3127 | 16.24 | сделать заглушки в комнату пищи | 30min | 2026-09-01 09:00 | 2026-09-01 09:30 |  |  | 142.53d | start no earlier than 2026-09-01 09:00 | Домоводов К | 0.5h |  |
| 3128 | 16.25 | **вентиляция в переговорке и к приема пищи** | 812d? | 2023-03-10 09:00 A | 2026-04-20 18:00 A | 100% |  |  |  |  | 17h | 17h |
| 3129 | 16.25.1 | взять на желтом складе (наша половина) вентилятор канальный и проверить работает или нет | 1h | 2023-03-10 09:00 A | 2023-03-10 10:00 A | 100% |  |  |  | Бундин В | 1h | 1h |
| 3130 | 16.25.2 | заявка на КП = 300к | 4h | 2026-03-13 09:00 A | 2026-03-13 13:00 A | 100% |  |  | start no earlier than 2026-03-13 09:00 | Домоводов К | 4h | 4h |
| 3131 | 16.25.3 | монтаж ВК200 + кабель | 6h | 2026-04-20 09:00 A | 2026-04-20 16:00 A | 100% |  |  | start no earlier than 2026-04-20 08:00 | Некрасов А; Труфанов А | 12h | 12h |
| 3132 | 16.25.4 | установка на крыше офиса, приточка в переговорку | 1d? | 2026-04-20 09:00 A | 2026-04-20 18:00 A | 100% |  |  | start no earlier than 2026-04-20 09:00 |  |  |  |
| 3133 | 16.26 | **подсветка продукции в пепреговорке вращающийся лаезерный круг с эмблемой** | 0.12d | 2026-03-13 09:00 A | 2026-03-13 10:00 A | 100% |  |  |  |  | 1h | 1h |
| 3134 | 16.26.1 | найти поставщика / узнать стоимость | 1h | 2026-03-13 09:00 A | 2026-03-13 10:00 A | 100% |  |  | start no earlier than 2026-03-13 09:00 | Зорькин В | 1h | 1h |
| 3135 | 17 | **склад упаковки** | 135.5d? | 2026-04-02 09:00 A | 2026-09-30 13:00 | 98% | 2.58d? | 115.09d |  |  | 383.75h | 373.75h |
| 3136 | 17.1 | переделать крепление рамы наруж блока - к МК задния, анкера убрать | 4h | 2026-09-30 09:00 | 2026-09-30 13:00 |  |  | 115.09d | start no earlier than 2026-09-30 09:00 | Некрасов А | 4h |  |
| 3137 | 17.2 | установить светильники над столом Веры и перенести светильник над стеллажами | 3h | 2026-08-25 09:00 | 2026-08-25 12:00 |  |  | 147.22d | start no earlier than 2026-08-25 09:00 | Тимофеев В; Некрасов А | 6h |  |
| 3138 | 17.3 | втягиваем кабель 5х4 от реф, для подключения кондиционера, место установки щитка покажу- подключаем кондиционер | 1d? | 2026-07-31 08:00 A | 2026-07-31 18:00 A | 100% |  |  | start no earlier than 2026-07-31 08:00 | Труфанов А; Бобренок В | 16h | 16h |
| 3139 | 17.4 | сделать акты списания по результатам инвентаризации | 1d? | 2026-06-22 09:00 A | 2026-06-22 18:00 A | 100% |  |  | start no earlier than 2026-06-22 09:00 | Шуранов Ю | 8h | 8h |

| ID | WBS | Task | Type | Duration | Start | Finish | Predecessors | Complete | Remaining | Total slack | Free slack | Constraint | Resources | Work | Actual work |
| --- | --- | --- | --- | --- | --- | --- | --- | --- | --- | --- | --- | --- | --- | --- | --- |
| 3140 | 17.5 | **установить бойлер** |  | 11.25d | 2026-06-01 09:00 A | 2026-06-16 11:00 A |  | 100% |  |  |  |  |  | 12h | 12h |
| 3141 | 17.5.1 | монтаж кабель + розетка с щитка 1 этажа на 2 этаж |  | 4h | 2026-06-03 09:00 A | 2026-06-03 13:00 A |  | 100% |  |  |  | start no earlier than 2026-06-03 09:00 | Некрасов А; Бундин В | 8h | 8h |
| 3142 | 17.5.2 | монтаж бойлер на стену |  | 2h | 2026-06-01 09:00 A | 2026-06-01 11:00 A | 3141 | 100% |  |  |  | start no earlier than 2026-06-01 09:00 | Тимофеев В | 2h | 2h |
| 3143 | 17.5.3 | подключение сантехника |  | 2h | 2026-06-16 09:00 A | 2026-06-16 11:00 A | 3142 | 100% |  |  |  | start no earlier than 2026-06-16 09:00 | Тимофеев В | 2h | 2h |
| 3144 | 17.6 | отремонтировать ручку на входной двери |  | 1h | 2026-05-16 09:00 A | 2026-05-18 10:00 A |  | 100% |  |  |  | start no earlier than 2026-05-16 09:00 |  |  |  |
| 3145 | 17.7 | **анкерить стеллажи** |  | 26d | 2026-05-15 09:00 A | 2026-06-21 13:00 A |  | 100% |  |  |  |  |  | 4.75h | 4.75h |
| 3146 | 17.7.1 | заявка анкеры |  | 30min | 2026-05-15 09:00 A | 2026-05-15 09:30 A |  | 100% |  |  |  | start no earlier than 2026-05-15 09:00 | Шуранов Ю | 0.5h | 0.5h |
| 3147 | 17.7.2 | контроль доставка |  | 15min | 2026-05-27 09:30 A | 2026-05-27 09:45 A | 3146FS+10d | 100% |  |  |  | start no earlier than 2026-05-14 08:00 | Шуранов Ю | 0.25h | 0.25h |
| 3148 | 17.7.3 | монтаж / указать доделать оставшиеся анкера | manual | 4h | 2026-06-21 09:00 A | 2026-06-21 13:00 A | 3147 | 100% |  |  |  | start no earlier than 2026-06-21 09:00 | Бундин В | 4h | 4h |
| 3149 | 17.8 | заменить тросик на воротах |  | 2h | 2026-04-29 09:00 A | 2026-04-29 11:00 A |  | 100% |  |  |  | start no earlier than 2026-04-29 09:00 | Тимофеев В; Бундин В | 4h | 4h |
| 3150 | 17.9 | **замена двери** |  | 40.12d? | 2026-04-02 09:00 A | 2026-05-28 10:00 A |  | 100% |  |  |  |  |  | 329h | 329h |
| 3151 | 17.9.1 | заказ замерщика / получить счет |  | 1h | 2026-04-02 09:00 A | 2026-04-02 10:00 A |  | 100% |  |  |  | start no earlier than 2026-04-02 08:00 | Домоводов К | 1h | 1h |
| 3152 | 17.9.2 | изготовление |  | 40d | 2026-04-02 10:00 A | 2026-05-28 10:00 A | 3151 | 100% |  |  |  | start no earlier than 2026-04-02 08:00 | Подрядчик | 320h | 320h |
| 3153 | 17.9.3 | замена |  | 1d? | 2026-05-19 10:00 A | 2026-05-20 10:00 A | 3152 | 100% |  |  |  | start no earlier than 2026-04-02 08:00 | Подрядчик | 8h | 8h |
| 3154 | 18 | **РЭФ контейнеры** |  | 210.59d? | 2026-05-28 09:00 A | 2027-03-10 14:45 |  | 15% | 179.86d? | 0d |  |  |  | 66.25h | 13.5h |
| 3155 | 18.1 | уложить палеты в проходе к площадке / вырубить кусты с дворником |  | 1h | 2026-05-28 09:00 A | 2026-05-28 10:00 A |  | 100% |  |  |  | start no earlier than 2026-05-28 09:00 | Некрасов А; Бобренок В | 1h | 1h |
| 3156 | 18.2 | монтаж площадка обслуживания внешнего блока. 4 стойки труба 100 + лист 5 |  | 7h | 2026-05-28 09:00 A | 2026-05-28 17:00 A |  | 100% |  |  |  | start no earlier than 2026-05-28 09:00 | Некрасов А; Бобренок В | 12h | 12h |
| 3157 | 18.3 | **ремонт сплит система холодильная камера №1** |  | 27.12d | 2026-08-12 09:00 A | 2026-09-15 10:00 |  | 40% | 16.27d | 129.47d |  |  |  | 1.25h | 0.5h |
| 3158 | 18.3.1 | отправить фото участка |  | 15min | 2026-08-12 09:00 A | 2026-08-12 09:15 A |  | 100% |  |  |  | start no earlier than 2026-08-12 09:00 | Домоводов К | 0.25h | 0.25h |
| 3159 | 18.3.2 | получить счет на ремонт |  | 15min | 2026-09-08 09:00 A | 2026-09-08 09:15 A |  | 100% |  |  |  | start no earlier than 2026-09-08 09:00 | Домоводов К | 0.25h | 0.25h |
| 3160 | 18.3.3 | оплата |  | 15min | 2026-09-09 09:15 | 2026-09-09 09:30 | 3159FS+1d |  |  | 129.47d | 0d | start no earlier than 2026-09-09 09:00 | Домоводов К | 0.25h |  |
| 3161 | 18.3.4 | контроль даты ремонта |  | 15min | 2026-09-14 09:30 | 2026-09-14 09:45 | 3160FS+5d |  |  | 129.47d | 0d | start no earlier than 2026-08-10 08:00 | Зорькин В | 0.25h |  |
| 3162 | 18.3.5 | приемка работ |  | 15min | 2026-09-15 09:45 | 2026-09-15 10:00 | 3161FS+1d |  |  | 129.47d |  | start no earlier than 2026-08-10 08:00 | Зорькин В | 0.25h |  |
| 3163 | 18.4 | **монтаж холодильной машины №2** |  | 6.59d? | 2027-03-02 09:00 | 2027-03-10 14:45 |  |  |  | 0d |  |  |  | 45h |  |
| 3164 | 18.4.1 | решение какую ставить машину - на весну |  | 30min | 2027-03-02 09:00 | 2027-03-02 09:30 |  |  |  | 0d |  | start no earlier than 2027-03-02 09:00 | Домоводов К | 0.5h |  |
| 3165 | 18.4.2 | заключение договор |  | 3d | 2027-03-02 09:30 | 2027-03-05 09:30 | 3164 |  |  | 0d |  | start no earlier than 2026-08-12 09:00 | Домоводов К | 24h |  |
| 3166 | 18.4.3 | оплата |  | 15min | 2027-03-08 09:30 | 2027-03-08 09:45 | 3165FS+1d |  |  | 0d |  | start no earlier than 2026-08-18 09:00 | Домоводов К | 0.25h |  |
| 3167 | 18.4.4 | контроль доставки , начала работ |  | 1d? | 2027-03-08 09:45 | 2027-03-09 09:45 | 3166 |  |  | 0d |  | start no earlier than 2026-08-10 08:00 | Зорькин В | 8h |  |

| ID | WBS | Task | Type | Duration | Start | Finish | Predecessors | Complete | Remaining | Total slack | Free slack | Constraint | Resources | Work | Actual work |
| --- | --- | --- | --- | --- | --- | --- | --- | --- | --- | --- | --- | --- | --- | --- | --- |
| 3168 | 18.4.5 | **монтаж кабель силовой** |  | 0.5d | 2027-03-09 09:45 | 2027-03-09 14:45 | 3167 |  |  | 0d |  |  |  | 4.25h |  |
| 3169 | 18.4.5.1 | проверка поставки |  | 15min | 2027-03-09 09:45 | 2027-03-09 10:00 |  |  |  | 0.47d |  | start no earlier than 2026-08-10 08:00 | Зорькин В | 0.25h |  |
| 3170 | 18.4.5.2 | монтаж |  | 4h | 2027-03-09 09:45 | 2027-03-09 14:45 |  |  |  | 0d |  | start no earlier than 2026-08-10 08:00 | Некрасов А | 4h |  |
| 3171 | 18.4.6 | монтаж |  | 1d? | 2027-03-09 14:45 | 2027-03-10 14:45 | 3168 |  |  | 0d |  | start no earlier than 2026-08-10 08:00 | Подрядчик | 8h |  |
| 3172 | 18.5 | **утепление контейнера №2 под рефрежератор** |  | 0.5d | 2026-08-21 09:00 | 2026-08-21 13:00 |  |  |  | 0d |  |  |  | 7h |  |
| 3173 | 18.5.1 | продолжить выравнивание пены по периметру ножовкой для будующей установки профлиста (задание, если нечем заняться) | manual | 2h | 2026-08-21 09:00 | 2026-08-21 11:00 |  |  |  |  |  | start no earlier than 2026-08-21 09:00 | Некрасов А; Дедов В | 4h |  |
| 3174 | 18.5.2 | установка профлиста |  | 2h | 2026-08-21 11:00 | 2026-08-21 13:00 | 3173 |  |  | 149.09d |  | start no earlier than 2026-08-11 09:00 | Некрасов А; Дедов В | 3h |  |
| 3175 | 19 | **обучение** |  | 608.5d? | 2024-05-14 09:00 A | 2026-09-10 13:00 |  | 42% | 350.5d? | 134.09d |  |  |  | 130h | 58h |
| 3176 | 19.1 | **инструкция управлления дозаций жира** |  | 1.5d | 2026-09-09 09:00 | 2026-09-10 13:00 |  |  |  | 134.09d |  |  |  | 12h |  |
| 3177 | 19.1.1 | подготовка гидравлической и функциональной схем системы |  | 4h | 2026-09-09 09:00 | 2026-09-09 13:00 |  |  |  | 134.09d | 0d | start no earlier than 2026-09-09 09:00 | Зорькин В | 4h |  |
| 3178 | 19.1.2 | описание принципов регулирования |  | 4h | 2026-09-09 14:00 | 2026-09-09 18:00 | 3177 |  |  | 134.09d | 0d | start no earlier than 2026-08-31 09:00 | Зорькин В | 4h |  |
| 3179 | 19.1.3 | пошаговый алогритм действий по операциям замена фильтров, остановка пуск, настройка режимов |  | 4h | 2026-09-10 09:00 | 2026-09-10 13:00 | 3178 |  |  | 134.09d |  | start no earlier than 2026-08-31 09:00 | Зорькин В | 4h |  |
| 3180 | 19.2 | настройка и ремонты упаковщиков |  | 1h | 2026-02-27 09:00 A | 2026-02-27 10:00 A |  | 100% |  |  |  | start no earlier than 2026-02-27 08:00 | Труфанов А; Бундин В | 2h | 2h |
| 3181 | 19.3 | подготовить памятку по чистке ножа для бестром |  | 4h | 2026-09-04 09:00 A | 2026-09-04 13:00 A |  | 100% |  |  |  | start no earlier than 2026-09-04 09:00 | Зорькин В | 4h | 4h |
| 3182 | 19.4 | бестром |  | 2h | 2025-09-02 09:00 A | 2025-09-02 11:00 A |  | 100% |  |  |  | start no earlier than 2025-09-02 09:00 | Труфанов А; Зорькин В | 4h | 4h |
| 3183 | 19.5 | квадропак |  | 2h | 2025-09-02 11:00 A | 2025-09-02 13:00 A | 3182 | 100% |  |  |  | start no earlier than 2025-09-02 09:00 | Труфанов А; Зорькин В | 4h | 4h |
| 3184 | 19.6 | инструкция парогенератор управление по датчику давления |  | 4h | 2025-01-16 09:00 A | 2025-01-16 13:00 A |  | 100% |  |  |  | start no earlier than 2025-01-16 09:00 | Зорькин В | 4h | 4h |
| 3185 | 19.7 | инструкция по работе на теко 1.5 новый |  | 2d | 2025-01-17 09:00 A | 2025-01-20 18:00 A | 3184 | 100% |  |  |  | start no earlier than 2025-01-17 09:00 | Зорькин В | 16h | 16h |
| 3186 | 19.8 | инструкция ремонт запайщика |  | 1d? | 2025-01-17 09:00 A | 2025-01-17 18:00 A |  | 100% |  |  |  | start no earlier than 2025-01-17 09:00 | Зорькин В | 8h | 8h |
| 3187 | 19.9 | Составить список ЗИП - ежедневно вносить приход / расход |  | 1h | 2024-05-14 09:00 | 2024-05-14 10:00 |  |  |  | 742.47d |  | start no earlier than 2024-05-14 09:00 | Шуранов Ю | 1h |  |
| 3188 | 19.10 | составить инструкцию по затягиванию фильеры и соосности муфты |  | 4h | 2024-05-14 09:00 | 2024-05-14 13:00 |  |  |  | 742.09d |  | start no earlier than 2024-05-14 09:00 | Шуранов Ю | 4h |  |
| 3189 | 19.11 | составитьт инструкцию настройка бестром - формирование шва |  | 4h | 2024-05-14 09:00 | 2024-05-14 13:00 |  |  |  | 742.09d |  | start no earlier than 2024-05-14 09:00 | Шуранов Ю | 4h |  |
| 3190 | 19.12 | составитьт инструкцию настройка бестром - заправка ленты зип лок |  | 4h | 2024-05-14 09:00 | 2024-05-14 13:00 |  |  |  | 742.09d |  | start no earlier than 2024-05-14 09:00 | Шуранов Ю | 4h |  |
| 3191 | 19.13 | **формирование шаблона настройки оборудования** |  | 4d | 2024-09-06 09:00 A | 2024-09-11 18:00 |  | 67% | 1.33d | 655.59d |  |  |  | 21h | 14h |
| 3192 | 19.13.1 | **БЕСТРОМ** |  | 2.25d | 2024-09-06 09:00 A | 2024-09-10 11:00 A |  | 100% |  |  |  |  |  | 7h | 7h |
| 3193 | 19.13.1.1 | определить базовые точки относительно которых будет проводится замер в 3х плоскостях - флажки верх, флажки низ, смыкание ножа, центр трубы |  | 1h | 2024-09-06 09:00 A | 2024-09-06 10:00 A |  | 100% |  |  |  | start no earlier than 2024-09-06 08:00 | Зорькин В | 1h | 1h |
| 3194 | 19.13.1.2 | обвести в PAINT фото методику измерений, присвоить \имя каждому размеру |  | 2h | 2024-09-06 10:00 A | 2024-09-06 12:00 A | 3193 | 100% |  |  |  | start no earlier than 2024-09-06 09:00 | Зорькин В | 2h | 2h |
| 3195 | 19.13.1.3 | создать карту / таблицу настройки. Размер-дата-фио |  | 2h | 2024-09-09 09:00 A | 2024-09-09 11:00 A | 3194 | 100% |  |  |  | start no earlier than 2024-09-09 09:00 | Зорькин В | 2h | 2h |
| 3196 | 19.13.1.4 | оформить ведение карты в журнал |  | 2h | 2024-09-10 09:00 A | 2024-09-10 11:00 A | 3195 | 100% |  |  |  | start no earlier than 2024-09-10 09:00 | Зорькин В | 2h | 2h |

| ID | WBS | Task | Duration | Start | Finish | Predecessors | Complete | Remaining | Total slack | Free slack | Constraint | Resources | Work | Actual work |
| --- | --- | --- | --- | --- | --- | --- | --- | --- | --- | --- | --- | --- | --- | --- |
| 3197 | 19.13.2 | **ТЕКО 1.5** | 0.88d | 2024-09-10 11:00 A | 2024-09-11 10:00 A | 3192 | 100% |  |  |  |  |  | 7h | 7h |
| 3198 | 19.13.2.1 | определить базовые точки относительно которых будет проводится замер в 3х плоскостях - флажки верх, флажки низ, смыкание ножа, центр трубы | 1h | 2024-09-10 11:00 A | 2024-09-10 12:00 A |  | 100% |  |  |  | start no earlier than 2024-09-10 09:00 | Зорькин В | 1h | 1h |
| 3199 | 19.13.2.2 | обвести в PAINT фото методику измерений, присвоить \имя каждому размеру | 2h | 2024-09-10 12:00 A | 2024-09-10 15:00 A | 3198 | 100% |  |  |  | start no earlier than 2024-09-06 08:00 | Зорькин В | 2h | 2h |
| 3200 | 19.13.2.3 | создать карту / таблицу настройки. Размер-дата-фио | 2h | 2024-09-10 15:00 A | 2024-09-10 17:00 A | 3199 | 100% |  |  |  | start no earlier than 2024-09-06 08:00 | Зорькин В | 2h | 2h |
| 3201 | 19.13.2.4 | оформить ведение карты в журнал | 2h | 2024-09-10 17:00 A | 2024-09-11 10:00 A | 3200 | 100% |  |  |  | start no earlier than 2024-09-06 08:00 | Зорькин В | 2h | 2h |
| 3202 | 19.13.3 | **ТЕКО 0,4** | 0.88d | 2024-09-11 10:00 | 2024-09-11 18:00 | 3197 |  |  | 655.59d |  |  |  | 7h |  |
| 3203 | 19.13.3.1 | определить базовые точки относительно которых будет проводится замер в 3х плоскостях - флажки верх, флажки низ, смыкание ножа, центр трубы | 1h | 2024-09-11 10:00 | 2024-09-11 11:00 |  |  |  | 655.59d | 0d | start no earlier than 2024-09-06 08:00 | Зорькин В | 1h |  |
| 3204 | 19.13.3.2 | обвести в PAINT фото методику измерений, присвоить \имя каждому размеру | 2h | 2024-09-11 11:00 | 2024-09-11 13:00 | 3203 |  |  | 655.59d | 0d | start no earlier than 2024-09-06 08:00 | Зорькин В | 2h |  |
| 3205 | 19.13.3.3 | создать карту / таблицу настройки. Размер-дата-фио | 2h | 2024-09-11 14:00 | 2024-09-11 16:00 | 3204 |  |  | 655.59d | 0d | start no earlier than 2024-09-06 08:00 | Зорькин В | 2h |  |
| 3206 | 19.13.3.4 | оформить ведение карты в журнал | 2h | 2024-09-11 16:00 | 2024-09-11 18:00 | 3205 |  |  | 655.59d |  | start no earlier than 2024-09-06 08:00 | Зорькин В | 2h |  |
| 3207 | 19.14 | **наполнение базы данных по занятиям, запись видео уроки** | 5.12d | 2024-09-09 09:00 A | 2024-09-16 10:00 |  | 5% | 4.88d | 653.47d |  |  |  | 42h | 2h |
| 3208 | 19.14.1 | заяавка фотокамера, штатив | 1h | 2024-09-09 09:00 A | 2024-09-09 10:00 A |  | 100% |  |  |  | start no earlier than 2024-09-09 09:00 | Зорькин В | 1h | 1h |
| 3209 | 19.14.2 | доставка | 5d | 2024-09-09 10:00 | 2024-09-16 10:00 | 3208 |  |  | 653.47d |  | start no earlier than 2024-09-06 08:00 | Мультан | 40h |  |
| 3210 | 19.14.3 | **Бестром** | 0.12d | 2024-09-16 09:00 A | 2024-09-16 10:00 A |  | 100% |  |  |  |  |  | 1h | 1h |
| 3211 | 19.14.3.1 | урок 1 | 1h | 2024-09-16 09:00 A | 2024-09-16 10:00 A | 3209 | 100% |  |  |  | start no earlier than 2024-09-16 09:00 | Зорькин В | 1h | 1h |
| 3212 | 20 | **администрантивные** | 131.25d | 2026-03-19 09:00 A | 2026-09-15 11:00 |  | 89% | 14.45d | 129.34d |  |  |  | 99.92h | 88.92h |
| 3213 | 20.1 | спсиание материалов | 6h | 2026-09-01 09:00 | 2026-09-01 16:00 |  |  |  | 141.84d |  | start no earlier than 2026-09-01 09:00 | Шуранов Ю | 6h |  |
| 3214 | 20.2 | составить список остатков шнеков в таблицу зип | 2h | 2026-09-01 09:00 | 2026-09-01 11:00 |  |  |  | 142.34d |  | start no earlier than 2026-09-01 09:00 | Шуранов Ю | 2h |  |
| 3215 | 20.3 | подготовить спсток перчаток | 3h | 2026-03-19 09:00 A | 2026-03-19 12:00 A |  | 100% |  |  |  | start no earlier than 2026-03-19 08:00 | Зорькин В | 3h | 3h |
| 3216 | 20.4 | подготовка данных дебеторская задолжность | 3h | 2026-03-19 09:00 A | 2026-03-19 12:00 A |  | 100% |  |  |  | start no earlier than 2026-03-19 08:00 | Зорькин В | 3h | 3h |
| 3217 | 20.5 | договор по ремонту стиральных машинок. Переговоры | 1h | 2026-09-01 09:00 | 2026-09-01 10:00 |  |  |  | 142.47d |  | start no earlier than 2026-09-01 09:00 | Шуранов Ю | 1h |  |
| 3218 | 20.6 | Составить список на год ППР (планово-предупредительные работы) на оборудовании Цеха №1, Цеха №2, Цеха навесок. | 2h | 2026-09-01 09:00 | 2026-09-01 11:00 |  |  |  | 142.34d |  | start no earlier than 2026-09-01 09:00 | Шуранов Ю | 2h |  |
| 3219 | 20.7 | **Ключи на шкафы** | 111.25d | 2026-04-16 09:00 A | 2026-09-15 11:00 A |  | 100% |  |  |  |  |  | 82.75h | 82.75h |
| 3220 | 20.7.1 | Заказать | 30min | 2026-04-16 09:00 A | 2026-04-16 09:30 A |  | 100% |  |  |  | start no earlier than 2026-04-16 09:00 | Зорькин В | 0.5h | 0.5h |
| 3221 | 20.7.2 | доставить | 10d | 2026-04-16 09:30 A | 2026-04-30 09:30 A | 3220 | 100% |  |  |  | start no earlier than 2026-04-14 09:00 | Карабанов | 80h | 80h |
| 3222 | 20.7.3 | контроль доставка | 15min | 2026-05-15 09:00 A | 2026-05-15 09:15 A |  | 100% |  |  |  | start no earlier than 2026-05-15 09:00 | Зорькин В | 0.25h | 0.25h |
| 3223 | 20.7.4 | Повешать на веревочку ключи на все шкафы ВРУ и электрощитки (ключи на складе, веревочки взять на производстве, нитки) | 2h | 2026-09-15 09:00 A | 2026-09-15 11:00 A | 3221 | 100% |  |  |  | start no earlier than 2026-09-15 09:00 | Бобренок В | 2h | 2h |
| 3224 | 20.8 | Расписаться в нашем кабинете | 10min | 2026-07-28 09:00 A | 2026-07-28 09:10 A |  | 100% |  |  |  | start no earlier than 2026-07-28 09:00 | Макаревич А | 0.17h | 0.17h |

| ID | WBS | Task | Type | Duration | Start | Finish | Predecessors | Complete | Remaining | Total slack | Free slack | Constraint | Resources | Work | Actual work |
| --- | --- | --- | --- | --- | --- | --- | --- | --- | --- | --- | --- | --- | --- | --- | --- |
| 3225 | 21 | **ТБ** |  | 926.25d? | 2023-06-06 09:00 A | 2026-12-15 11:00 |  | 39% | 565.09d? | 61.34d |  |  |  | 249.92h | 96.67h |
| 3226 | 21.1 | инструктаж по ТБ оформить |  | 1h | 2026-08-31 09:00 | 2026-08-31 10:00 |  |  |  | 143.47d |  | start no earlier than 2026-08-31 09:00 | Шуранов Ю | 1h |  |
| 3227 | 21.2 | выполнить перелкаду похарных шлангов офис, 1ц |  | 2h | 2026-12-15 09:00 | 2026-12-15 11:00 |  |  |  | 61.34d |  | start no earlier than 2026-12-15 09:00 | Некрасов А; Труфанов А | 4h |  |
| 3228 | 21.3 | маркировка лестниц / оформление журналов |  | 2h | 2026-08-31 09:00 | 2026-08-31 11:00 |  |  |  | 143.34d |  | start no earlier than 2026-08-31 09:00 | Шуранов Ю | 2h |  |
| 3229 | 21.4 | внеплановый инструктаж персонала при аварии на проризводстве |  | 2h | 2025-03-26 09:00 A | 2025-03-26 11:00 A |  | 100% |  |  |  | start no earlier than 2025-03-26 08:00 | Шуранов Ю | 2h | 2h |
| 3230 | 21.5 | заявка на табличики НЕ ВКЛЮЧАТЬ |  | 10min | 2025-03-26 09:00 A | 2025-03-26 09:10 A |  | 100% |  |  |  | start no earlier than 2025-03-26 08:00 | Шуранов Ю | 0.17h | 0.17h |
| 3231 | 21.6 | офорить наряд допуск на монтаж кабеля КПП |  | 30min | 2024-08-05 09:00 A | 2024-08-05 09:30 A |  | 100% |  |  |  | start no earlier than 2024-08-05 09:00 | Шуранов Ю | 0.5h | 0.5h |
| 3232 | 21.7 | составить схемы кабельных линий по производству |  | 5d | 2026-09-01 09:00 | 2026-09-05 18:00 |  |  |  | 137.59d |  | start no earlier than 2026-09-01 09:00 | Шуранов Ю | 40h |  |
| 3233 | 21.8 | организация аттестации электроперсонала |  | 10d | 2024-05-14 09:00 A | 2024-05-27 18:00 A |  | 100% |  |  |  | start no earlier than 2024-05-14 09:00 | Шуранов Ю | 80h | 80h |
| 3234 | 21.9 | расклеить таблички на стремянки |  | 1h | 2023-10-18 09:00 A | 2023-10-18 10:00 A |  | 100% |  |  |  | start no earlier than 2023-10-18 09:00 | Тимофеев В | 1h | 1h |
| 3235 | 21.10 | вести журнал учета такелажных средств, механизмов и приспособлений |  | 1h | 2026-09-01 09:00 | 2026-09-01 10:00 |  |  |  | 142.47d |  | start no earlier than 2026-09-01 09:00 | Шуранов Ю | 1h |  |
| 3236 | 21.11 | комплект сиз для высотных работ |  | 1h | 2023-06-09 09:00 A | 2023-06-09 10:00 A |  | 100% |  |  |  | start no earlier than 2023-06-09 09:00 | Лобанов И | 1h | 1h |
| 3237 | 21.12 | тестер индикторная отвертка |  | 1h | 2024-05-14 09:00 A | 2024-05-14 10:00 A |  | 100% |  |  |  | start no earlier than 2024-05-14 09:00 | Шуранов Ю | 1h | 1h |
| 3238 | 21.13 | заявка на диэл коврик, галоши, перчатки, маска, таблички |  | 1h | 2026-09-01 09:00 | 2026-09-01 10:00 |  |  |  | 142.47d |  | start no earlier than 2026-09-01 09:00 | Шуранов Ю | 1h |  |
| 3239 | 21.14 | заявка спецодежда наладчикам |  | 1d? | 2024-05-14 09:00 A | 2024-05-14 18:00 A |  | 100% |  |  |  | start no earlier than 2024-05-14 09:00 | Шуранов Ю | 8h | 8h |
| 3240 | 21.15 | аттестация охрана труда |  | 10d | 2024-05-14 09:00 | 2024-05-27 18:00 |  |  |  | 732.59d |  | start no earlier than 2024-05-14 09:00 | Шуранов Ю | 80h |  |
| 3241 | 21.16 | **испытание стеллажей** |  | 847d? | 2023-06-06 09:00 A | 2026-09-02 18:00 |  | 11% | 753.75d? | 140.59d |  |  |  | 27.25h | 3h |
| 3242 | 21.16.1 | оплата испытания стеллажей контроль | milestone | 0d | 2023-06-06 09:00 A | 2023-06-06 09:00 A |  | 100% |  |  |  | start no earlier than 2023-06-06 09:00 | Домоводов К |  |  |
| 3243 | 21.16.2 | орг испытание стеллажей |  | 1h | 2023-07-11 09:00 A | 2023-07-11 10:00 A |  | 100% |  |  |  | start no earlier than 2023-07-11 09:00 | Домоводов К | 1h | 1h |
| 3244 | 21.16.3 | график осмотров стеллажей |  | 1d? | 2026-08-31 09:00 | 2026-08-31 18:00 | 3242 |  |  | 140.59d | 0d | start no earlier than 2026-08-31 09:00 | Домоводов К | 8h |  |
| 3245 | 21.16.4 | табличка КП |  | 1d? | 2026-09-01 09:00 | 2026-09-01 18:00 | 3244 |  |  | 140.59d | 0d | start no earlier than 2023-04-27 08:00 | Домоводов К | 8h |  |
| 3246 | 21.16.5 | журнал технического освидетельствования стеллажей |  | 1d? | 2026-09-02 09:00 | 2026-09-02 18:00 | 3245 |  |  | 140.59d |  | start no earlier than 2023-04-27 08:00 | Домоводов К | 8h |  |
| 3247 | 21.16.6 | запрос стоимости ремонта стеллажей в 5ц |  | 2h | 2026-08-18 09:00 A | 2026-08-18 11:00 A |  | 100% |  |  |  | start no earlier than 2026-08-18 09:00 | Шуранов Ю | 2h | 2h |
| 3248 | 21.16.7 | контрольизг |  | 15min | 2026-08-27 09:00 | 2026-08-27 09:15 |  |  |  | 145.56d |  | start no earlier than 2026-08-27 09:00 | Шуранов Ю | 0.25h |  |

| ID | WBS | Task | Type | Duration | Start | Finish | Predecessors | Complete | Remaining | Total slack | Free slack | Constraint | Resources | Work | Actual work |
| --- | --- | --- | --- | --- | --- | --- | --- | --- | --- | --- | --- | --- | --- | --- | --- |
| 3249 | 22 | **офис** |  | 325.03d | 2025-06-11 09:00 A | 2026-09-08 09:15 |  | 80% | 65.01d | 136.56d |  |  |  | 2.25h | 2h |
| 3250 | 22.1 | дует подконник офис - передать Олегу задачу |  | 15min | 2026-09-08 09:00 | 2026-09-08 09:15 |  |  |  | 136.56d |  | start no earlier than 2026-09-08 08:00 | Зорькин В | 0.25h |  |
| 3251 | 22.2 | ремонт светильник моргает , бухгалтерия |  | 1h | 2025-06-11 09:00 A | 2025-06-11 10:00 A |  | 100% |  |  |  | start no earlier than 2025-06-11 09:00 | Тимофеев В; Дедов В | 2h | 2h |
| 3252 | 23 | **территория** |  | 421.06d? | 2025-02-20 09:00 A | 2026-09-25 09:30 |  | 72% | 118.06d? | 119.53d |  |  |  | 353.25h | 253.75h |
| 3253 | 23.1 | Обход по воде протянутой до 5 цеха, проверка протечек во всех узлах по возможности устранить, если нет возможности, перекрыть в 3-ем цехе |  | 30min | 2026-09-21 09:00 A | 2026-09-21 09:30 A |  | 100% |  |  |  | start no earlier than 2026-09-21 08:00 | Макаревич А | 0.5h | 0.5h |
| 3254 | 23.2 | отсыпать спуск для парковки между цех 2 и 3 |  | 1d? | 2026-08-26 09:00 A | 2026-08-26 18:00 A |  | 100% |  |  |  | start no earlier than 2026-08-26 08:00 | Дворник | 8h | 8h |
| 3255 | 23.3 | отсыпать тропинку до КТПН |  | 1d? | 2026-08-27 09:00 | 2026-08-27 18:00 |  |  |  | 144.59d |  | start no earlier than 2026-08-27 09:00 | Дворник | 8h |  |
| 3256 | 23.4 | **орг водосток КПП - 5ц** |  | 0.03d | 2026-08-31 09:00 | 2026-08-31 09:15 |  |  |  | 143.56d |  |  |  | 0.25h |  |
| 3257 | 23.4.1 | получить КП от Вугара |  | 15min | 2026-08-31 09:00 | 2026-08-31 09:15 |  |  |  | 143.56d |  | start no earlier than 2026-08-31 09:00 | Домоводов К | 0.25h |  |
| 3258 | 23.5 | **орг водосток между 4 и5А** |  | 0.03d | 2026-08-31 09:00 | 2026-08-31 09:15 |  |  |  | 143.56d |  |  |  | 0.25h |  |
| 3259 | 23.5.1 | получить КП от Вугара |  | 15min | 2026-08-31 09:00 | 2026-08-31 09:15 |  |  |  | 143.56d |  | start no earlier than 2026-08-31 09:00 | Домоводов К | 0.25h |  |
| 3260 | 23.6 | **Белявский выравнивание стены** |  | 14.16d | 2026-08-13 09:00 A | 2026-09-02 10:15 |  | 13% | 12.33d | 141.44d |  |  |  | 2.58h | 0.33h |
| 3261 | 23.6.1 | оформить план работ, эскиз предложенный ГИП Глуходед |  | 1h | 2026-09-01 09:00 | 2026-09-01 10:00 |  |  |  | 141.44d | 0d | start no earlier than 2026-09-01 09:00 | Домоводов К | 1h |  |
| 3262 | 23.6.2 | поиск подрядчика на перекладку панели |  | 1h | 2026-09-01 09:00 | 2026-09-01 10:00 |  |  |  | 142.47d |  | start no earlier than 2026-09-01 09:00 | Домоводов К | 1h |  |
| 3263 | 23.6.3 | звонок по решению от варианта ремонта Белявского |  | 20min | 2026-08-13 09:00 A | 2026-08-13 09:20 A |  | 100% |  |  |  | start no earlier than 2026-08-13 09:00 | Домоводов К | 0.33h | 0.33h |
| 3264 | 23.6.4 | ожидание КП от бригады Белявского | milestone | 0d | 2026-08-20 09:00 A | 2026-08-20 09:00 A | 3263FS+1d | 100% |  |  |  | start no earlier than 2026-08-20 09:00 | Домоводов К |  |  |
| 3265 | 23.6.5 | согл работы с ГД | milestone | 0d | 2026-09-01 10:00 | 2026-09-01 10:00 | 3261, 3264FS+1d |  |  | 141.44d | 0d | start no earlier than 2026-08-31 09:00 | Домоводов К |  |  |
| 3266 | 23.6.6 | заказ кран |  | 15min | 2026-09-02 10:00 | 2026-09-02 10:15 | 3265FS+1d |  |  | 141.44d |  | start no earlier than 2026-08-13 09:00 | Зорькин В | 0.25h |  |
| 3267 | 23.7 | замена тусклых или не рабочих ламп на мухоловках 1,2,5 цех.Схемы расположения предоставлю (количество ламп, которые поменял указать в отчете) |  | 4h | 2026-08-06 09:00 A | 2026-08-06 13:00 A |  | 100% |  |  |  | start no earlier than 2026-08-06 08:00 | Труфанов А | 4h | 4h |
| 3268 | 23.8 | **КПП ревизия прожектор, не горит** |  | 1.12d | 2026-07-08 09:00 A | 2026-07-09 10:00 A |  | 100% |  |  |  |  |  | 1.33h | 1.33h |
| 3269 | 23.8.1 | Сфотать шильдик от прожектора кпп |  | 20min | 2026-07-08 09:00 A | 2026-07-08 09:20 A |  | 100% |  |  |  | start no earlier than 2026-07-08 08:00 | Бундин В | 0.33h | 0.33h |
| 3270 | 23.8.2 | монтаж прожетора |  | 1h | 2026-07-09 09:00 A | 2026-07-09 10:00 A |  | 100% |  |  |  | start no earlier than 2026-07-09 09:00 | Бобренок В | 1h | 1h |
| 3271 | 23.9 | установить люки колодцев возле на территории | manual | 30min | 2026-09-25 09:00 | 2026-09-25 09:30 |  |  |  |  |  | start no earlier than 2026-09-25 09:00 | Олег | 0.5h |  |
| 3272 | 23.10 | **установить пост для зарядки эл мобиль директору** |  | 1d? | 2026-06-03 09:00 | 2026-06-03 18:00 |  |  |  | 205.59d |  |  |  |  |  |
| 3273 | 23.10.1 | заявка на щиток / кабель |  | 1d? | 2026-06-03 09:00 | 2026-06-03 18:00 |  |  |  | 205.59d |  | start no earlier than 2026-06-03 08:00 |  |  |  |
| 3274 | 23.11 | уборка строительный мусор задний двор 5А склад |  | 2h | 2026-05-27 09:00 | 2026-05-27 11:00 |  |  |  | 211.34d |  | start no earlier than 2026-05-27 09:00 | оператор2 | 2h |  |
| 3275 | 23.12 | поправить бетонную крышку колодца. Дренаж вдоль забора колодец №2 |  | 2h | 2026-05-27 09:00 | 2026-05-27 11:00 |  |  |  | 211.34d |  | start no earlier than 2026-05-27 09:00 | оператор2 | 2h |  |
| 3276 | 23.13 | расчистить камни, для доступа к люку. Дренаж вдоль забора колодец №2 |  | 2h | 2026-05-27 09:00 | 2026-05-27 11:00 |  |  |  | 211.34d |  | start no earlier than 2026-05-27 09:00 | оператор2 | 2h |  |
| 3277 | 23.14 | проверка всех стемянок по цехам, приклеить бумажки о проверке |  | 1d? | 2026-06-26 09:00 A | 2026-06-26 18:00 A |  | 100% |  |  |  | start no earlier than 2026-06-26 09:00 | Шуранов Ю | 8h | 8h |
| 3278 | 23.15 | в 1,2,3 цехе ближе к утру выключить все оборудование, кроме камер охраны КПП- подготовка к фогации |  | 2h | 2026-04-30 08:00 A | 2026-04-30 11:00 A |  | 100% |  |  |  | start no earlier than 2026-04-30 08:00 | Дедов В | 2h | 2h |
| 3279 | 23.16 | заизолировать гофру в местах разрыва (гофра с кабелем для рефрежераторов возле нашего склада) | manual | 1h | 2026-04-26 09:00 A | 2026-04-26 10:00 A |  | 100% |  |  |  | start no earlier than 2026-04-26 09:00 | Макаревич А | 1h | 1h |
| 3280 | 23.17 | ремонт стен сосед Белявский |  | 5d | 2026-04-16 09:00 | 2026-04-22 18:00 |  |  |  | 235.59d |  | start no earlier than 2026-04-16 08:00 | Олег; Некрасов А | 80h |  |

| ID | WBS | Task | Type | Duration | Start | Finish | Predecessors | Complete | Remaining | Total slack | Free slack | Constraint | Resources | Work | Actual work |
| --- | --- | --- | --- | --- | --- | --- | --- | --- | --- | --- | --- | --- | --- | --- | --- |
| 3281 | 23.18 | **выезд ул.Писемского** |  | 15.03d | 2026-08-11 09:00 A | 2026-09-01 09:15 |  | 89% | 1.67d | 142.56d |  |  |  | 2.25h | 2h |
| 3282 | 23.18.1 | **топосъемка** |  | 15.03d | 2026-08-11 09:00 A | 2026-09-01 09:15 |  | 67% | 5.01d | 142.56d |  |  |  | 0.75h | 0.5h |
| 3283 | 23.18.1.1 | получить старт от ГД | milestone | 0d | 2026-08-31 09:00 | 2026-08-31 09:00 |  |  |  | 142.56d | 0d | start no earlier than 2026-08-31 09:00 | Домоводов К |  |  |
| 3284 | 23.18.1.2 | поск исполнителя / запрос счет |  | 30min | 2026-08-11 09:00 A | 2026-08-11 09:30 A |  | 100% |  |  |  | start no earlier than 2026-08-11 09:00 | Домоводов К | 0.5h | 0.5h |
| 3285 | 23.18.1.3 | контроль оплата |  | 15min | 2026-09-01 09:00 | 2026-09-01 09:15 | 3283FS+1d, 3284FS+5d |  |  | 142.56d | 0d | start no earlier than 2026-08-24 09:00 | Домоводов К | 0.25h |  |
| 3286 | 23.18.2 | **геология** |  | 15.03d | 2026-08-11 09:00 A | 2026-09-01 09:15 |  | 99% | 0d | 142.56d |  |  |  | 0.5h | 0.5h |
| 3287 | 23.18.2.1 | поск исполнителя / запрос счет |  | 30min | 2026-08-11 09:00 A | 2026-08-11 09:30 A |  | 100% |  |  |  | start no earlier than 2026-08-11 09:00 | Домоводов К | 0.5h | 0.5h |
| 3288 | 23.18.2.2 | контроль оплата | milestone | 0min | 2026-09-01 09:15 | 2026-09-01 09:15 | 3285, 3287FS+5d |  |  | 142.56d | 0d | start no earlier than 2026-08-10 08:00 | Домоводов К |  |  |
| 3289 | 23.18.3 | **проект дорога** |  | 15.03d | 2026-08-11 09:00 A | 2026-09-01 09:15 |  | 99% | 0d | 142.56d |  |  |  | 0.5h | 0.5h |
| 3290 | 23.18.3.1 | поск исполнителя / запрос счет |  | 30min | 2026-08-11 09:00 A | 2026-08-11 09:30 A |  | 100% |  |  |  | start no earlier than 2026-08-11 09:00 | Домоводов К | 0.5h | 0.5h |
| 3291 | 23.18.3.2 | получить счет / договор | milestone | 0d | 2026-08-13 09:00 A | 2026-08-13 09:00 A |  | 100% |  |  |  | start no earlier than 2026-08-13 09:00 | Домоводов К |  |  |
| 3292 | 23.18.3.3 | контроль оплата | milestone | 0min | 2026-09-01 09:15 | 2026-09-01 09:15 | 3288, 3290FS+5d |  |  | 142.56d | 0d | start no earlier than 2026-08-10 08:00 | Домоводов К |  |  |
| 3293 | 23.18.4 | **проект бетонная подушка** |  | 15.03d | 2026-08-11 09:00 A | 2026-09-01 09:15 |  | 99% | 0d | 142.56d |  |  |  | 0.5h | 0.5h |
| 3294 | 23.18.4.1 | поск исполнителя / запрос счет |  | 30min | 2026-08-11 09:00 A | 2026-08-11 09:30 A |  | 100% |  |  |  | start no earlier than 2026-08-11 09:00 | Домоводов К | 0.5h | 0.5h |
| 3295 | 23.18.4.2 | получить счет / договор | milestone | 0d | 2026-08-13 09:00 A | 2026-08-13 09:00 A |  | 100% |  |  |  | start no earlier than 2026-08-13 09:00 | Домоводов К |  |  |
| 3296 | 23.18.4.3 | контроль оплата | milestone | 0min | 2026-09-01 09:15 | 2026-09-01 09:15 | 3292, 3294FS+5d |  |  | 142.56d |  | start no earlier than 2026-08-10 08:00 | Домоводов К |  |  |
| 3297 | 23.19 | Сборка рамы и навеса для мусорки 2 ц возле 1 КПП |  | 4h | 2026-09-04 09:00 A | 2026-09-04 13:00 A |  | 100% |  |  |  | start no earlier than 2026-09-04 09:00 | Некрасов А; Макаревич А | 8h | 8h |
| 3298 | 23.20 | Покраска рамы новой мусорки, стоит у ворот навесок 2 цех |  | 1h | 2026-09-04 09:00 A | 2026-09-04 10:00 A |  | 100% |  |  |  | start no earlier than 2026-09-04 09:00 | Некрасов А; Макаревич А | 2h | 2h |
| 3299 | 23.21 | Монтаж дверей на мусорку собираем раму (петли привезем после обеда) |  | 3h | 2026-09-04 09:00 A | 2026-09-04 12:00 A |  | 100% |  |  |  | start no earlier than 2026-09-04 09:00 | Некрасов А; Макаревич А | 6h | 6h |
| 3300 | 23.22 | **асфальтирование дороги до 5ц** |  | 11.25d? | 2026-08-11 09:00 A | 2026-08-26 11:00 A |  | 100% |  |  |  |  |  | 36.5h | 36.5h |
| 3301 | 23.22.1 | составить схему площади дороги / 3 корректировки |  | 2h | 2026-08-11 09:00 A | 2026-08-11 11:00 A |  | 100% |  |  |  | start no earlier than 2026-08-11 09:00 | Зорькин В | 2h | 2h |
| 3302 | 23.22.2 | получить цену исполнителя |  | 1d | 2026-08-11 11:00 A | 2026-08-12 11:00 A | 3301 | 100% |  |  |  | start no earlier than 2026-08-10 08:00 | Домоводов К | 8h | 8h |
| 3303 | 23.22.3 | согл с ГД |  | 1d | 2026-08-11 09:00 A | 2026-08-11 18:00 A | 3302 | 100% |  |  |  | start no earlier than 2026-08-10 08:00 | Домоводов К | 8h | 8h |
| 3304 | 23.22.4 | получить счет от Вугара | milestone | 0h | 2026-08-12 09:00 A | 2026-08-12 09:00 A |  | 100% |  |  |  | start no earlier than 2026-08-12 09:00 | Домоводов К |  |  |
| 3305 | 23.22.5 | будет ли Вугар оформлятся как подрядчик? Соглаосвать с ГД |  | 15min | 2026-08-17 09:00 A | 2026-08-17 09:15 A |  | 100% |  |  |  | start no earlier than 2026-08-17 09:00 | Домоводов К | 0.25h | 0.25h |
| 3306 | 23.22.6 | корректировка чертеж объем работ |  | 1d? | 2026-08-20 09:00 A | 2026-08-20 18:00 A |  | 100% |  |  |  | start no earlier than 2026-08-20 09:00 | Домоводов К | 8h | 8h |
| 3307 | 23.22.7 | подготовка смета |  | 2h | 2026-08-26 09:00 A | 2026-08-26 11:00 A |  | 100% |  |  |  | start no earlier than 2026-08-26 09:00 | Домоводов К | 2h | 2h |
| 3308 | 23.22.8 | контроль сроков завоза техники |  | 15min | 2026-08-14 09:00 A | 2026-08-14 09:15 A |  | 100% |  |  |  | start no earlier than 2026-08-14 09:00 | Домоводов К | 0.25h | 0.25h |
| 3309 | 23.22.9 | монтаж |  | 1d? | 2026-08-19 09:00 A | 2026-08-19 18:00 A | 3303, 3304 | 100% |  |  |  | start no earlier than 2026-08-19 09:00 | Подрядчик | 8h | 8h |
| 3310 | 23.23 | взять роутер у нас в кабинете - подключить к UTP кабелю |  | 1d? | 2026-04-13 09:00 A | 2026-04-13 18:00 A |  | 100% |  |  |  | start no earlier than 2026-04-13 09:00 |  |  |  |
| 3311 | 23.24 | в цехе 2, 3, 4 и 5 убавить температуры на нагревателях и газ. Котлах |  | 4h | 2026-03-31 09:00 A | 2026-03-31 13:00 A |  | 100% |  |  |  | start no earlier than 2026-03-31 08:00 | Бундин В | 4h | 4h |
| 3312 | 23.25 | перенос камеры на 10см ниже КПП |  | 3h | 2026-03-21 09:00 A | 2026-03-23 12:00 A |  | 100% |  |  |  | start no earlier than 2026-03-21 09:00 | Бундин В | 3h | 3h |
| 3313 | 23.26 | запуск контейнер рэф |  | 2h | 2026-03-20 09:00 A | 2026-03-20 11:00 A |  | 100% |  |  |  | start no earlier than 2026-03-20 09:00 | Шуранов Ю | 2h | 2h |

| ID | WBS | Task | Duration | Start | Finish | Predecessors | Complete | Remaining | Total slack | Free slack | Constraint | Resources | Work | Actual work |
| --- | --- | --- | --- | --- | --- | --- | --- | --- | --- | --- | --- | --- | --- | --- |
| 3314 | 23.27 | **выровнить контейнеры, перекос двери** | 3.25d | 2026-03-19 09:00 A | 2026-03-24 11:00 A |  | 100% |  |  |  |  |  | 2.5h | 2.5h |
| 3315 | 23.27.1 | заявка кран | 30min | 2026-03-19 09:00 A | 2026-03-19 09:30 A |  | 100% |  |  |  | start no earlier than 2026-03-19 09:00 | Шуранов Ю | 0.5h | 0.5h |
| 3316 | 23.27.2 | работа по выравниванию | 2h | 2026-03-24 09:00 A | 2026-03-24 11:00 A | 3315FS+1d | 100% |  |  |  | start no earlier than 2026-03-24 09:00 | Некрасов А | 2h | 2h |
| 3317 | 23.28 | **двойной шлагбаум замрзает** | 5.01d | 2025-02-20 09:00 A | 2025-02-27 09:05 A |  | 100% |  |  |  |  |  | 1.08h | 1.08h |
| 3318 | 23.28.1 | вызов сервисного инженера контроль даты | 5min | 2025-02-27 09:00 A | 2025-02-27 09:05 A |  | 100% |  |  |  | start no earlier than 2025-02-27 09:00 | Шуранов Ю | 0.08h | 0.08h |
| 3319 | 23.28.2 | осмотр с сервисн инжзенером | 1h | 2025-02-20 09:00 A | 2025-02-20 10:00 A |  | 100% |  |  |  | start no earlier than 2025-02-20 09:00 | Шуранов Ю | 1h | 1h |
| 3320 | 23.29 | **Люки на колодцы** | 13.31d | 2026-05-26 09:00 A | 2026-06-12 11:30 |  | 98% | 0.32d | 199.28d |  |  |  | 163.5h | 161.5h |
| 3321 | 23.29.1 | Консультация с Олегом | 30min | 2026-05-26 09:00 A | 2026-05-26 09:30 A |  | 100% |  |  |  | start no earlier than 2026-05-26 08:00 | Зорькин В; Олег | 1h | 1h |
| 3322 | 23.29.2 | Заявка на закуп | 30min | 2026-05-29 09:00 A | 2026-05-29 09:30 A | 3321 | 100% |  |  |  | start no earlier than 2026-05-29 09:00 | Зорькин В | 0.5h | 0.5h |
| 3323 | 23.29.3 | Доставка, контроль | 10d | 2026-05-29 09:30 A | 2026-06-12 09:30 A | 3322 | 100% |  |  |  | start no earlier than 2026-05-26 09:00 | Зорькин В; Шуранов Ю | 160h | 160h |
| 3324 | 23.29.4 | установка люков на колодцы | 2h | 2026-06-12 09:30 | 2026-06-12 11:30 | 3323 |  |  | 199.28d |  | start no earlier than 2026-06-04 09:00 | Олег | 2h |  |
| 3325 | 24 | **ежедневные обходы и осмотры** | 473.5d | 2024-05-14 09:00 A | 2026-03-06 13:00 |  | 16% | 398.74d | 269.09d |  |  |  | 25.33h | 4h |
| 3326 | 24.1 | цех 1 | 20min | 2024-05-14 09:00 | 2024-05-14 09:20 |  |  |  | 740.01d | 0d | start no earlier than 2024-05-14 09:00 | Шуранов Ю | 0.33h |  |
| 3327 | 24.2 | цех 2 | 20min | 2024-05-14 09:00 | 2024-05-14 09:20 |  |  |  | 742.55d |  | start no earlier than 2024-05-14 09:00 | Шуранов Ю | 0.33h |  |
| 3328 | 24.3 | цех навесок | 20min | 2024-05-14 09:20 | 2024-05-14 09:40 | 3326 |  |  | 740.01d | 0d | start no earlier than 2024-05-14 09:00 | Шуранов Ю | 0.33h |  |
| 3329 | 24.4 | техника | 20h | 2024-05-14 09:40 | 2024-05-16 14:40 | 3328 |  |  | 740.01d |  | start no earlier than 2024-05-14 09:00 | Шуранов Ю | 20h |  |
| 3330 | 24.5 | вести журнал осмотров стеллажей | 20min | 2024-05-14 09:00 | 2024-05-14 09:20 |  |  |  | 742.55d |  | start no earlier than 2024-05-14 09:00 | Шуранов Ю | 0.33h |  |
| 3331 | 24.6 | оперативная работа | 4h | 2026-03-06 09:00 A | 2026-03-06 13:00 A |  | 100% |  |  |  | start no earlier than 2026-03-06 09:00 | Бобренок В | 4h | 4h |
| 3332 | 25 | **замена шнеков** | 882.5d? | 2023-03-29 09:00 A | 2026-08-14 13:00 |  | 2% | 864.01d? | 154.09d |  |  |  | 53h | 34h |
| 3333 | 25.1 | посчитать количество шнеков и гильз для цех1 и цех 2 | 2h | 2026-04-03 09:00 | 2026-04-03 11:00 |  |  |  | 249.34d |  | start no earlier than 2026-04-03 09:00 | Шуранов Ю | 2h |  |
| 3334 | 25.2 | вести список и учет замены шнеков | 1h | 2024-05-14 09:00 | 2024-05-14 10:00 |  |  |  | 742.47d |  | start no earlier than 2024-05-14 09:00 | Шуранов Ю | 1h |  |
| 3335 | 25.3 | линия 3 - было 3/приход спец12-3/спец14-9 | 1d? | 2024-04-15 09:00 A | 2024-04-15 18:00 A |  | 100% |  |  |  | start no earlier than 2024-04-15 08:00 |  |  |  |
| 3336 | 25.4 | линия3 | 42d | 2023-10-16 09:00 | 2023-12-12 18:00 |  |  |  | 851.59d |  | start no earlier than 2023-10-16 09:00 |  |  |  |
| 3337 | 25.5 | линия3 | 30d | 2023-12-12 09:00 | 2024-01-22 18:00 |  |  |  | 822.59d |  | start no earlier than 2023-12-12 09:00 |  |  |  |
| 3338 | 25.6 | линия3 | 45d | 2024-01-24 09:00 | 2024-03-26 18:00 |  |  |  | 776.59d |  | start no earlier than 2024-01-24 09:00 |  |  |  |
| 3339 | 25.7 | линия3 | 11d | 2023-03-29 09:00 | 2023-04-12 18:00 |  |  |  | 1025.59d |  | start no earlier than 2023-03-29 09:00 |  |  |  |
| 3340 | 25.8 | линия3 | 1d? | 2023-04-12 09:00 | 2023-04-12 18:00 |  |  |  | 1025.59d |  | start no earlier than 2023-04-12 09:00 |  |  |  |
| 3341 | 25.9 | линия 3 | 1.38d? | 2024-05-08 08:00 A | 2024-05-13 11:00 A |  | 100% |  |  |  | start no earlier than 2024-05-08 08:00 | Макаревич А; Некрасов А; Черепанов И | 26h | 26h |
| 3342 | 25.10 | диния 3 | 1d? | 2024-05-20 09:00 | 2024-05-20 18:00 |  |  |  | 737.59d |  | start no earlier than 2024-05-20 09:00 | Некрасов А; Тимофеев В | 16h |  |
| 3473 | 25.11 | замена линия 3, была струшка | 4h | 2026-08-14 09:00 A | 2026-08-14 13:00 A |  | 100% |  |  |  | start no earlier than 2026-08-14 09:00 | Некрасов А; Бундин В | 8h | 8h |
